# RISE Auburn GMP_10.02.2025

Schedule from Primavera P6, 2024-08-20 to 2028-04-24, data date 2024-08-19.

## Calendars

- Juneau CC 5x8: Mon-Fri 8:00-16:00; Sat-Sun off. Exceptions (off unless hours are given): 2024-09-02, 2024-11-28 to 2024-11-29, 2024-12-24 to 2024-12-25, 2025-01-01, 2025-05-26, 2025-06-19, 2025-07-04, 2025-09-01, 2025-11-27 to 2025-11-28, 2025-12-24 to 2025-12-25, 2026-01-01, 2026-05-25, 2026-06-19, 2026-07-03, 2026-09-07, 2026-11-26 to 2026-11-27, 2026-12-24 to 2026-12-25, 2027-01-01, 2027-05-31, 2027-06-18, 2027-07-05, 2027-09-06, 2027-11-25 to 2027-11-26, 2027-12-24, 2027-12-27, 2027-12-31.

## Schedule

| ID | WBS | Activity | Type | Duration | Start | Finish | Predecessors | Planned start | Total float | Free float | Constraint |
| --- | --- | --- | --- | --- | --- | --- | --- | --- | --- | --- | --- |
|  | 1 | **RISE Auburn** |  |  | 2024-08-20 | 2028-04-24 |  |  |  |  |  |
|  | 2 | **PRECONSTRUCTION & PROCUREMENT** |  |  | 2024-08-20 | 2027-10-29 |  |  |  |  |  |
|  | 3 | **Preconstruction** |  |  | 2024-08-20 | 2025-10-22 |  |  |  |  |  |
|  | 4 | **Design & Budget Confirmation** |  |  | 2024-08-20 | 2025-10-22 |  |  |  |  |  |
|  | 5 | **Schematic Design** |  |  | 2024-08-20 | 2024-11-11 |  |  |  |  |  |
| A18602 |  | Conceptual Design | resource dependent | 18d | 2024-08-20 | 2024-09-13 |  |  | 0d |  | start on or after 2024-08-19 |
| A18604 |  | Schematic Design | resource dependent | 21d | 2024-09-16 | 2024-10-14 | A18602 |  | 0d |  |  |
| A18605 |  | SD Docs Issued | milestone | 0d | 2024-10-15 | 2024-10-15 | A18604 FS-1d, A18882 FS-5d | 2024-10-15 | 794d | 0d |  |
| A18606 |  | JCC Pricing SD | resource dependent | 13d | 2024-10-15 | 2024-10-31 | A18602, A18605 |  | 794d | 0d |  |
| A18882 |  | SD Docs - Rise Review & Approval | resource dependent | 5d | 2024-10-15 | 2024-10-21 | A18604 |  | 0d |  |  |
| A18925 |  | VE Process SD | resource dependent | 7d | 2024-11-01 | 2024-11-11 | A18606 |  | 867d |  |  |
|  | 6 | **Shoring / Retention Design** |  |  | 2024-11-05 | 2025-03-03 |  |  |  |  |  |
| A18608 |  | Shoring/Retention Design | resource dependent | 40d | 2024-11-05 | 2025-01-06 | A18606, A18604 FS+15d |  | 792d | 0d |  |
| A18609 |  | Shoring Tie Back Easments by Rise | resource dependent | 40d | 2025-01-07 | 2025-03-03 | A18608 |  | 792d |  |  |
|  | 7 | **Design Development Set (Permit Set)** |  |  | 2024-10-22 | 2025-01-31 |  |  |  |  |  |
| A18611 |  | DD Drawing Set Development | resource dependent | 30d | 2024-10-22 | 2024-12-04 | A18604, A18882 |  | 0d |  |  |
| A18614 |  | DD Set Issued for Pricing | milestone | 0d | 2024-12-04 | 2024-12-04 | A18611 FS-1d | 2024-12-04 | 853d |  |  |
| A18615 |  | DD Set Pricing | resource dependent | 30d | 2024-12-04 | 2025-01-17 | A18611 FS-1d |  | 813d | 0d |  |
| A18613 |  | Submit Sets for Permitting | milestone | 0d | 2024-12-05 | 2024-12-05 | A18611 | 2024-12-05 | 852d |  |  |
| A18616 |  | VE Process - DD Set | resource dependent | 10d | 2025-01-20 | 2025-01-31 | A18615 |  | 813d |  |  |
|  | 8 | **100% CD Set (GMP SET)** |  |  | 2024-12-05 | 2025-10-22 |  |  |  |  |  |
| A18621 |  | Issued For Permit (IFP) Set Development | resource dependent | 59d | 2024-12-05 | 2025-02-28 | A18611 |  | 0d |  |  |
| A18623 |  | IFP Set Issued for Pricing | milestone | 0d | 2025-03-03 | 2025-03-03 | A18621 | 2025-03-03 | 793d |  |  |
| A18624 |  | IFP Set Pricing | resource dependent | 35d | 2025-03-03 | 2025-04-18 | A18621 |  | 0d |  |  |
| A18625 |  | GMP Drawing Set Development | resource dependent | 104d | 2025-04-21 | 2025-09-17 | A18624 |  | 0d |  |  |
| A19323 |  | Property Closing | resource dependent | 25d | 2025-09-18 | 2025-10-22 | A19322, A18625 |  | 0d |  |  |
| A21381 |  | Execute GMP | resource dependent | 17d | 2025-09-29 | 2025-10-21 | A19323 FS-18d |  | 0d |  |  |
| A18619 |  | Notice to Proceed - Construction Start | milestone | 0d | 2025-10-22 | 2025-10-22 | A18975, A19323 FS-1d, A18625 | 2025-10-22 | 0d |  |  |
| A18975 |  | GMP Executed | milestone | 0d | 2025-10-22 | 2025-10-22 | A19020, A21381 | 2025-10-22 | 0d |  |  |
| A19020 |  | FINAL CLOSING | milestone | 0d | 2025-10-22 | 2025-10-22 | A19323 FS-1d | 2025-10-22 | 0d |  |  |

| ID | WBS | Activity | Type | Duration | Start | Finish | Predecessors | Planned start | Total float | Free float | Constraint |
| --- | --- | --- | --- | --- | --- | --- | --- | --- | --- | --- | --- |
|  | 9 | **Building Permit** |  |  | 2025-02-10 | 2025-07-23 |  |  |  |  |  |
| A19313 |  | Permit Set Review - RISE | resource dependent | 15d | 2025-02-10 | 2025-02-28 | A18621 FS-15d |  | 40d | 0d |  |
| A19316 |  | AHJ Drawing Review | resource dependent | 74d | 2025-03-03 | 2025-06-13 | A19313 |  | 40d | 0d |  |
| A19317 |  | Respond to AHJ Comments | resource dependent | 10d | 2025-06-16 | 2025-06-30 | A19316 |  | 40d | 0d |  |
| A19318 |  | FINAL AHJ Approval (Estimated) | resource dependent | 10d | 2025-07-01 | 2025-07-15 | A19317 |  | 40d | 0d |  |
| A19321 |  | Architect to Finalize Construction Documents | resource dependent | 5d | 2025-07-16 | 2025-07-22 | A19318 |  | 40d | 0d |  |
| A19322 |  | Issue 100% Construction Documents | milestone | 0d | 2025-07-23 | 2025-07-23 | A19321 | 2025-07-23 | 40d | 0d |  |
|  | 10 | **Overhead Power / LV Relocation** |  |  | 2024-11-19 | 2025-05-20 |  |  |  |  |  |
| A18650 |  | Power Utility Initial Meeting | resource dependent | 1d | 2024-11-19 | 2024-11-19 | A18611 FS-10d |  | 736d | 0d |  |
| A18651 |  | Power Utility Issue Design/Pricing | resource dependent | 20d | 2024-11-20 | 2024-12-19 | A18650 |  | 736d | 0d |  |
| A18654 |  | Owner Deposit to Utility & DA Executed | resource dependent | 15d | 2024-12-20 | 2025-01-14 | A18651 |  | 736d | 0d |  |
| A18656 |  | Power Utility procurement of crews | resource dependent | 40d | 2025-01-15 | 2025-03-11 | A18654 |  | 736d | 0d |  |
| A18657 |  | Power Utility Install New U/G Lines & Remove Existing | resource dependent | 30d | 2025-03-12 | 2025-04-22 | A18656 |  | 736d | 0d |  |
| A18658 |  | Power Utility Cut OVH Power to Existing Bldgs | milestone | 0d | 2025-04-23 | 2025-04-23 | A18657 | 2025-04-23 | 756d |  |  |
| A18659 |  | LV Utilities Relocation | resource dependent | 20d | 2025-04-23 | 2025-05-20 | A18657 |  | 736d |  |  |
|  | 11 | **Procurement - Early Enabling Work** |  |  | 2025-05-16 | 2025-10-28 |  |  |  |  |  |
|  | 12 | **Site Utilities** |  |  | 2025-05-16 | 2025-07-10 |  |  |  |  |  |
| A21437 |  | Issue LOI | resource dependent | 1d | 2025-05-16 | 2025-05-16 |  |  | 702d | 0d | start on or after 2025-05-16 |
| A21427 |  | Submittals - Storm Materials | resource dependent | 10d | 2025-05-19 | 2025-06-02 | A21437 |  | 728d |  |  |
| A21428 |  | Submittals - Sewer Materials | resource dependent | 10d | 2025-05-19 | 2025-06-02 | A21437 |  | 712d | 0d |  |
| A21431 |  | Shop Drawings - Storm Structures | resource dependent | 15d | 2025-05-19 | 2025-06-09 | A21437 |  | 702d | 0d |  |
| A21625 |  | Lead Time - Sewer Pipe | resource dependent | 15d | 2025-06-03 | 2025-06-24 | A21428 |  | 712d | 0d |  |
| A21624 |  | Lead Time - Storm Structures | resource dependent | 20d | 2025-06-10 | 2025-07-09 | A21431 |  | 702d | 0d |  |
| A21429 |  | ROJ - Sewer Pipe | resource dependent | 1d | 2025-06-25 | 2025-06-25 | A21625 |  | 712d |  |  |
| A21430 |  | ROJ - Site Storm Pipe and Structures | resource dependent | 1d | 2025-07-10 | 2025-07-10 | A21624 |  | 702d |  |  |

| ID | WBS | Activity | Type | Duration | Start | Finish | Predecessors | Total float | Free float | Constraint |
| --- | --- | --- | --- | --- | --- | --- | --- | --- | --- | --- |
|  | 13 | **Shoring Walls** |  |  | 2025-05-23 | 2025-08-28 |  |  |  |  |
| A21438 |  | Issue LOI | resource dependent | 1d | 2025-05-23 | 2025-05-23 |  | 75d | 0d | start on or after 2025-05-23 |
| A21432 |  | Submittals - Shotcrete Mix Designs | resource dependent | 10d | 2025-06-10 | 2025-06-24 | A21438 FS+10d | 713d |  |  |
| A21433 |  | Submittals - Rebar / Accessories | resource dependent | 10d | 2025-06-17 | 2025-07-01 | A21438 FS+15d | 708d |  |  |
| A21434 |  | Shop Drawings | resource dependent | 15d | 2025-06-25 | 2025-07-16 | A21438 FS+20d | 75d | 0d |  |
| A21627 |  | Steel Lead Time | resource dependent | 30d | 2025-07-17 | 2025-08-27 | A21434 | 75d | 0d |  |
| A21435 |  | ROJ - Shoring Wall Installation | resource dependent | 1d | 2025-08-28 | 2025-08-28 | A21627 | 75d |  |  |
|  | 14 | **Rammed Aggregate Piers** |  |  | 2025-05-23 | 2025-08-14 |  |  |  |  |
| A21436 |  | LOI Issued | resource dependent | 1d | 2025-05-23 | 2025-05-23 |  | 115d | 0d | start on or after 2025-05-23 |
| A21440 |  | Submittals - Product Data | resource dependent | 15d | 2025-06-10 | 2025-07-01 | A21436 FS+10d | 125d | 10d |  |
| A21439 |  | Shop Drawings | resource dependent | 15d | 2025-06-25 | 2025-07-16 | A21436 FS+20d | 115d | 0d |  |
| A21626 |  | Lead Time for Equipment | resource dependent | 20d | 2025-07-17 | 2025-08-13 | A21439, A21440 | 115d | 0d |  |
| A21441 |  | ROJ - RAPs | resource dependent | 1d | 2025-08-14 | 2025-08-14 | A21626 | 115d |  |  |
|  | 15 | **Foundation/ Walls Rebar/ Concrete** |  |  | 2025-06-20 | 2025-09-03 |  |  |  |  |
| A21442 |  | LOI Issued | resource dependent | 1d | 2025-06-20 | 2025-06-20 |  | 117d | 0d | start on or after 2025-06-20 |
| A21445 |  | Submittals - Mix Designs | resource dependent | 10d | 2025-07-08 | 2025-07-21 | A21442 FS+10d | 695d |  |  |
| A21443 |  | Shop Drawings | resource dependent | 15d | 2025-07-15 | 2025-08-04 | A21442 FS+15d | 117d | 0d |  |
| A21628 |  | Fabrication - Rebar | resource dependent | 20d | 2025-08-05 | 2025-09-02 | A21443 | 117d | 0d |  |
| A21444 |  | ROJ - Concrete Foundations/ Walls - Parking Deck | resource dependent | 1d | 2025-09-03 | 2025-09-03 | A21628 | 117d |  |  |
|  | 16 | **SOG Rebar/ Vapor Barrier/ Concrete** |  |  | 2025-07-08 | 2025-09-03 |  |  |  |  |
| A21446 |  | Submittals - Mix Designs | resource dependent | 10d | 2025-07-08 | 2025-07-21 | A21442 FS+10d | 674d | 10d |  |
| A21447 |  | Shop Drawings | resource dependent | 15d | 2025-07-15 | 2025-08-04 | A21442 FS+15d | 664d | 0d |  |
| A21629 |  | Lead Time - Rebar | resource dependent | 20d | 2025-08-05 | 2025-09-02 | A21447, A21446 | 664d | 0d |  |
| A21448 |  | ROJ - SOG 100A | resource dependent | 1d | 2025-09-03 | 2025-09-03 | A21629 | 664d |  |  |

| ID | WBS | Activity | Type | Duration | Start | Finish | Predecessors | Total float | Free float | Constraint |
| --- | --- | --- | --- | --- | --- | --- | --- | --- | --- | --- |
|  | 17 | **Site Railings - Top of Shoring Wall** |  |  | 2025-07-07 | 2025-10-15 |  |  |  |  |
| A21449 |  | LOI Issued | resource dependent | 1d | 2025-07-07 | 2025-07-07 |  | 634d | 0d | start on or after 2025-07-07 |
| A21450 |  | Submittals - Product Data | resource dependent | 10d | 2025-07-29 | 2025-08-11 | A21449 FS+15d | 644d | 10d |  |
| A21451 |  | Shop Drawings Design Team Approval | resource dependent | 20d | 2025-07-29 | 2025-08-25 | A21449 FS+15d | 634d | 0d |  |
| A21632 |  | Fabrication Drawing Creation | resource dependent | 5d | 2025-08-26 | 2025-09-02 | A21451, A21450 | 634d | 0d |  |
| A21630 |  | Fabrication | resource dependent | 30d | 2025-09-03 | 2025-10-14 | A21632 | 634d | 0d |  |
| A21452 |  | ROJ - Top of Shoring Wall Handrail | resource dependent | 1d | 2025-10-15 | 2025-10-15 | A21630 | 634d |  |  |
|  | 18 | **Waterproofing - Below Grade** |  |  | 2025-07-25 | 2025-10-28 |  |  |  |  |
| A21545 |  | LOI Issued | resource dependent | 1d | 2025-07-25 | 2025-07-25 |  | 625d | 0d | start on or after 2025-07-25 |
| A21546 |  | Submittals - Product Data | resource dependent | 10d | 2025-08-18 | 2025-08-29 | A21545 FS+15d | 635d | 10d |  |
| A21547 |  | Shop Drawings | resource dependent | 15d | 2025-08-25 | 2025-09-15 | A21545 FS+20d | 625d | 0d |  |
| A21548 |  | Lead Time | resource dependent | 30d | 2025-09-16 | 2025-10-27 | A21547, A21546 | 625d | 0d |  |
| A21549 |  | ROJ - Below Grade Waterproofing | resource dependent | 1d | 2025-10-28 | 2025-10-28 | A21548 | 625d |  |  |
|  | 19 | **Plumbing - Below Grade** |  |  | 2025-05-23 | 2025-07-31 |  |  |  |  |
| A21557 |  | LOI Issued | resource dependent | 1d | 2025-05-23 | 2025-05-23 |  | 687d | 0d | start on or after 2025-05-23 |
| A21558 |  | Submittals - Product Data | resource dependent | 10d | 2025-06-10 | 2025-06-24 | A21557 FS+10d | 697d | 10d |  |
| A21559 |  | Shop Drawings | resource dependent | 15d | 2025-06-17 | 2025-07-09 | A21557 FS+15d | 687d | 0d |  |
| A21560 |  | Lead Time | resource dependent | 15d | 2025-07-10 | 2025-07-30 | A21559, A21558 | 687d | 0d |  |
| A21561 |  | ROJ - Under Slab Plumbing 100A | resource dependent | 1d | 2025-07-31 | 2025-07-31 | A21560 | 687d |  |  |
|  | 20 | **Electrical - Below Grade** |  |  | 2025-05-23 | 2025-08-07 |  |  |  |  |
| A21562 |  | LOI Issued | resource dependent | 1d | 2025-05-23 | 2025-05-23 |  | 682d | 0d | start on or after 2025-05-23 |
| A21563 |  | Submittals - Product Data | resource dependent | 15d | 2025-06-10 | 2025-07-01 | A21562 FS+10d | 687d | 5d |  |
| A21564 |  | Shop Drawings | resource dependent | 15d | 2025-06-17 | 2025-07-09 | A21562 FS+15d | 682d | 0d |  |
| A21565 |  | Lead Time | resource dependent | 20d | 2025-07-10 | 2025-08-06 | A21563, A21564 | 682d | 0d |  |
| A21566 |  | ROJ - Underground Electrical 100A | resource dependent | 1d | 2025-08-07 | 2025-08-07 | A21565 | 682d |  |  |

| ID | WBS | Activity | Type | Duration | Start | Finish | Predecessors | Total float | Free float | Constraint |
| --- | --- | --- | --- | --- | --- | --- | --- | --- | --- | --- |
|  | 21 | **Procurement - Remobilization to Completion** |  |  | 2025-05-16 | 2027-10-29 |  |  |  |  |
|  | 22 | **Pre Cast Parking Deck** |  |  | 2025-06-23 | 2026-06-17 |  |  |  |  |
| A21459 |  | LOI Issued | resource dependent | 1d | 2025-06-23 | 2025-06-23 |  | 509d | 0d | start on or after 2025-06-23 |
| A21453 |  | Design Coordination | resource dependent | 10d | 2025-06-24 | 2025-07-08 | A21459 | 509d | 0d | start on or after 2025-06-23 |
| A21633 |  | *Pause* | resource dependent | 80d | 2025-07-09 | 2025-10-29 | A21453 | 509d | 0d |  |
| A21454 |  | Shop Drawing Review - Design Team Approval | resource dependent | 25d | 2025-10-30 | 2025-12-05 | A21633 | 509d | 0d |  |
| A21458 |  | Submittals - Product Data | resource dependent | 10d | 2025-10-30 | 2025-11-12 | A21633 | 614d |  |  |
| A21455 |  | Permit Submission / Approval | resource dependent | 20d | 2025-12-08 | 2026-01-07 | A21454 | 579d |  |  |
| A21456 |  | Final Erection Drawings | resource dependent | 30d | 2025-12-08 | 2026-01-21 | A21454 | 509d | 0d |  |
| A21466 |  | Fabrication | resource dependent | 60d | 2026-01-22 | 2026-04-15 | A21456 | 509d |  |  |
| A21457 |  | ROJ - Pre Cast | resource dependent | 1d | 2026-06-17 | 2026-06-17 | A19307 SS | 465d |  |  |
|  | 23 | **Wood Framing Material** |  |  | 2025-05-23 | 2026-06-08 |  |  |  |  |
| A21469 |  | LOI Issued | resource dependent | 1d | 2025-05-23 | 2025-05-23 |  | 472d | 0d | start on or after 2025-05-23 |
| A21636 |  | *Pause* | resource dependent | 230d | 2025-05-27 | 2026-04-23 | A21469 | 472d | 0d |  |
| A21470 |  | Submittals - Product Data | resource dependent | 10d | 2026-04-24 | 2026-05-07 | A21636 | 472d | 0d |  |
| A21471 |  | Lead Time | resource dependent | 20d | 2026-05-08 | 2026-06-05 | A21470 | 472d | 0d |  |
| A21472 |  | ROJ - Lumber Package | resource dependent | 1d | 2026-06-08 | 2026-06-08 | A21471 | 472d |  |  |
|  | 24 | **Trusses** |  |  | 2025-05-16 | 2026-06-30 |  |  |  |  |
| A21474 |  | LOI Issued | resource dependent | 1d | 2025-05-16 | 2025-05-16 |  | 457d | 0d | start on or after 2025-05-16 |
| A21475 |  | Submittals - Product Data | resource dependent | 10d | 2026-05-01 | 2026-05-14 | A21474 FS+240d | 462d | 5d |  |
| A21476 |  | Shop Drawings | resource dependent | 15d | 2026-05-01 | 2026-05-21 | A21474 FS+240d | 457d | 0d |  |
| A21477 |  | Fabrication | resource dependent | 25d | 2026-05-22 | 2026-06-29 | A21476, A21475 | 457d | 0d |  |
| A21478 |  | ROJ - Trusses - 100A | resource dependent | 1d | 2026-06-30 | 2026-06-30 | A21477 | 457d |  |  |
|  | 25 | **Elevators** |  |  | 2026-05-22 | 2026-10-16 |  |  |  |  |
| A21489 |  | LOI Issued | resource dependent | 1d | 2026-05-22 | 2026-05-22 |  | 381d | 0d | start on or after 2026-05-22 |
| A21490 |  | Submittals - Product Data | resource dependent | 15d | 2026-06-16 | 2026-07-08 | A21489 FS+15d | 381d | 0d |  |
| A21491 |  | Shop Drawings | resource dependent | 15d | 2026-06-16 | 2026-07-08 | A21489 FS+15d | 381d | 0d |  |
| A21492 |  | Fabrication | resource dependent | 70d | 2026-07-09 | 2026-10-15 | A21490, A21491 | 381d | 0d |  |
| A21493 |  | ROJ - Elevators | resource dependent | 1d | 2026-10-16 | 2026-10-16 | A21492 | 381d |  |  |

| ID | WBS | Activity | Type | Duration | Start | Finish | Predecessors | Total float | Free float | Constraint |
| --- | --- | --- | --- | --- | --- | --- | --- | --- | --- | --- |
|  | 26 | **Masonry Veneer** |  |  | 2026-06-22 | 2026-11-05 |  |  |  |  |
| A21479 |  | LOI Issued | resource dependent | 1d | 2026-06-22 | 2026-06-22 |  | 367d | 0d | start on or after 2026-06-22 |
| A21480 |  | Submittals - Product Date | resource dependent | 15d | 2026-07-08 | 2026-07-28 | A21479 FS+10d | 377d | 10d |  |
| A21481 |  | Shop Drawings | resource dependent | 15d | 2026-07-22 | 2026-08-11 | A21479 FS+20d | 367d | 0d |  |
| A21482 |  | Lead Time | resource dependent | 60d | 2026-08-12 | 2026-11-04 | A21481, A21480 | 367d | 0d |  |
| A21483 |  | ROJ - Brick Veneer | resource dependent | 1d | 2026-11-05 | 2026-11-05 | A21482 | 367d |  |  |
|  | 27 | **Windows** |  |  | 2026-06-26 | 2026-11-11 |  |  |  |  |
| A21504 |  | LOI Issued | resource dependent | 1d | 2026-06-26 | 2026-06-26 |  | 363d | 0d | start on or after 2026-06-26 |
| A21505 |  | Submittals - Product Data | resource dependent | 10d | 2026-07-14 | 2026-07-27 | A21504 FS+10d | 378d | 15d |  |
| A21506 |  | Shop Drawings | resource dependent | 15d | 2026-07-28 | 2026-08-17 | A21504 FS+20d | 363d | 0d |  |
| A21507 |  | Fabrication | resource dependent | 60d | 2026-08-18 | 2026-11-10 | A21506, A21505 | 363d | 0d |  |
| A21508 |  | ROJ - Windows - 100A | resource dependent | 1d | 2026-11-11 | 2026-11-11 | A21507 | 363d |  |  |
|  | 28 | **CMU** |  |  | 2026-08-21 | 2026-10-06 |  |  |  |  |
| A21463 |  | LOI Issued | resource dependent | 1d | 2026-08-21 | 2026-08-21 |  | 389d | 0d | start on or after 2026-08-21 |
| A21464 |  | Submittals - Product Data | resource dependent | 10d | 2026-09-08 | 2026-09-21 | A21463 FS+10d | 399d | 10d |  |
| A21467 |  | Shop Drawings | resource dependent | 15d | 2026-09-15 | 2026-10-05 | A21463 FS+15d | 389d | 0d |  |
| A21468 |  | ROJ - CMU Stairs | resource dependent | 1d | 2026-10-06 | 2026-10-06 | A21467, A21464 | 389d |  |  |
|  | 29 | **Tower Cranes** |  |  | 2025-06-23 | 2026-10-07 |  |  |  |  |
| A21460 |  | LOI Issued | resource dependent | 1d | 2025-06-23 | 2025-06-23 |  | 388d | 0d | start on or after 2025-06-23 |
| A21461 |  | Shop Drawings | resource dependent | 10d | 2025-07-09 | 2025-07-22 | A21460 FS+10d | 388d | 0d |  |
| A21635 |  | *Pause* | resource dependent | 260d | 2025-07-23 | 2026-08-03 | A21461 | 388d | 0d |  |
| A21465 |  | Lead Time | resource dependent | 45d | 2026-08-04 | 2026-10-06 | A21635 | 388d | 0d |  |
| A21462 |  | ROJ - Crane 1 | resource dependent | 1d | 2026-10-07 | 2026-10-07 | A21465 | 388d |  |  |
|  | 30 | **Electrical Gear** |  |  | 2025-05-23 | 2027-01-21 |  |  |  |  |
| A21484 |  | LOI Issued | resource dependent | 1d | 2025-05-23 | 2025-05-23 |  | 317d | 0d | start on or after 2025-05-23 |
| A21485 |  | Submittals - Product Data | resource dependent | 15d | 2025-12-16 | 2026-01-08 | A21484 FS+140d | 317d | 0d |  |
| A21486 |  | Shop Drawings | resource dependent | 15d | 2025-12-16 | 2026-01-08 | A21484 FS+140d | 317d | 0d |  |
| A21487 |  | Fabrication/ Lead Time | resource dependent | 260d | 2026-01-09 | 2027-01-20 | A21486, A21485 | 317d | 0d |  |
| A21488 |  | ROJ - Main Switchboards | resource dependent | 1d | 2027-01-21 | 2027-01-21 | A21487 | 317d |  |  |

| ID | WBS | Activity | Type | Duration | Start | Finish | Predecessors | Total float | Free float | Constraint |
| --- | --- | --- | --- | --- | --- | --- | --- | --- | --- | --- |
|  | 31 | **Electrical Fixture Package** |  |  | 2025-05-23 | 2026-11-30 |  |  |  |  |
| A21567 |  | LOI Issued | resource dependent | 1d | 2025-05-23 | 2025-05-23 |  | 352d | 0d | start on or after 2025-05-23 |
| A21637 |  | *Pause* | resource dependent | 280d | 2025-05-27 | 2026-07-07 | A21567 | 352d | 0d |  |
| A21568 |  | Submittals - Product Data | resource dependent | 20d | 2026-07-08 | 2026-08-04 | A21637 | 352d | 0d |  |
| A21569 |  | Shop Drawings | resource dependent | 20d | 2026-07-08 | 2026-08-04 | A21637 | 352d | 0d |  |
| A21570 |  | Lead Time | resource dependent | 80d | 2026-08-05 | 2026-11-25 | A21569, A21568 | 352d | 0d |  |
| A21571 |  | ROJ - Light Fixtures | resource dependent | 1d | 2026-11-30 | 2026-11-30 | A21570 | 352d |  |  |
|  | 32 | **Fire Alarm** |  |  | 2026-07-17 | 2026-12-03 |  |  |  |  |
| A21524 |  | LOI Issued | resource dependent | 1d | 2026-07-17 | 2026-07-17 |  | 349d | 0d | start on or after 2026-07-17 |
| A21525 |  | Submittals - Product Data | resource dependent | 10d | 2026-08-03 | 2026-08-14 | A21524 FS+10d | 364d | 15d |  |
| A21526 |  | Shop Drawings | resource dependent | 15d | 2026-08-17 | 2026-09-04 | A21524 FS+20d | 349d | 0d |  |
| A21527 |  | Lead Time | resource dependent | 60d | 2026-09-08 | 2026-12-02 | A21526, A21525 | 349d | 0d |  |
| A21528 |  | ROJ - Fire Alarm | resource dependent | 1d | 2026-12-03 | 2026-12-03 | A21527 | 349d |  |  |
|  | 33 | **Fire Protection - Pumps** |  |  | 2026-08-07 | 2027-01-12 |  |  |  |  |
| A21589 |  | LOI Issued | resource dependent | 1d | 2026-08-07 | 2026-08-07 |  | 324d | 0d | start on or after 2026-08-07 |
| A21590 |  | Submittals - Product Data | resource dependent | 10d | 2026-08-24 | 2026-09-04 | A21589 FS+10d | 339d | 15d |  |
| A21591 |  | Shop Drawings | resource dependent | 15d | 2026-09-08 | 2026-09-28 | A21589 FS+20d | 324d | 0d |  |
| A21592 |  | Lead Time | resource dependent | 70d | 2026-09-29 | 2027-01-11 | A21591, A21590 | 324d | 0d |  |
| A21593 |  | ROJ - Fire / Jockey Pumps | resource dependent | 1d | 2027-01-12 | 2027-01-12 | A21592 | 324d |  |  |
|  | 34 | **Plumbing Rough in** |  |  | 2026-09-04 | 2026-12-10 |  |  |  |  |
| A21550 |  | LOI Issued | resource dependent | 1d | 2026-09-04 | 2026-09-04 |  | 344d | 0d | start on or after 2026-09-04 |
| A21551 |  | Submittals - Product Data | resource dependent | 10d | 2026-09-22 | 2026-10-05 | A21550 FS+10d | 359d | 15d |  |
| A21552 |  | Shop Drawings | resource dependent | 15d | 2026-10-06 | 2026-10-26 | A21550 FS+20d | 344d | 0d |  |
| A21553 |  | Lead Time | resource dependent | 30d | 2026-10-27 | 2026-12-09 | A21552, A21551 | 344d | 0d |  |
| A21554 |  | ROJ - Plumbing In Wall RI | resource dependent | 1d | 2026-12-10 | 2026-12-10 | A21553 | 344d |  |  |

| ID | WBS | Activity | Type | Duration | Start | Finish | Predecessors | Total float | Free float | Constraint |
| --- | --- | --- | --- | --- | --- | --- | --- | --- | --- | --- |
|  | 35 | **Electrical Rough In** |  |  | 2026-09-04 | 2026-12-10 |  |  |  |  |
| A21584 |  | LOI Issued | resource dependent | 1d | 2026-09-04 | 2026-09-04 |  | 344d | 0d | start on or after 2026-09-04 |
| A21585 |  | Submittals - Product Data | resource dependent | 10d | 2026-09-22 | 2026-10-05 | A21584 FS+10d | 359d | 15d |  |
| A21586 |  | Shop Drawings | resource dependent | 15d | 2026-10-06 | 2026-10-26 | A21584 FS+20d | 344d | 0d |  |
| A21587 |  | Lead Time | resource dependent | 30d | 2026-10-27 | 2026-12-09 | A21586, A21585 | 344d | 0d |  |
| A21588 |  | ROJ - Electrical In Wall RI 100A | resource dependent | 1d | 2026-12-10 | 2026-12-10 | A21587 | 344d |  |  |
|  | 36 | **Fire Protection - Materials** |  |  | 2026-08-28 | 2026-11-17 |  |  |  |  |
| A21594 |  | LOI Issued | resource dependent | 1d | 2026-08-28 | 2026-08-28 |  | 359d | 0d | start on or after 2026-08-28 |
| A21595 |  | Submittals - Product Data | resource dependent | 10d | 2026-09-15 | 2026-09-28 | A21594 FS+10d | 374d | 15d |  |
| A21596 |  | Shop Drawings | resource dependent | 15d | 2026-09-29 | 2026-10-19 | A21594 FS+20d | 359d | 0d |  |
| A21597 |  | Lead Time | resource dependent | 20d | 2026-10-20 | 2026-11-16 | A21595, A21596 | 359d | 0d |  |
| A21598 |  | ROJ - Fire Protection 100A | resource dependent | 1d | 2026-11-17 | 2026-11-17 | A21597 | 359d |  |  |
|  | 37 | **Roofing** |  |  | 2026-09-18 | 2026-12-23 |  |  |  |  |
| A21509 |  | LOI Issued | resource dependent | 1d | 2026-09-18 | 2026-09-18 |  | 335d | 0d | start on or after 2026-09-18 |
| A21510 |  | Submittals - Product Data | resource dependent | 10d | 2026-10-05 | 2026-10-16 | A21509 FS+10d | 350d | 15d |  |
| A21511 |  | Shop Drawings | resource dependent | 15d | 2026-10-19 | 2026-11-06 | A21509 FS+20d | 335d | 0d |  |
| A21512 |  | Lead Time | resource dependent | 30d | 2026-11-09 | 2026-12-22 | A21511, A21510 | 335d | 0d |  |
| A21513 |  | ROJ - Roofing - 100A | resource dependent | 1d | 2026-12-23 | 2026-12-23 | A21512 | 335d |  |  |
|  | 38 | **Casework/ Countertops** |  |  | 2026-10-09 | 2027-04-05 |  |  |  |  |
| A21599 |  | LOI Issued | resource dependent | 1d | 2026-10-09 | 2026-10-09 |  | 265d | 0d | start on or after 2026-10-09 |
| A21600 |  | Submittals - Product Data | resource dependent | 10d | 2026-10-26 | 2026-11-06 | A21599 FS+10d | 285d | 20d |  |
| A21601 |  | Shop Drawings | resource dependent | 20d | 2026-11-09 | 2026-12-08 | A21599 FS+20d | 265d | 0d |  |
| A21602 |  | Lead Time | resource dependent | 80d | 2026-12-09 | 2027-04-02 | A21601, A21600 | 265d | 0d |  |
| A21603 |  | ROJ - Casework 100A | resource dependent | 1d | 2027-04-05 | 2027-04-05 | A21602 | 265d |  |  |

| ID | WBS | Activity | Type | Duration | Start | Finish | Predecessors | Total float | Free float | Constraint |
| --- | --- | --- | --- | --- | --- | --- | --- | --- | --- | --- |
|  | 39 | **Waterproofing** |  |  | 2026-10-23 | 2027-02-01 |  |  |  |  |
| A21539 |  | LOI Issued | resource dependent | 1d | 2026-10-23 | 2026-10-23 |  | 310d | 0d | start on or after 2026-10-23 |
| A21540 |  | Submittals - Product Data | resource dependent | 10d | 2026-11-09 | 2026-11-20 | A21539 FS+10d | 325d | 15d |  |
| A21541 |  | Shop Drawings | resource dependent | 15d | 2026-11-23 | 2026-12-15 | A21539 FS+20d | 310d | 0d |  |
| A21542 |  | Lead Time | resource dependent | 30d | 2026-12-16 | 2027-01-29 | A21541, A21540 | 310d | 0d |  |
| A21543 |  | ROJ - Above Grade Waterproofing | resource dependent | 1d | 2027-02-01 | 2027-02-01 | A21542 | 310d |  |  |
|  | 40 | **Siding** |  |  | 2026-10-30 | 2027-01-25 |  |  |  |  |
| A21572 |  | LOI Issued | resource dependent | 1d | 2026-10-30 | 2026-10-30 |  | 315d | 0d | start on or after 2026-10-30 |
| A21573 |  | Submittals - Product Data | resource dependent | 10d | 2026-11-16 | 2026-12-01 | A21572 FS+10d | 330d | 15d |  |
| A21574 |  | Shop Drawings | resource dependent | 15d | 2026-12-02 | 2026-12-22 | A21572 FS+20d | 315d | 0d |  |
| A21575 |  | Lead Time | resource dependent | 20d | 2026-12-23 | 2027-01-22 | A21574, A21573 | 315d | 0d |  |
| A21576 |  | ROJ - Siding - 100A | resource dependent | 1d | 2027-01-25 | 2027-01-25 | A21575 | 315d |  |  |
|  | 41 | **Trash Chutes** |  |  | 2027-01-08 | 2027-04-26 |  |  |  |  |
| A21604 |  | LOI Issued | resource dependent | 1d | 2027-01-08 | 2027-01-08 |  | 250d | 0d | start on or after 2027-01-08 |
| A21605 |  | Submittals - Product Data | resource dependent | 10d | 2027-01-25 | 2027-02-05 | A21604 FS+10d | 265d | 15d |  |
| A21606 |  | Shop Drawings | resource dependent | 15d | 2027-02-08 | 2027-02-26 | A21604 FS+20d | 250d | 0d |  |
| A21607 |  | Lead Time | resource dependent | 40d | 2027-03-01 | 2027-04-23 | A21606, A21605 | 250d | 0d |  |
| A21608 |  | ROJ - Trash Chute | resource dependent | 1d | 2027-04-26 | 2027-04-26 | A21607 | 250d |  |  |
|  | 42 | **Flooring** |  |  | 2027-01-15 | 2027-05-17 |  |  |  |  |
| A21529 |  | LOI Issued | resource dependent | 1d | 2027-01-15 | 2027-01-15 |  | 235d | 0d | start on or after 2027-01-15 |
| A21530 |  | Submittals - Product Data | resource dependent | 15d | 2027-02-01 | 2027-02-19 | A21529 FS+10d | 245d | 10d |  |
| A21531 |  | Shop Drawings | resource dependent | 15d | 2027-02-15 | 2027-03-05 | A21529 FS+20d | 235d | 0d |  |
| A21532 |  | Lead Time | resource dependent | 50d | 2027-03-08 | 2027-05-14 | A21531, A21530 | 235d | 0d |  |
| A21533 |  | ROJ - Flooring - 100A | resource dependent | 1d | 2027-05-17 | 2027-05-17 | A21532 | 235d |  |  |

| ID | WBS | Activity | Type | Duration | Start | Finish | Predecessors | Total float | Free float | Constraint |
| --- | --- | --- | --- | --- | --- | --- | --- | --- | --- | --- |
|  | 43 | **Pools** |  |  | 2027-01-15 | 2027-10-29 |  |  |  |  |
| A21577 |  | LOI Issued | resource dependent | 1d | 2027-01-15 | 2027-01-15 |  | 120d | 0d | start on or after 2027-01-15 |
| A21578 |  | Submittals - Product Data | resource dependent | 15d | 2027-02-15 | 2027-03-05 | A21577 FS+20d | 286d |  |  |
| A21579 |  | Shop Drawings | resource dependent | 20d | 2027-02-15 | 2027-03-12 | A21577 FS+20d | 120d | 0d |  |
| A21580 |  | DPHHS Permit Review | resource dependent | 60d | 2027-03-15 | 2027-06-07 | A21579 | 120d | 0d |  |
| A21581 |  | COA Permit Review | resource dependent | 50d | 2027-06-08 | 2027-08-18 | A21580 | 120d | 0d |  |
| A21582 |  | Fabrication of Long Lead Items (Coping/ Equipment) | resource dependent | 50d | 2027-08-19 | 2027-10-28 | A21581, A21580 | 120d | 0d |  |
| A21583 |  | ROJ - Pool | resource dependent | 1d | 2027-10-29 | 2027-10-29 | A21582 | 120d |  |  |
|  | 44 | **Millwork** |  |  | 2027-04-23 | 2027-10-01 |  |  |  |  |
| A21609 |  | LOI Issued | resource dependent | 1d | 2027-04-23 | 2027-04-23 |  | 140d | 0d | start on or after 2027-04-23 |
| A21610 |  | Submittals - Product Data | resource dependent | 15d | 2027-05-10 | 2027-05-28 | A21609 FS+10d | 155d | 15d |  |
| A21611 |  | Shop Drawings | resource dependent | 20d | 2027-05-24 | 2027-06-22 | A21609 FS+20d | 140d | 0d |  |
| A21612 |  | Lead Time | resource dependent | 70d | 2027-06-23 | 2027-09-30 | A21611, A21610 | 140d | 0d |  |
| A21613 |  | ROJ - Millwork | resource dependent | 1d | 2027-10-01 | 2027-10-01 | A21612 | 140d |  |  |
|  | 45 | **Paint/ Wallcovering** |  |  | 2025-07-25 | 2025-10-14 |  |  |  |  |
| A21534 |  | LOI Issued | resource dependent | 1d | 2025-07-25 | 2025-07-25 |  | 635d | 0d | start on or after 2025-07-25 |
| A21535 |  | Submittals - Product Data | resource dependent | 10d | 2025-08-11 | 2025-08-22 | A21534 FS+10d | 650d | 15d |  |
| A21536 |  | Shop Drawings | resource dependent | 15d | 2025-08-25 | 2025-09-15 | A21534 FS+20d | 635d | 0d |  |
| A21537 |  | Lead Time | resource dependent | 20d | 2025-09-16 | 2025-10-13 | A21536, A21535 | 635d | 0d |  |
| A21538 |  | ROJ - Paint/Wallcovering - 100A | resource dependent | 1d | 2025-10-14 | 2025-10-14 | A21537 | 635d |  |  |
|  | 46 | **Accessories** |  |  | 2025-07-25 | 2025-10-28 |  |  |  |  |
| A21614 |  | LOI Issued | resource dependent | 1d | 2025-07-25 | 2025-07-25 |  | 625d | 0d | start on or after 2025-07-25 |
| A21615 |  | Submittals - Product Data | resource dependent | 10d | 2025-08-11 | 2025-08-22 | A21614 FS+10d | 640d | 15d |  |
| A21616 |  | Shop Drawings | resource dependent | 15d | 2025-08-25 | 2025-09-15 | A21614 FS+20d | 625d | 0d |  |
| A21617 |  | Lead Time | resource dependent | 30d | 2025-09-16 | 2025-10-27 | A21615, A21616 | 625d | 0d |  |
| A21618 |  | ROJ - Div 10 | resource dependent | 1d | 2025-10-28 | 2025-10-28 | A21617 | 625d |  |  |

| ID | WBS | Activity | Type | Duration | Start | Finish | Predecessors | Planned start | Total float | Free float | Constraint |
| --- | --- | --- | --- | --- | --- | --- | --- | --- | --- | --- | --- |
|  | 47 | **Landscape** |  |  | 2025-07-25 | 2025-10-28 |  |  |  |  |  |
| A21514 |  | LOI Issued | resource dependent | 1d | 2025-07-25 | 2025-07-25 |  |  | 625d | 0d | start on or after 2025-07-25 |
| A21515 |  | Submittals - Product Data | resource dependent | 15d | 2025-08-11 | 2025-08-29 | A21514 FS+10d |  | 635d | 10d |  |
| A21516 |  | Shop Drawings/ Planting Schedules | resource dependent | 15d | 2025-08-25 | 2025-09-15 | A21514 FS+20d |  | 625d | 0d |  |
| A21517 |  | Lead Time | resource dependent | 30d | 2025-09-16 | 2025-10-27 | A21516, A21515 |  | 625d | 0d |  |
| A21518 |  | ROJ - Landscaping | resource dependent | 1d | 2025-10-28 | 2025-10-28 | A21517 |  | 625d |  |  |
|  | 48 | **Hardscape** |  |  | 2025-07-25 | 2025-10-28 |  |  |  |  |  |
| A21619 |  | LOI Issued | resource dependent | 1d | 2025-07-25 | 2025-07-25 |  |  | 625d | 0d | start on or after 2025-07-25 |
| A21620 |  | Submittals - Product Data | resource dependent | 10d | 2025-08-11 | 2025-08-22 | A21619 FS+10d |  | 640d | 15d |  |
| A21621 |  | Shop Drawings | resource dependent | 15d | 2025-08-25 | 2025-09-15 | A21619 FS+20d |  | 625d | 0d |  |
| A21622 |  | Lead Time | resource dependent | 30d | 2025-09-16 | 2025-10-27 | A21621, A21620 |  | 625d | 0d |  |
| A21623 |  | ROJ - Hardscapes | resource dependent | 1d | 2025-10-28 | 2025-10-28 | A21622 |  | 625d |  |  |
|  | 49 | **Signage** |  |  | 2025-07-25 | 2025-12-18 |  |  |  |  |  |
| A21519 |  | LOI Issued | resource dependent | 1d | 2025-07-25 | 2025-07-25 |  |  | 590d | 0d | start on or after 2025-07-25 |
| A21520 |  | Submittals - Product Data | resource dependent | 10d | 2025-08-11 | 2025-08-22 | A21519 FS+10d |  | 610d | 20d |  |
| A21521 |  | Shop Drawings | resource dependent | 20d | 2025-08-25 | 2025-09-22 | A21519 FS+20d |  | 590d | 0d |  |
| A21522 |  | Lead Time | resource dependent | 60d | 2025-09-23 | 2025-12-17 | A21520, A21521 |  | 590d | 0d |  |
| A21523 |  | ROJ - Signage | resource dependent | 1d | 2025-12-18 | 2025-12-18 | A21522 |  | 590d |  |  |
|  | 50 | **CONSTRUCTION ACTIVITIES** |  |  | 2024-08-20 | 2028-04-24 |  |  |  |  |  |
|  | 51 | **Mobilization** |  |  | 2025-10-20 | 2025-11-10 |  |  |  |  |  |
| A18936 |  | Call in Locates | resource dependent | 1d | 2025-10-20 | 2025-10-20 | A18937 FS-15d |  | 631d |  |  |
| A18935 |  | Notice to Proceed - Construction Start | milestone | 0d | 2025-10-27 | 2025-10-27 | A18619 FS+3d | 2025-10-27 | 0d |  |  |
| A18937 |  | Mobilize Site | resource dependent | 10d | 2025-10-27 | 2025-11-07 | A18935 |  | 0d |  |  |
| A18938 |  | MEP Cut/Cap/Safe-Off | resource dependent | 5d | 2025-10-27 | 2025-10-31 | A18935 |  | 10d |  |  |
| A18940 |  | Temp Site Fencing & Gates | resource dependent | 3d | 2025-10-27 | 2025-10-29 | A18935, A18939 FS-1d |  | 618d | 0d |  |
| A18939 |  | Close Sidewalk & Metered Parking Surrounding Site | milestone | 0d | 2025-10-28 | 2025-10-28 | A18935 FS+1d | 2025-10-28 | 616d | 0d |  |
| A18942 |  | Temp Power Setup | resource dependent | 10d | 2025-10-28 | 2025-11-10 | A18935, A18939 |  | 616d |  |  |
| A18943 |  | Construction Entrance Install | resource dependent | 3d | 2025-10-30 | 2025-11-03 | A18935, A18940 |  | 618d | 0d |  |
| A18944 |  | Install Temp Hose Bibbs | resource dependent | 3d | 2025-11-04 | 2025-11-06 | A18943, A18940, A18939 |  | 618d |  |  |

| ID | WBS | Activity | Type | Duration | Start | Finish | Predecessors | Planned start | Total float | Free float |
| --- | --- | --- | --- | --- | --- | --- | --- | --- | --- | --- |
|  | 52 | **Demolition** |  |  | 2025-11-10 | 2025-12-17 |  |  |  |  |
| A18948 |  | Install Erosion Control Measures | resource dependent | 5d | 2025-11-10 | 2025-11-14 | A18937 |  | 0d |  |
| A18949 |  | Demo & Abatement of Exsiting Structures | resource dependent | 15d | 2025-11-17 | 2025-12-09 | A18938, A18948 |  | 0d |  |
| A18950 |  | Site/Hardscape Clearing, Demo, & Hauloff | resource dependent | 20d | 2025-11-17 | 2025-12-16 | A18949 FS-15d |  | 0d |  |
| A18951 |  | Demolition & Clearing Complete | milestone | 0d | 2025-12-17 | 2025-12-17 | A18950 | 2025-12-17 | 0d |  |
|  | 53 | **Sitework** |  |  | 2025-07-23 | 2026-02-27 |  |  |  |  |
|  | 54 | **Site Shoring & Excavation** |  |  | 2025-12-17 | 2026-02-27 |  |  |  |  |
| A18955 |  | Rough Grading / Excavation of Site | resource dependent | 40d | 2025-12-17 | 2026-02-13 | A18951 |  | 0d |  |
| A19303 |  | Install Piles Section A | resource dependent | 15d | 2025-12-17 | 2026-01-09 | A21435, A18950 |  | 0d |  |
| A19304 |  | Install Piles Section B | resource dependent | 15d | 2026-01-12 | 2026-01-30 | A19303 |  | 543d | 1d |
|  | 55 | **Shoring Group A** |  |  | 2026-01-05 | 2026-02-03 |  |  |  |  |
|  | 56 | **Shoring Section 1** |  |  | 2026-01-05 | 2026-01-26 |  |  |  |  |
|  | 57 | **Excavate** |  |  | 2026-01-05 | 2026-01-22 |  |  |  |  |
| A18956 |  | Cut First 5' Lift @ shoring Wall | resource dependent | 2d | 2026-01-05 | 2026-01-06 | A18955 SS+10d, A19303 SS+10d |  | 0d |  |
| A18958 |  | Cut down 10' @ shoring walls | resource dependent | 2d | 2026-01-09 | 2026-01-12 | A18957, A18956 |  | 0d |  |
| A19021 |  | Cut down 15' @ shoring walls | resource dependent | 2d | 2026-01-15 | 2026-01-16 | A18959, A18958 |  | 0d |  |
| A19023 |  | Cut down 20' @ shoring walls | resource dependent | 2d | 2026-01-21 | 2026-01-22 | A19022, A19021 |  | 0d |  |
|  | 58 | **Install Lagging** |  |  | 2026-01-07 | 2026-01-26 |  |  |  |  |
| A18957 |  | Install first lift of lagging | resource dependent | 2d | 2026-01-07 | 2026-01-08 | A18956 |  | 0d |  |
| A18959 |  | Install second lift of loagging | resource dependent | 2d | 2026-01-13 | 2026-01-14 | A18958, A18957 |  | 0d |  |
| A19022 |  | Install third lift of lagging | resource dependent | 2d | 2026-01-19 | 2026-01-20 | A18959, A19021 |  | 0d |  |
| A19024 |  | Install fourth lift of lagging | resource dependent | 2d | 2026-01-23 | 2026-01-26 | A19023, A19022 |  | 0d |  |
|  | 59 | **Shoring Section 2** |  |  | 2026-01-07 | 2026-01-28 |  |  |  |  |
|  | 60 | **Excavate** |  |  | 2026-01-07 | 2026-01-26 |  |  |  |  |
| A19125 |  | Cut First 5' Lift @ shoring Wall | resource dependent | 2d | 2026-01-07 | 2026-01-08 | A18956 |  | 0d |  |
| A19126 |  | Cut down 10' @ shoring walls | resource dependent | 2d | 2026-01-13 | 2026-01-14 | A19130, A18958, A19125 |  | 0d |  |
| A19127 |  | Cut down 15' @ shoring walls | resource dependent | 2d | 2026-01-19 | 2026-01-20 | A19131, A19021, A19126 |  | 0d |  |
| A19128 |  | Cut down 20' @ shoring walls | resource dependent | 2d | 2026-01-23 | 2026-01-26 | A19132, A19023, A19127 |  | 0d |  |

| ID | WBS | Activity | Type | Duration | Start | Finish | Predecessors | Total float | Free float |
| --- | --- | --- | --- | --- | --- | --- | --- | --- | --- |
|  | 61 | **Install Lagging** |  |  | 2026-01-09 | 2026-01-28 |  |  |  |
| A19130 |  | Install first lift of lagging | resource dependent | 2d | 2026-01-09 | 2026-01-12 | A18957, A19125 | 0d |  |
| A19131 |  | Install second lift of loagging | resource dependent | 2d | 2026-01-15 | 2026-01-16 | A19130, A19126 | 0d |  |
| A19132 |  | Install third lift of lagging | resource dependent | 2d | 2026-01-21 | 2026-01-22 | A19131, A19127 | 0d |  |
| A19133 |  | Install fourth lift of lagging | resource dependent | 2d | 2026-01-27 | 2026-01-28 | A19132, A19128, A19024 | 0d |  |
|  | 62 | **Shoring Section 3** |  |  | 2026-01-09 | 2026-01-30 |  |  |  |
|  | 63 | **Excavate** |  |  | 2026-01-09 | 2026-01-28 |  |  |  |
| A19136 |  | Cut First 5' Lift @ shoring Wall | resource dependent | 2d | 2026-01-09 | 2026-01-12 | A19125 | 0d |  |
| A19137 |  | Cut down 10' @ shoring walls | resource dependent | 2d | 2026-01-15 | 2026-01-16 | A19136, A19141, A19126 | 0d |  |
| A19138 |  | Cut down 15' @ shoring walls | resource dependent | 2d | 2026-01-21 | 2026-01-22 | A19137, A19142, A19127 | 0d |  |
| A19139 |  | Cut down 20' @ shoring walls | resource dependent | 2d | 2026-01-27 | 2026-01-28 | A19128, A19138, A19143 | 0d |  |
|  | 64 | **Install Lagging** |  |  | 2026-01-13 | 2026-01-30 |  |  |  |
| A19141 |  | Install first lift of lagging | resource dependent | 2d | 2026-01-13 | 2026-01-14 | A19130, A19136 | 0d |  |
| A19142 |  | Install second lift of loagging | resource dependent | 2d | 2026-01-19 | 2026-01-20 | A19137, A19141 | 0d |  |
| A19143 |  | Install third lift of lagging | resource dependent | 2d | 2026-01-23 | 2026-01-26 | A19138, A19142 | 0d |  |
| A19144 |  | Install fourth lift of lagging | resource dependent | 2d | 2026-01-29 | 2026-01-30 | A19133, A19143, A19139 | 0d |  |
|  | 65 | **Shoring Section 4** |  |  | 2026-01-13 | 2026-02-03 |  |  |  |
|  | 66 | **Excavate** |  |  | 2026-01-13 | 2026-01-30 |  |  |  |
| A19147 |  | Cut First 5' Lift @ shoring Wall | resource dependent | 2d | 2026-01-13 | 2026-01-14 | A19136 | 560d | 0d |
| A19148 |  | Cut down 10' @ shoring walls | resource dependent | 2d | 2026-01-19 | 2026-01-20 | A19137, A19147, A19152 | 560d | 0d |
| A19149 |  | Cut down 15' @ shoring walls | resource dependent | 2d | 2026-01-23 | 2026-01-26 | A19138, A19148, A19153 | 560d | 0d |
| A19150 |  | Cut down 20' @ shoring walls | resource dependent | 2d | 2026-01-29 | 2026-01-30 | A19139, A19149, A19154 | 560d | 0d |
|  | 67 | **Install Lagging** |  |  | 2026-01-15 | 2026-02-03 |  |  |  |
| A19152 |  | Install first lift of lagging | resource dependent | 2d | 2026-01-15 | 2026-01-16 | A19141, A19147 | 560d | 0d |
| A19153 |  | Install second lift of loagging | resource dependent | 2d | 2026-01-21 | 2026-01-22 | A19148, A19152 | 560d | 0d |
| A19154 |  | Install third lift of lagging | resource dependent | 2d | 2026-01-27 | 2026-01-28 | A19149, A19153 | 560d | 0d |
| A19155 |  | Install fourth lift of lagging | resource dependent | 2d | 2026-02-02 | 2026-02-03 | A19144, A19154, A19150 | 560d |  |

| ID | WBS | Activity | Type | Duration | Start | Finish | Predecessors | Total float | Free float |
| --- | --- | --- | --- | --- | --- | --- | --- | --- | --- |
|  | 68 | **Shoring Group B** |  |  | 2026-01-27 | 2026-02-27 |  |  |  |
|  | 69 | **Shoring Section 5** |  |  | 2026-01-27 | 2026-02-17 |  |  |  |
|  | 70 | **Excavate** |  |  | 2026-01-27 | 2026-02-13 |  |  |  |
| A19158 |  | Cut First 5' Lift @ shoring Wall | resource dependent | 2d | 2026-01-27 | 2026-01-28 | A19128, A19304 FS-5d | 542d | 0d |
| A19159 |  | Cut down 10' @ shoring walls | resource dependent | 2d | 2026-02-02 | 2026-02-03 | A19158, A19163 | 542d | 0d |
| A19160 |  | Cut down 15' @ shoring walls | resource dependent | 2d | 2026-02-06 | 2026-02-09 | A19159, A19164 | 550d | 0d |
| A19161 |  | Cut down 20' @ shoring walls | resource dependent | 2d | 2026-02-12 | 2026-02-13 | A19160, A19165 | 550d | 0d |
|  | 71 | **Install Lagging** |  |  | 2026-01-29 | 2026-02-17 |  |  |  |
| A19163 |  | Install first lift of lagging | resource dependent | 2d | 2026-01-29 | 2026-01-30 | A19158 | 542d | 0d |
| A19164 |  | Install second lift of loagging | resource dependent | 2d | 2026-02-04 | 2026-02-05 | A19159, A19163 | 550d | 0d |
| A19165 |  | Install third lift of lagging | resource dependent | 2d | 2026-02-10 | 2026-02-11 | A19160, A19164 | 550d | 0d |
| A19166 |  | Install fourth lift of lagging | resource dependent | 2d | 2026-02-16 | 2026-02-17 | A19165, A19161 | 550d |  |
|  | 72 | **Shoring Section 6** |  |  | 2026-01-29 | 2026-02-19 |  |  |  |
|  | 73 | **Excavate** |  |  | 2026-01-29 | 2026-02-17 |  |  |  |
| A19169 |  | Cut First 5' Lift @ shoring Wall | resource dependent | 2d | 2026-01-29 | 2026-01-30 | A19158 | 542d | 0d |
| A19170 |  | Cut down 10' @ shoring walls | resource dependent | 2d | 2026-02-04 | 2026-02-05 | A19174, A19159, A19169 | 542d | 0d |
| A19171 |  | Cut down 15' @ shoring walls | resource dependent | 2d | 2026-02-10 | 2026-02-11 | A19175, A19170 | 548d | 0d |
| A19172 |  | Cut down 20' @ shoring walls | resource dependent | 2d | 2026-02-16 | 2026-02-17 | A19176, A19171 | 548d | 0d |
|  | 74 | **Install Lagging** |  |  | 2026-02-02 | 2026-02-19 |  |  |  |
| A19174 |  | Install first lift of lagging | resource dependent | 2d | 2026-02-02 | 2026-02-03 | A19163, A19169 | 542d | 0d |
| A19175 |  | Install second lift of loagging | resource dependent | 2d | 2026-02-06 | 2026-02-09 | A19174, A19170 | 548d | 0d |
| A19176 |  | Install third lift of lagging | resource dependent | 2d | 2026-02-12 | 2026-02-13 | A19175, A19171 | 548d | 0d |
| A19177 |  | Install fourth lift of lagging | resource dependent | 2d | 2026-02-18 | 2026-02-19 | A19176, A19172 | 548d |  |
|  | 75 | **Shoring Section 7** |  |  | 2026-02-02 | 2026-02-23 |  |  |  |
|  | 76 | **Excavate** |  |  | 2026-02-02 | 2026-02-19 |  |  |  |
| A19180 |  | Cut First 5' Lift @ shoring Wall | resource dependent | 2d | 2026-02-02 | 2026-02-03 | A19169 | 542d | 0d |
| A19181 |  | Cut down 10' @ shoring walls | resource dependent | 2d | 2026-02-06 | 2026-02-09 | A19180, A19185, A19170 | 542d | 0d |
| A19182 |  | Cut down 15' @ shoring walls | resource dependent | 2d | 2026-02-12 | 2026-02-13 | A19181, A19186 | 546d | 0d |
| A19183 |  | Cut down 20' @ shoring walls | resource dependent | 2d | 2026-02-18 | 2026-02-19 | A19182, A19187 | 546d | 0d |

| ID | WBS | Activity | Type | Duration | Start | Finish | Predecessors | Total float | Free float |
| --- | --- | --- | --- | --- | --- | --- | --- | --- | --- |
|  | 77 | **Install Lagging** |  |  | 2026-02-04 | 2026-02-23 |  |  |  |
| A19185 |  | Install first lift of lagging | resource dependent | 2d | 2026-02-04 | 2026-02-05 | A19174, A19180 | 542d | 0d |
| A19186 |  | Install second lift of loagging | resource dependent | 2d | 2026-02-10 | 2026-02-11 | A19181, A19185 | 546d | 0d |
| A19187 |  | Install third lift of lagging | resource dependent | 2d | 2026-02-16 | 2026-02-17 | A19182, A19186 | 546d | 0d |
| A19188 |  | Install fourth lift of lagging | resource dependent | 2d | 2026-02-20 | 2026-02-23 | A19187, A19183 | 546d |  |
|  | 78 | **Shoring Section 8** |  |  | 2026-02-04 | 2026-02-27 |  |  |  |
|  | 79 | **Excavate** |  |  | 2026-02-04 | 2026-02-23 |  |  |  |
| A19191 |  | Cut First 5' Lift @ shoring Wall | resource dependent | 2d | 2026-02-04 | 2026-02-05 | A19180 | 542d | 0d |
| A19192 |  | Cut down 10' @ shoring walls | resource dependent | 2d | 2026-02-10 | 2026-02-11 | A19181, A19191, A19196 | 542d | 0d |
| A19193 |  | Cut down 15' @ shoring walls | resource dependent | 2d | 2026-02-16 | 2026-02-17 | A19192, A19197 | 542d | 0d |
| A19194 |  | Cut down 20' @ shoring walls | resource dependent | 2d | 2026-02-20 | 2026-02-23 | A19193, A19198 | 542d | 0d |
|  | 80 | **Install Lagging** |  |  | 2026-02-06 | 2026-02-27 |  |  |  |
| A19196 |  | Install first lift of lagging | resource dependent | 2d | 2026-02-06 | 2026-02-09 | A19185, A19191 | 542d | 0d |
| A19197 |  | Install second lift of loagging | resource dependent | 2d | 2026-02-12 | 2026-02-13 | A19192, A19196 | 542d | 0d |
| A19198 |  | Install third lift of lagging | resource dependent | 2d | 2026-02-18 | 2026-02-19 | A19193, A19197 | 542d | 0d |
| A19199 |  | Install fourth lift of lagging | resource dependent | 2d | 2026-02-24 | 2026-02-25 | A19198, A19194 | 542d | 0d |
| A21380 |  | Demobilize Boring Rigs | resource dependent | 2d | 2026-02-26 | 2026-02-27 | A21364, A21372, A21378, A19199 | 542d |  |
|  | 81 | **Foundation Improvements - Assume RAPs** |  |  | 2026-02-02 | 2026-02-27 |  |  |  |
| A19271 |  | Parking Deck RAPs | resource dependent | 20d | 2026-02-02 | 2026-02-27 | A19144, A18955 FS-10d, A21441 | 0d |  |
|  | 82 | **Site Utilities** |  |  | 2025-07-23 | 2026-02-19 |  |  |  |
|  | 83 | **W. Glenn Ave. Utility Relocate** |  |  | 2025-07-23 | 2026-02-19 |  |  |  |
|  | 84 | **Storm** |  |  | 2025-12-23 | 2026-01-06 |  |  |  |
|  | 85 | **Red Line** |  |  | 2025-12-23 | 2026-01-06 |  |  |  |
| A21368 |  | 212-204 | resource dependent | 8d | 2025-12-23 | 2026-01-06 | A21361 | 548d | 0d |

| ID | WBS | Activity | Type | Duration | Start | Finish | Predecessors | Total float | Free float |
| --- | --- | --- | --- | --- | --- | --- | --- | --- | --- |
|  | 86 | **Spire (Gas Line)** |  |  | 2025-11-10 | 2025-12-17 |  |  |  |
| A21365 |  | Hydro-Vac Utility Lines | resource dependent | 1d | 2025-11-10 | 2025-11-10 | A18937 | 548d | 0d |
| A21371 |  | Rlease Work | resource dependent | 20d | 2025-11-11 | 2025-12-10 | A21365 | 548d | 0d |
| A21353 |  | Relocate Gas Line | resource dependent | 5d | 2025-12-11 | 2025-12-17 | A21371 | 548d | 0d |
|  | 87 | **Alabama Power** |  |  | 2025-12-18 | 2026-02-19 |  |  |  |
| A21361 |  | Get W. Glenn to Subgrade | resource dependent | 3d | 2025-12-18 | 2025-12-22 | A18948, A21353 | 548d | 0d |
| A21360 |  | Boring Underground Primary | resource dependent | 10d | 2026-01-07 | 2026-01-20 | A21361, A21368 | 548d | 0d |
| A21359 |  | Set Precast Pad | resource dependent | 1d | 2026-01-21 | 2026-01-21 | A21360 | 561d | 0d |
| A21358 |  | Set Switch | resource dependent | 1d | 2026-01-22 | 2026-01-22 | A21359 | 561d | 0d |
| A21372 |  | Remove Lines Off Poles | resource dependent | 5d | 2026-01-23 | 2026-01-29 | A21358 | 561d | 13d |
| A21379 |  | Remove Poles | resource dependent | 2d | 2026-02-18 | 2026-02-19 | A21364, A21372, A21378 | 548d |  |
|  | 88 | **AT&T** |  |  | 2025-07-23 | 2026-02-17 |  |  |  |
| A21369 |  | RISE Release | resource dependent | 90d | 2025-07-23 | 2025-11-26 | A19322 | 597d | 49d |
| A21362 |  | Utility Line Boring | resource dependent | 10d | 2026-01-21 | 2026-02-03 | A21360 | 548d | 0d |
| A21363 |  | Pull Lines | resource dependent | 5d | 2026-02-04 | 2026-02-10 | A21362 | 548d | 0d |
| A21364 |  | Relocate Overhead Lines | resource dependent | 5d | 2026-02-11 | 2026-02-17 | A21363, A21369 | 548d | 0d |
|  | 89 | **Spectrum** |  |  | 2025-07-23 | 2026-02-17 |  |  |  |
| A21375 |  | RISE Release | resource dependent | 90d | 2025-07-23 | 2025-11-26 | A19322 | 597d | 49d |
| A21376 |  | Utility Line Boring | resource dependent | 10d | 2026-01-21 | 2026-02-03 | A21360 | 548d | 0d |
| A21377 |  | Pull Lines | resource dependent | 5d | 2026-02-04 | 2026-02-10 | A21376 | 548d | 0d |
| A21378 |  | Relocate Overhead Lines | resource dependent | 5d | 2026-02-11 | 2026-02-17 | A21377, A21375 | 548d | 0d |
|  | 90 | **Tower Cranes** |  |  | 2026-04-27 | 2027-08-02 |  |  |  |
|  | 91 | **Tower Crane #1 (West)** |  |  | 2026-05-18 | 2027-02-26 |  |  |  |
| A19327 |  | Tower Crane Foundation | resource dependent | 5d | 2026-05-18 | 2026-05-22 | A68178 SS | 24d | 0d |
| A19329 |  | Erect Tower Crane | resource dependent | 3d | 2026-09-28 | 2026-09-30 | A19327, A19309 | 0d |  |
| A19330 |  | Dismantle Tower Crane | resource dependent | 3d | 2027-02-24 | 2027-02-26 | A44718 FS+20d, A19329 | 291d |  |

| ID | WBS | Activity | Type | Duration | Start | Finish | Predecessors | Total float | Free float |
| --- | --- | --- | --- | --- | --- | --- | --- | --- | --- |
|  | 92 | **Tower Crane #2 (East)** |  |  | 2026-04-27 | 2027-08-02 |  |  |  |
| A19331 |  | Tower Crane Foundation | resource dependent | 5d | 2026-04-27 | 2026-05-01 | A19434 | 496d | 176d |
| A19328 |  | Erect Tower Crane | resource dependent | 3d | 2027-01-11 | 2027-01-13 | A68448, A68498 SS-5d, A19331 SS | 320d | 137d |
| A19332 |  | Dismantle Tower Crane | resource dependent | 3d | 2027-07-29 | 2027-08-02 | A30158 FS+20d, A19328 | 183d |  |
|  | 93 | **Building Construction** |  |  | 2024-08-20 | 2028-03-27 |  |  |  |
|  | 94 | **Parking Deck** |  |  | 2024-08-20 | 2027-11-03 |  |  |  |
|  | 95 | **Temporary Dewatering System** |  |  | 2026-01-08 | 2026-06-16 |  |  |  |
| A21383 |  | Install System | resource dependent | 7d | 2026-01-08 | 2026-01-16 | A19271 SS-17d | 562d | 0d |
| A21385 |  | Stabilize Water Level | resource dependent | 5d | 2026-01-19 | 2026-01-23 | A21383 | 562d | 96d |
| A21386 |  | Remove Dewatering System | resource dependent | 5d | 2026-06-10 | 2026-06-16 | A19586 SS, A21385 | 466d |  |
|  | 96 | **Parking Deck Foundations & Retaining Walls** |  |  | 2026-02-23 | 2026-10-20 |  |  |  |
|  | 97 | **Footings** |  |  | 2026-02-23 | 2026-10-05 |  |  |  |
|  | 98 | **BRW1: Footings** |  |  | 2026-02-23 | 2026-03-04 |  |  |  |
| A19367 |  | BRW1: Excavate | resource dependent | 5d | 2026-02-23 | 2026-02-27 | A19271 FS-5d, A21444 | 0d |  |
| A19368 |  | BRW1: Install Reinforcement | resource dependent | 4d | 2026-02-25 | 2026-03-02 | A19367 FS-3d | 504d | 0d |
| A19369 |  | BRW1: Inspections | resource dependent | 2d | 2026-03-02 | 2026-03-03 | A19368 FS-1d | 504d | 0d |
| A19370 |  | BRW1: Pour | resource dependent | 2d | 2026-03-03 | 2026-03-04 | A19369 FS-1d | 504d | 0d |
|  | 99 | **BRW2: Footings** |  |  | 2026-03-02 | 2026-03-09 |  |  |  |
| A19379 |  | BRW2: Excavate | resource dependent | 3d | 2026-03-02 | 2026-03-04 | A19367 | 0d |  |
| A19380 |  | BRW2: Install Reinforcement | resource dependent | 3d | 2026-03-03 | 2026-03-05 | A19379 FS-2d | 506d | 0d |
| A19381 |  | BRW2: Inspections | resource dependent | 2d | 2026-03-05 | 2026-03-06 | A19380 FS-1d | 506d | 0d |
| A19382 |  | BRW2: Pour | resource dependent | 2d | 2026-03-06 | 2026-03-09 | A19381 FS-1d | 506d | 2d |
|  | 100 | **BRW3: Footings** |  |  | 2026-03-05 | 2026-03-13 |  |  |  |
| A19392 |  | BRW3: Excavate | resource dependent | 4d | 2026-03-05 | 2026-03-10 | A19379 | 0d |  |
| A19393 |  | BRW3: Install Reinforcement | resource dependent | 4d | 2026-03-06 | 2026-03-11 | A19392 FS-3d | 504d | 0d |
| A19394 |  | BRW3: Inspections | resource dependent | 2d | 2026-03-11 | 2026-03-12 | A19393 FS-1d | 504d | 0d |
| A19395 |  | BRW3: Pour | resource dependent | 2d | 2026-03-12 | 2026-03-13 | A19394 FS-1d | 504d | 0d |

| ID | WBS | Activity | Type | Duration | Start | Finish | Predecessors | Total float | Free float |
| --- | --- | --- | --- | --- | --- | --- | --- | --- | --- |
|  | 101 | **BRW4: Footings** |  |  | 2026-03-11 | 2026-03-18 |  |  |  |
| A19561 |  | BRW4: Excavate | resource dependent | 3d | 2026-03-11 | 2026-03-13 | A19392 | 0d |  |
| A19562 |  | BRW4: Install Reinforcement | resource dependent | 3d | 2026-03-12 | 2026-03-16 | A19561 FS-2d | 505d | 0d |
| A19563 |  | BRW4: Inspections | resource dependent | 1d | 2026-03-17 | 2026-03-17 | A19562 | 505d | 0d |
| A19564 |  | BRW4: Pour | resource dependent | 1d | 2026-03-18 | 2026-03-18 | A19563 | 505d | 1d |
|  | 102 | **BRW5: Footings** |  |  | 2026-03-16 | 2026-03-23 |  |  |  |
| A19548 |  | BRW5: Excavate | resource dependent | 3d | 2026-03-16 | 2026-03-18 | A19561 | 0d |  |
| A19549 |  | BRW5: Install Reinforcement | resource dependent | 3d | 2026-03-17 | 2026-03-19 | A19548 FS-2d | 505d | 0d |
| A19550 |  | BRW5: Inspections | resource dependent | 1d | 2026-03-20 | 2026-03-20 | A19549 | 505d | 0d |
| A19551 |  | BRW5: Pour | resource dependent | 1d | 2026-03-23 | 2026-03-23 | A19550 | 505d | 1d |
|  | 103 | **BRW6: Footings** |  |  | 2026-03-19 | 2026-03-25 |  |  |  |
| A19535 |  | BRW6: Excavate | resource dependent | 2d | 2026-03-19 | 2026-03-20 | A19548 | 0d |  |
| A19536 |  | BRW6: Install Reinforcement | resource dependent | 2d | 2026-03-20 | 2026-03-23 | A19535 FS-1d | 524d | 0d |
| A19537 |  | BRW6: Inspections | resource dependent | 1d | 2026-03-24 | 2026-03-24 | A19536 | 524d | 0d |
| A19538 |  | BRW6: Pour | resource dependent | 1d | 2026-03-25 | 2026-03-25 | A19537 | 524d |  |
|  | 104 | **BRW7: Footings** |  |  | 2026-03-23 | 2026-03-30 |  |  |  |
| A19522 |  | BRW7: Excavate | resource dependent | 3d | 2026-03-23 | 2026-03-25 | A19535 | 0d |  |
| A19523 |  | BRW7: Install Reinforcement | resource dependent | 3d | 2026-03-24 | 2026-03-26 | A19522 FS-2d | 2d | 0d |
| A19524 |  | BRW7: Inspections | resource dependent | 2d | 2026-03-26 | 2026-03-27 | A19523 FS-1d | 2d | 0d |
| A19525 |  | BRW7: Pour | resource dependent | 2d | 2026-03-27 | 2026-03-30 | A19524 FS-1d | 2d | 0d |
|  | 105 | **BRW8: Footings** |  |  | 2026-03-26 | 2026-04-03 |  |  |  |
| A19509 |  | BRW8: Excavate | resource dependent | 4d | 2026-03-26 | 2026-03-31 | A19522 | 0d |  |
| A19510 |  | BRW8: Install Reinforcement | resource dependent | 4d | 2026-03-27 | 2026-04-01 | A19509 FS-3d | 1d | 0d |
| A19511 |  | BRW8: Inspections | resource dependent | 2d | 2026-04-01 | 2026-04-02 | A19510 FS-1d | 1d | 0d |
| A19512 |  | BRW8: Pour | resource dependent | 2d | 2026-04-02 | 2026-04-03 | A19511 FS-1d | 1d | 0d |

| ID | WBS | Activity | Type | Duration | Start | Finish | Predecessors | Total float | Free float |
| --- | --- | --- | --- | --- | --- | --- | --- | --- | --- |
|  | 106 | **BRW9: Footings** |  |  | 2026-04-01 | 2026-04-07 |  |  |  |
| A19496 |  | BRW9: Excavate | resource dependent | 2d | 2026-04-01 | 2026-04-02 | A19509 | 0d |  |
| A19497 |  | BRW9: Install Reinforcement | resource dependent | 2d | 2026-04-02 | 2026-04-03 | A19496 FS-1d | 4d | 0d |
| A19498 |  | BRW9: Inspections | resource dependent | 1d | 2026-04-06 | 2026-04-06 | A19497 | 4d | 0d |
| A19499 |  | BRW9: Pour | resource dependent | 1d | 2026-04-07 | 2026-04-07 | A19498 | 4d | 2d |
|  | 108 | **BRW10: Footings** |  |  | 2026-04-03 | 2026-04-13 |  |  |  |
| A19470 |  | BRW10: Excavate | resource dependent | 4d | 2026-04-03 | 2026-04-08 | A19496 | 0d |  |
| A19471 |  | BRW10: Install Reinforcement | resource dependent | 4d | 2026-04-06 | 2026-04-09 | A19470 FS-3d | 2d | 0d |
| A19472 |  | BRW10: Inspections | resource dependent | 3d | 2026-04-08 | 2026-04-10 | A19471 FS-2d | 2d | 0d |
| A19473 |  | BRW10: Pour | resource dependent | 3d | 2026-04-09 | 2026-04-13 | A19472 FS-2d | 2d | 0d |
|  | 109 | **BRW11: Footings** |  |  | 2026-04-09 | 2026-04-16 |  |  |  |
| A19457 |  | BRW11: Excavate | resource dependent | 3d | 2026-04-09 | 2026-04-13 | A19470 | 0d |  |
| A19458 |  | BRW11: Install Reinforcement | resource dependent | 3d | 2026-04-10 | 2026-04-14 | A19457 FS-2d | 508d | 0d |
| A19459 |  | BRW11: Inspections | resource dependent | 1d | 2026-04-15 | 2026-04-15 | A19458 | 508d | 0d |
| A19460 |  | BRW11: Pour | resource dependent | 1d | 2026-04-16 | 2026-04-16 | A19459 | 508d |  |
|  | 110 | **BRW12: Footings** |  |  | 2026-04-14 | 2026-04-21 |  |  |  |
| A19444 |  | BRW12: Excavate | resource dependent | 3d | 2026-04-14 | 2026-04-16 | A19457 | 0d |  |
| A19445 |  | BRW12: Install Reinforcement | resource dependent | 3d | 2026-04-15 | 2026-04-17 | A19444 FS-2d | 505d | 0d |
| A19446 |  | BRW12: Inspections | resource dependent | 1d | 2026-04-20 | 2026-04-20 | A19445 | 505d | 0d |
| A19447 |  | BRW12: Pour | resource dependent | 1d | 2026-04-21 | 2026-04-21 | A19446 | 505d |  |
|  | 111 | **BRW13: Footings** |  |  | 2026-04-17 | 2026-04-24 |  |  |  |
| A19431 |  | BRW13: Excavate | resource dependent | 3d | 2026-04-17 | 2026-04-21 | A19444 | 0d |  |
| A19432 |  | BRW13: Install Reinforcement | resource dependent | 3d | 2026-04-20 | 2026-04-22 | A19431 FS-2d | 0d |  |
| A19433 |  | BRW13: Inspections | resource dependent | 1d | 2026-04-23 | 2026-04-23 | A19432 | 0d |  |
| A19434 |  | BRW13: Pour | resource dependent | 1d | 2026-04-24 | 2026-04-24 | A19433 | 0d |  |

| ID | WBS | Activity | Type | Duration | Start | Finish | Predecessors | Total float | Free float |
| --- | --- | --- | --- | --- | --- | --- | --- | --- | --- |
|  | WBS61 | **BRW14: Footings** |  |  | 2026-09-28 | 2026-10-05 |  |  |  |
| A21978 |  | BRW14: Excavate | resource dependent | 3d | 2026-09-28 | 2026-09-30 | A19309 | 35d | 0d |
| A21988 |  | BRW14: Install Reinforcement | resource dependent | 3d | 2026-09-29 | 2026-10-01 | A21978 FS-2d | 379d | 0d |
| A21998 |  | BRW14: Inspections | resource dependent | 1d | 2026-10-02 | 2026-10-02 | A21988 | 379d | 0d |
| A22008 |  | BRW14: Pour | resource dependent | 1d | 2026-10-05 | 2026-10-05 | A21998 | 379d | 0d |
|  | 114 | **Walls** |  |  | 2026-03-05 | 2026-10-20 |  |  |  |
|  | 115 | **BRW1: Walls** |  |  | 2026-03-05 | 2026-03-31 |  |  |  |
| A19366 |  | BRW1: One Side | resource dependent | 5d | 2026-03-05 | 2026-03-11 | A19370 | 504d | 0d |
| A19371 |  | BRW1: Install Reinforcement | resource dependent | 5d | 2026-03-06 | 2026-03-12 | A19366 FS-4d | 507d | 0d |
| A19372 |  | BRW1: Inspection | resource dependent | 5d | 2026-03-09 | 2026-03-13 | A19371 FS-4d | 507d | 0d |
| A19373 |  | BRW1: Second Side | resource dependent | 5d | 2026-03-10 | 2026-03-16 | A19372 FS-4d | 507d | 0d |
| A19374 |  | BRW1: Pour | resource dependent | 5d | 2026-03-12 | 2026-03-18 | A19373 FS-3d | 507d | 0d |
| A19375 |  | BRW1: Strip/Patch Tie Holes | resource dependent | 5d | 2026-03-13 | 2026-03-19 | A19374 FS-4d | 507d | 0d |
| A19376 |  | BRW1: Waterproof Wall | resource dependent | 4d | 2026-03-20 | 2026-03-25 | A19375 | 507d | 0d |
| A21698 |  | BRW1: Backfill Wall |  | 4d | 2026-03-26 | 2026-03-31 | A19403 FS-6d, A19376 | 507d | 0d |
|  | 116 | **BRW2: Walls** |  |  | 2026-03-12 | 2026-04-03 |  |  |  |
| A19384 |  | BRW2: One Side | resource dependent | 2d | 2026-03-12 | 2026-03-13 | A19382, A19366 | 504d | 0d |
| A19385 |  | BRW2: Install Reinforcement | resource dependent | 2d | 2026-03-13 | 2026-03-16 | A19384 FS-1d | 511d | 0d |
| A19386 |  | BRW2: Inspection | resource dependent | 2d | 2026-03-13 | 2026-03-16 | A19385 FS-2d | 511d | 0d |
| A19387 |  | BRW2: Second Side | resource dependent | 2d | 2026-03-16 | 2026-03-17 | A19386 FS-1d | 511d | 0d |
| A19388 |  | BRW2: Pour | resource dependent | 1d | 2026-03-18 | 2026-03-18 | A19387 | 511d | 0d |
| A19389 |  | BRW2: Strip/Patch Tie Holes | resource dependent | 2d | 2026-03-19 | 2026-03-20 | A19388 | 511d | 3d |
| A19390 |  | BRW2: Waterproof Wall | resource dependent | 2d | 2026-03-26 | 2026-03-27 | A19389, A19376 | 508d | 0d |
| A21708 |  | BRW2: Backfill Wall |  | 3d | 2026-04-01 | 2026-04-03 | A21698, A19390 | 507d | 0d |

| ID | WBS | Activity | Type | Duration | Start | Finish | Predecessors | Total float | Free float |
| --- | --- | --- | --- | --- | --- | --- | --- | --- | --- |
|  | 117 | **BRW3: Walls** |  |  | 2026-03-16 | 2026-04-08 |  |  |  |
| A19397 |  | BRW3: One Side | resource dependent | 4d | 2026-03-16 | 2026-03-19 | A19384, A19395 | 504d | 0d |
| A19398 |  | BRW3: Install Reinforcement | resource dependent | 4d | 2026-03-17 | 2026-03-20 | A19397 FS-3d | 509d | 0d |
| A19399 |  | BRW3: Inspection | resource dependent | 4d | 2026-03-18 | 2026-03-23 | A19398 FS-3d | 509d | 0d |
| A19400 |  | BRW3: Second Side | resource dependent | 4d | 2026-03-19 | 2026-03-24 | A19399 FS-3d | 509d | 0d |
| A19401 |  | BRW3: Pour | resource dependent | 3d | 2026-03-23 | 2026-03-25 | A19400 FS-2d | 509d | 0d |
| A19402 |  | BRW3: Strip/Patch Tie Holes | resource dependent | 3d | 2026-03-24 | 2026-03-26 | A19401 FS-2d | 509d | 1d |
| A19403 |  | BRW3: Waterproof Wall | resource dependent | 3d | 2026-03-30 | 2026-04-01 | A19402, A19390 | 508d | 1d |
| A21718 |  | BRW3: Backfill Wall |  | 3d | 2026-04-06 | 2026-04-08 | A21708, A19403 | 507d | 0d |
|  | 118 | **BRW4: Walls** |  |  | 2026-03-20 | 2026-04-10 |  |  |  |
| A19566 |  | BRW4: One Side | resource dependent | 3d | 2026-03-20 | 2026-03-24 | A19397, A19564 | 504d | 0d |
| A19567 |  | BRW4: Install Reinforcement | resource dependent | 3d | 2026-03-23 | 2026-03-25 | A19566 FS-2d | 506d | 0d |
| A19568 |  | BRW4: Inspection | resource dependent | 3d | 2026-03-24 | 2026-03-26 | A19567 FS-2d | 506d | 0d |
| A19569 |  | BRW4: Second Side | resource dependent | 3d | 2026-03-25 | 2026-03-27 | A19568 FS-2d | 506d | 0d |
| A19570 |  | BRW4: Pour | resource dependent | 2d | 2026-03-27 | 2026-03-30 | A19569 FS-1d | 506d | 0d |
| A19571 |  | BRW4: Strip/Patch Tie Holes | resource dependent | 2d | 2026-03-30 | 2026-03-31 | A19570 FS-1d | 506d | 0d |
| A19572 |  | BRW4: Waterproof Wall | resource dependent | 3d | 2026-03-30 | 2026-04-01 | A19571 FS-2d | 506d | 2d |
| A21728 |  | BRW4: Backfill Wall |  | 2d | 2026-04-09 | 2026-04-10 | A19572, A19533 FS-4d | 503d | 0d |
|  | 119 | **BRW5: Walls** |  |  | 2026-03-25 | 2026-04-14 |  |  |  |
| A19553 |  | BRW5: One Side | resource dependent | 3d | 2026-03-25 | 2026-03-27 | A19566, A19551 | 504d | 0d |
| A19554 |  | BRW5: Install Reinforcement | resource dependent | 3d | 2026-03-26 | 2026-03-30 | A19553 FS-2d | 504d | 0d |
| A19555 |  | BRW5: Inspection | resource dependent | 3d | 2026-03-27 | 2026-03-31 | A19554 FS-2d | 504d | 0d |
| A19556 |  | BRW5: Second Side | resource dependent | 3d | 2026-03-30 | 2026-04-01 | A19555 FS-2d | 504d | 0d |
| A19557 |  | BRW5: Pour | resource dependent | 2d | 2026-04-01 | 2026-04-02 | A19556 FS-1d | 504d | 0d |
| A19558 |  | BRW5: Strip/Patch Tie Holes | resource dependent | 2d | 2026-04-02 | 2026-04-03 | A19557 FS-1d | 504d | 0d |
| A19559 |  | BRW5: Waterproof Wall | resource dependent | 3d | 2026-04-06 | 2026-04-08 | A19558, A19572 | 504d | 1d |
| A21738 |  | BRW5: Backfill Wall |  | 2d | 2026-04-13 | 2026-04-14 | A21728, A19559 | 503d | 0d |

| ID | WBS | Activity | Type | Duration | Start | Finish | Predecessors | Total float | Free float |
| --- | --- | --- | --- | --- | --- | --- | --- | --- | --- |
|  | 120 | **BRW7: Walls** |  |  | 2026-03-31 | 2026-04-16 |  |  |  |
| A19527 |  | BRW7: One Side | resource dependent | 3d | 2026-03-31 | 2026-04-02 | A19525 | 2d | 0d |
| A19528 |  | BRW7: Install Reinforcement | resource dependent | 3d | 2026-04-01 | 2026-04-03 | A19527 FS-2d | 503d | 0d |
| A19529 |  | BRW7: Inspection | resource dependent | 3d | 2026-04-02 | 2026-04-06 | A19528 FS-2d | 503d | 0d |
| A19530 |  | BRW7: Second Side | resource dependent | 3d | 2026-04-03 | 2026-04-07 | A19529 FS-2d | 503d | 0d |
| A19531 |  | BRW7: Pour | resource dependent | 2d | 2026-04-07 | 2026-04-08 | A19530 FS-1d | 503d | 0d |
| A19532 |  | BRW7: Strip/Patch Tie Holes | resource dependent | 2d | 2026-04-08 | 2026-04-09 | A19531 FS-1d | 503d | 0d |
| A19533 |  | BRW7: Waterproof Wall | resource dependent | 3d | 2026-04-10 | 2026-04-14 | A19532, A19559 | 503d | 0d |
| A21748 |  | BRW7: Backfill Wall |  | 2d | 2026-04-15 | 2026-04-16 | A21738, A19533 | 503d | 4d |
|  | 121 | **BRW8: Walls** |  |  | 2026-04-06 | 2026-04-29 |  |  |  |
| A19514 |  | BRW8: One Side | resource dependent | 4d | 2026-04-06 | 2026-04-09 | A19527, A19512 | 1d | 0d |
| A19515 |  | BRW8: Install Reinforcement | resource dependent | 4d | 2026-04-07 | 2026-04-10 | A19514 FS-3d | 1d | 0d |
| A19516 |  | BRW8: Inspection | resource dependent | 3d | 2026-04-09 | 2026-04-13 | A19515 FS-2d | 1d | 0d |
| A19517 |  | BRW8: Second Side | resource dependent | 4d | 2026-04-09 | 2026-04-14 | A19516 FS-3d | 1d | 0d |
| A19518 |  | BRW8: Pour | resource dependent | 3d | 2026-04-13 | 2026-04-15 | A19517 FS-2d | 1d | 0d |
| A19519 |  | BRW8: Strip/Patch Tie Holes | resource dependent | 3d | 2026-04-14 | 2026-04-16 | A19518 FS-2d | 1d | 0d |
| A19520 |  | BRW8: Waterproof Wall | resource dependent | 4d | 2026-04-17 | 2026-04-22 | A19519 | 1d | 0d |
| A21758 |  | BRW8: Backfill Wall |  | 5d | 2026-04-23 | 2026-04-29 | A21748, A19520 | 499d | 2d |
|  | 122 | **BRW9: Walls** |  |  | 2026-04-10 | 2026-05-01 |  |  |  |
| A19501 |  | BRW9: One Side | resource dependent | 2d | 2026-04-10 | 2026-04-13 | A19499, A19514 | 2d | 0d |
| A19502 |  | BRW9: Install Reinforcement | resource dependent | 2d | 2026-04-13 | 2026-04-14 | A19501 FS-1d | 5d | 0d |
| A19503 |  | BRW9: Inspection | resource dependent | 2d | 2026-04-14 | 2026-04-15 | A19502 FS-1d | 5d | 0d |
| A19504 |  | BRW9: Second Side | resource dependent | 2d | 2026-04-15 | 2026-04-16 | A19503 FS-1d | 5d | 0d |
| A19505 |  | BRW9: Pour | resource dependent | 1d | 2026-04-17 | 2026-04-17 | A19504 | 5d | 0d |
| A19506 |  | BRW9: Strip/Patch Tie Holes | resource dependent | 1d | 2026-04-20 | 2026-04-20 | A19505 | 5d | 4d |
| A19507 |  | BRW9: Waterproof Wall | resource dependent | 2d | 2026-04-23 | 2026-04-24 | A19506 FS-2d, A19520 | 1d | 0d |
| A21768 |  | BRW9: Backfill Wall |  | 5d | 2026-04-27 | 2026-05-01 | A19507, A21758 SS | 497d |  |

| ID | WBS | Activity | Type | Duration | Start | Finish | Predecessors | Total float | Free float |
| --- | --- | --- | --- | --- | --- | --- | --- | --- | --- |
|  | 124 | **BRW10: Walls** |  |  | 2026-04-14 | 2026-05-01 |  |  |  |
| A19475 |  | BRW10: One Side | resource dependent | 3d | 2026-04-14 | 2026-04-16 | A19473, A19501 | 2d | 0d |
| A19476 |  | BRW10: Install Reinforcement | resource dependent | 3d | 2026-04-15 | 2026-04-17 | A19475 FS-2d | 2d | 0d |
| A19477 |  | BRW10: Inspection | resource dependent | 3d | 2026-04-16 | 2026-04-20 | A19476 FS-2d | 2d | 0d |
| A19478 |  | BRW10: Second Side | resource dependent | 3d | 2026-04-17 | 2026-04-21 | A19477 FS-2d | 2d | 0d |
| A19479 |  | BRW10: Pour | resource dependent | 2d | 2026-04-21 | 2026-04-22 | A19478 FS-1d | 2d | 0d |
| A19480 |  | BRW10: Strip/Patch Tie Holes | resource dependent | 2d | 2026-04-22 | 2026-04-23 | A19479 FS-1d | 2d | 1d |
| A19481 |  | BRW10: Waterproof Wall | resource dependent | 3d | 2026-04-27 | 2026-04-29 | A19507, A19480 | 1d | 0d |
| A21788 |  | BRW10: Backfill Wall |  | 2d | 2026-04-30 | 2026-05-01 | A19481 | 1d | 0d |
|  | 125 | **BRW13: Walls** |  |  | 2026-04-27 | 2026-05-05 |  |  |  |
| A19423 |  | BRW13: One Side | resource dependent | 1d | 2026-04-27 | 2026-04-27 | A19475, A19434 | 25d | 0d |
| A19424 |  | BRW13: Install Reinforcement | resource dependent | 1d | 2026-04-27 | 2026-04-27 | A19423 FS-1d | 25d | 0d |
| A19425 |  | BRW13: Inspection | resource dependent | 1d | 2026-04-28 | 2026-04-28 | A19424 | 25d | 0d |
| A19426 |  | BRW13: Second Side | resource dependent | 1d | 2026-04-28 | 2026-04-28 | A19425 FS-1d | 25d | 0d |
| A19427 |  | BRW13: Pour | resource dependent | 1d | 2026-04-28 | 2026-04-28 | A19426 FS-1d | 25d | 0d |
| A19428 |  | BRW13: Strip/Patch Tie Holes | resource dependent | 1d | 2026-04-29 | 2026-04-29 | A19427 | 25d | 0d |
| A19429 |  | BRW13: Waterproof Wall | resource dependent | 1d | 2026-04-30 | 2026-04-30 | A19428, A19481 | 25d | 1d |
| A21798 |  | BRW13: Backfill Wall |  | 2d | 2026-05-04 | 2026-05-05 | A19429, A21788 | 24d |  |
|  | WBS71 | **BRW14: Walls** |  |  | 2026-10-06 | 2026-10-20 |  |  |  |
| A21898 |  | BRW14: One Side | resource dependent | 3d | 2026-10-06 | 2026-10-08 | A22008 | 379d | 0d |
| A21908 |  | BRW14: Install Reinforcement | resource dependent | 3d | 2026-10-07 | 2026-10-09 | A21898 FS-2d | 379d | 0d |
| A21918 |  | BRW14: Inspection | resource dependent | 3d | 2026-10-08 | 2026-10-12 | A21908 FS-2d | 379d | 0d |
| A21928 |  | BRW14: Second Side | resource dependent | 3d | 2026-10-09 | 2026-10-13 | A21918 FS-2d | 379d | 0d |
| A21938 |  | BRW14: Pour | resource dependent | 2d | 2026-10-13 | 2026-10-14 | A21928 FS-1d | 379d | 0d |
| A21948 |  | BRW14: Strip/Patch Tie Holes | resource dependent | 2d | 2026-10-14 | 2026-10-15 | A21938 FS-1d | 379d | 0d |
| A21958 |  | BRW14: Waterproof Wall | resource dependent | 1d | 2026-10-16 | 2026-10-16 | A21948 | 379d | 0d |
| A21968 |  | BRW14: Backfill Wall |  | 2d | 2026-10-19 | 2026-10-20 | A21958 | 379d |  |

| ID | WBS | Activity | Type | Duration | Start | Finish | Predecessors | Planned finish | Total float | Free float |
| --- | --- | --- | --- | --- | --- | --- | --- | --- | --- | --- |
|  | 127 | **Parking Garage Erection** |  |  | 2024-08-20 | 2027-11-03 |  |  |  |  |
|  | WBS2181 | **Parking Deck Erection** |  |  | 2026-06-10 | 2026-09-25 |  |  |  |  |
| A19586 |  | Clean Off Footings / Prep Crane Pad | resource dependent | 5d | 2026-06-10 | 2026-06-16 | A21798, A68198 |  | 0d |  |
| A19307 |  | Mobilize Parking Deck Erector | resource dependent | 2d | 2026-06-17 | 2026-06-18 | A19586 |  | 0d |  |
| A69418 |  | Bay #1 |  | 8d | 2026-06-22 | 2026-07-01 | A19307 |  | 0d |  |
| A69458 |  | Bay #2 |  | 7d | 2026-07-02 | 2026-07-13 | A69418 |  | 0d |  |
| A69448 |  | Bay #3 |  | 7d | 2026-07-14 | 2026-07-22 | A69458 |  | 0d |  |
| A69468 |  | Bay #4 |  | 7d | 2026-07-23 | 2026-07-31 | A69448 |  | 0d |  |
| A69478 |  | Bay #5 |  | 7d | 2026-08-03 | 2026-08-11 | A69468 |  | 0d |  |
| A69488 |  | Bay #6 |  | 7d | 2026-08-12 | 2026-08-20 | A69478 |  | 0d |  |
| A69498 |  | Bay #7 |  | 7d | 2026-08-21 | 2026-08-31 | A69488 |  | 0d |  |
| A69438 |  | Bay #8 |  | 7d | 2026-09-01 | 2026-09-10 | A69498 |  | 0d |  |
| A69428 |  | Bay #9 |  | 8d | 2026-09-11 | 2026-09-22 | A69438 |  | 0d |  |
| A19309 |  | Demobilize | resource dependent | 3d | 2026-09-23 | 2026-09-25 | A69428 |  | 0d |  |
|  | WBS2201 | **Parking Deck Completion** |  |  | 2024-08-20 | 2027-02-02 |  |  |  |  |
| A69518 |  | Pourbacks |  | 25d | 2026-09-23 | 2026-10-27 | A69428 |  | 46d | 0d |
| A69548 |  | Exterior Caulking |  | 20d | 2026-09-23 | 2026-10-20 | A69518 SS |  | 46d |  |
| A69528 |  | Cable Rails |  | 15d | 2026-10-28 | 2026-11-17 | A69518 |  | 359d | 5d |
| A69538 |  | Interior Caulking |  | 20d | 2026-10-28 | 2026-11-24 | A69518 |  | 309d | 0d |
| A69558 |  | Tindal Activities Complete | milestone | 0d | 2026-11-24 | 2026-11-24 | A19309 FS+40d, A69528, A69538 | 2026-11-24 | 354d |  |
|  | WBS2211 | **MEPS Buildout** |  |  | 2026-11-25 | 2027-02-02 |  |  |  |  |
|  | WBS2221 | **Level 1** |  |  | 2026-11-25 | 2026-12-28 |  |  |  |  |
| A69568 |  | Plumbing |  | 5d | 2026-11-25 | 2026-12-03 | A69538 |  | 309d | 0d |
| A69808 |  | CMU |  | 5d | 2026-11-25 | 2026-12-03 | A69538 |  | 324d | 0d |
| A69578 |  | Fire Sprinkler |  | 5d | 2026-12-04 | 2026-12-10 | A69568 |  | 309d | 0d |
| A69588 |  | Electrical |  | 5d | 2026-12-11 | 2026-12-17 | A69578 |  | 309d | 0d |
| A69598 |  | Fire Alarm |  | 5d | 2026-12-18 | 2026-12-28 | A69588 |  | 309d | 0d |

| ID | WBS | Activity | Duration | Start | Finish | Predecessors | Total float | Free float |
| --- | --- | --- | --- | --- | --- | --- | --- | --- |
|  | WBS2231 | **Level 2** |  | 2026-12-04 | 2027-01-05 |  |  |  |
| A69608 |  | Plumbing | 5d | 2026-12-04 | 2026-12-10 | A69568 | 309d | 0d |
| A69818 |  | CMU | 5d | 2026-12-04 | 2026-12-10 | A69808 | 324d | 0d |
| A69618 |  | Fire Sprinkler | 5d | 2026-12-11 | 2026-12-17 | A69608, A69578 | 309d | 0d |
| A69628 |  | Electrical | 5d | 2026-12-18 | 2026-12-28 | A69618, A69588 | 309d | 0d |
| A69638 |  | Fire Alarm | 5d | 2026-12-29 | 2027-01-05 | A69628, A69598 | 309d | 0d |
|  | WBS2241 | **Level 3** |  | 2026-12-11 | 2027-01-12 |  |  |  |
| A69648 |  | Plumbing | 5d | 2026-12-11 | 2026-12-17 | A69608 | 309d | 0d |
| A69828 |  | CMU | 5d | 2026-12-11 | 2026-12-17 | A69818 | 324d | 0d |
| A69658 |  | Fire Sprinkler | 5d | 2026-12-18 | 2026-12-28 | A69618, A69648 | 309d | 0d |
| A69668 |  | Electrical | 5d | 2026-12-29 | 2027-01-05 | A69628, A69658 | 309d | 0d |
| A69678 |  | Fire Alarm | 5d | 2027-01-06 | 2027-01-12 | A69668, A69638 | 309d | 0d |
|  | WBS2251 | **Level 4** |  | 2026-12-18 | 2027-01-19 |  |  |  |
| A69688 |  | Plumbing | 5d | 2026-12-18 | 2026-12-28 | A69648 | 309d | 0d |
| A69838 |  | CMU | 5d | 2026-12-18 | 2026-12-28 | A69828 | 324d | 0d |
| A69698 |  | Fire Sprinkler | 5d | 2026-12-29 | 2027-01-05 | A69688, A69658 | 309d | 0d |
| A69708 |  | Electrical | 5d | 2027-01-06 | 2027-01-12 | A69698, A69668 | 309d | 0d |
| A69718 |  | Fire Alarm | 5d | 2027-01-13 | 2027-01-19 | A69708, A69678 | 309d | 0d |
|  | WBS2261 | **Level 5** |  | 2026-12-29 | 2027-01-26 |  |  |  |
| A69728 |  | Plumbing | 5d | 2026-12-29 | 2027-01-05 | A69688 | 309d | 0d |
| A69848 |  | CMU | 5d | 2026-12-29 | 2027-01-05 | A69838 | 324d | 0d |
| A69738 |  | Fire Sprinkler | 5d | 2027-01-06 | 2027-01-12 | A69698, A69728 | 309d | 0d |
| A69748 |  | Electrical | 5d | 2027-01-13 | 2027-01-19 | A69708, A69738 | 309d | 0d |
| A69758 |  | Fire Alarm | 5d | 2027-01-20 | 2027-01-26 | A69748, A69718 | 309d | 0d |

| ID | WBS | Activity | Duration | Start | Finish | Predecessors | Total float | Free float |
| --- | --- | --- | --- | --- | --- | --- | --- | --- |
|  | WBS2271 | **Level 6** |  | 2027-01-06 | 2027-02-02 |  |  |  |
| A69768 |  | Plumbing | 5d | 2027-01-06 | 2027-01-12 | A69728 | 309d | 0d |
| A69858 |  | CMU | 5d | 2027-01-06 | 2027-01-12 | A69848 | 324d |  |
| A69778 |  | Fire Sprinkler | 5d | 2027-01-13 | 2027-01-19 | A69768, A69738 | 309d | 0d |
| A69788 |  | Electrical | 5d | 2027-01-20 | 2027-01-26 | A69748, A69778 | 309d | 0d |
| A69798 |  | Fire Alarm | 5d | 2027-01-27 | 2027-02-02 | A69788, A69758 | 309d |  |
|  | WBS2281 | **Interior Buildout (Misc Rms)** |  | 2024-08-20 | 2024-08-26 |  |  |  |
|  | WBS2291 | **Trash Rooms** |  | 2024-08-20 | 2024-08-26 |  |  |  |
|  | WBS2321 | **Level 2** |  | 2024-08-20 | 2024-08-26 |  |  |  |
| A69908 |  | Install Trash Chute | 5d | 2024-08-20 | 2024-08-26 |  | 0d |  |
| A69918 |  | Install Rollup Gate | 5d | 2024-08-20 | 2024-08-26 |  | 0d |  |
| A69958 |  | Traffic Coating | 5d | 2024-08-20 | 2024-08-26 |  | 0d |  |
| A70058 |  | Paint | 5d | 2024-08-20 | 2024-08-26 |  | 0d |  |
|  | WBS2331 | **Level 3** |  | 2024-08-20 | 2024-08-26 |  |  |  |
| A69928 |  | Install Trash Chute | 5d | 2024-08-20 | 2024-08-26 |  | 0d |  |
| A69938 |  | CMU Shaft Infill | 5d | 2024-08-20 | 2024-08-26 |  | 0d |  |
| A69948 |  | Traffic Coating | 5d | 2024-08-20 | 2024-08-26 |  | 0d |  |
| A70038 |  | Paint | 5d | 2024-08-20 | 2024-08-26 |  | 0d |  |
|  | WBS2341 | **Level 4** |  | 2024-08-20 | 2024-08-26 |  |  |  |
| A69968 |  | Install Trash Chute | 5d | 2024-08-20 | 2024-08-26 |  | 0d |  |
| A69978 |  | CMU Shaft Infill | 5d | 2024-08-20 | 2024-08-26 |  | 0d |  |
| A69988 |  | Traffic Coating | 5d | 2024-08-20 | 2024-08-26 |  | 0d |  |
| A70028 |  | Paint | 5d | 2024-08-20 | 2024-08-26 |  | 0d |  |
|  | WBS2351 | **Level 5** |  | 2024-08-20 | 2024-08-26 |  |  |  |
| A69998 |  | Install Trash Chute | 5d | 2024-08-20 | 2024-08-26 |  | 0d |  |
| A70008 |  | CMU Shaft Infill | 5d | 2024-08-20 | 2024-08-26 |  | 0d |  |
| A70018 |  | Traffic Coating | 5d | 2024-08-20 | 2024-08-26 |  | 0d |  |
| A70048 |  | Paint | 5d | 2024-08-20 | 2024-08-26 |  | 0d |  |

| ID | WBS | Activity | Type | Duration | Start | Finish | Predecessors | Planned finish | Total float | Free float | Constraint | HTP |
| --- | --- | --- | --- | --- | --- | --- | --- | --- | --- | --- | --- | --- |
|  | WBS2301 | **Bike Room** |  |  |  |  |  |  |  |  |  |  |
|  | WBS2311 | **Storage Room** |  |  |  |  |  |  |  |  |  |  |
|  | WBS251 | **Elevators** |  |  | 2027-03-02 | 2027-11-03 |  |  |  |  |  |  |
| A68788 |  | Shafts Dry | milestone | 0d | 2027-03-02 | 2027-03-02 | A45308 FS+20d | 2027-03-02 | 167d | 0d |  |  |
|  | 3.4.2 | **Elevators** |  |  | 2027-03-08 | 2027-11-03 |  |  |  |  |  |  |
|  | 3.4.2.1 | **Elevator # 1 & 2** |  |  | 2027-03-08 | 2027-09-30 |  |  |  |  |  |  |
|  | WBS2171 | **Install Hoist Beams and Divider Steel** |  |  | 2027-03-08 | 2027-03-17 |  |  |  |  |  |  |
| A69048 |  | Install scaffold/swing stage |  | 3d | 2027-03-08 | 2027-03-10 | A68788, A69228 |  | 189d | 0d |  |  |
| A69028 |  | Install Divider beams |  | 5d | 2027-03-10 | 2027-03-16 | A68788, A69048 FS-3d, A69208 |  | 187d | 0d |  |  |
| A69038 |  | Install Hoist Beam |  | 1d | 2027-03-16 | 2027-03-16 | A69028 FF |  | 187d | 0d |  |  |
| A69058 |  | Tear down scaffold |  | 1d | 2027-03-17 | 2027-03-17 | A69038 FF+1d |  | 187d | 0d |  |  |
|  | 3.4.2.1.1 | **Prepare Shaft** |  |  | 2027-03-18 | 2027-03-25 |  |  |  |  |  |  |
| A68818 |  | Install Sump Pit Cover & Ladder |  | 2d | 2027-03-18 | 2027-03-19 | A69058 |  | 187d | 0d |  |  |
| A68828 |  | Install 15 Amp Circuit with Lockable Disconnect for Temp |  | 1d | 2027-03-22 | 2027-03-22 | A68818 |  | 187d | 0d |  |  |
| A68908 |  | Install Pit Lighting |  | 1d | 2027-03-22 | 2027-03-22 | A68828 SS, A69058 |  | 187d | 0d |  | New Code Value-10 |
| A68918 |  | Verify All Penetrations are Properly Fire Caulked |  | 1d | 2027-03-23 | 2027-03-23 | A68908 |  | 187d | 0d |  |  |
| A68928 |  | Clean Pit |  | 1d | 2027-03-24 | 2027-03-24 | A68918 |  | 187d | 0d |  |  |
| A68938 |  | Final Inspection of Shaft for Elevator Install |  | 1d | 2027-03-25 | 2027-03-25 | A68928 |  | 187d | 20d |  |  |
|  | 3.4.2.1.2 | **Install Elevators** |  |  | 2027-04-23 | 2027-09-30 |  |  |  |  |  |  |
| A68898 |  | Install Elevators # 1 & 2 |  | 35d | 2027-04-23 | 2027-06-11 | A69058, A68938, A69158 |  | 167d | 0d | start on or after 2024-08-22 |  |
| A68888 |  | CMU Infill Elevators # 1 & 2 to JCC |  | 5d | 2027-06-14 | 2027-06-21 | A68898 SS+35d |  | 182d | 0d |  |  |
| A68878 |  | Turnover Elevators # 1 & 2 |  | 1d | 2027-06-22 | 2027-06-22 | A68888, A68898 |  | 182d | 41d |  |  |
| A68868 |  | Frame/Hang Front Walls at Elevator Doors |  | 10d | 2027-08-20 | 2027-09-02 | A68878, A42608 |  | 141d | 0d |  |  |
| A68858 |  | Finish Front Walls at Elevator Doors |  | 10d | 2027-09-03 | 2027-09-17 | A68868 |  | 141d | 0d |  |  |
| A68848 |  | Paint - Prime Front Walls at Elevator Doors |  | 5d | 2027-09-20 | 2027-09-24 | A68858 |  | 141d | 0d |  | New Code Value-1 |
| A68838 |  | Paint - 1st/2nd Coat Front Walls at Elevator Doors |  | 4d | 2027-09-27 | 2027-09-30 | A68848 |  | 141d |  |  | New Code Value-1 |

| ID | WBS | Activity | Type | Duration | Start | Finish | Predecessors | Total float | Free float | Constraint | HTP |
| --- | --- | --- | --- | --- | --- | --- | --- | --- | --- | --- | --- |
|  | 3.4.2.1-1 | **Elevator # 4** |  |  | 2027-03-11 | 2027-11-03 |  |  |  |  |  |
|  | WBS2171 | **Install Hoist Beams and Divider Steel** |  |  | 2027-03-11 | 2027-03-24 |  |  |  |  |  |
| A69398 |  | Install scaffold/swing stage |  | 3d | 2027-03-11 | 2027-03-15 | A69048 | 221d | 4d |  |  |
| A69378 |  | Install Divider beams |  | 5d | 2027-03-17 | 2027-03-23 | A69398 FS-3d, A69028 | 217d | 0d |  |  |
| A69388 |  | Install Hoist Beam |  | 1d | 2027-03-23 | 2027-03-23 | A69378 FF | 217d | 0d |  |  |
| A69408 |  | Tear down scaffold |  | 1d | 2027-03-24 | 2027-03-24 | A69388 FF+1d | 217d | 0d |  |  |
|  | 3.4.2.1.1 | **Prepare Shaft** |  |  | 2027-03-25 | 2027-04-01 |  |  |  |  |  |
| A69248 |  | Install Sump Pit Cover & Ladder |  | 2d | 2027-03-25 | 2027-03-26 | A69408 | 217d | 0d |  |  |
| A69258 |  | Install 15 Amp Circuit with Lockable Disconnect for Temp |  | 1d | 2027-03-29 | 2027-03-29 | A69248 | 217d | 0d |  |  |
| A69338 |  | Install Pit Lighting |  | 1d | 2027-03-29 | 2027-03-29 | A69258 SS, A69408 | 217d | 0d |  | New Code Value-10 |
| A69348 |  | Verify All Penetrations are Properly Fire Caulked |  | 1d | 2027-03-30 | 2027-03-30 | A69338 | 217d | 0d |  |  |
| A69358 |  | Clean Pit |  | 1d | 2027-03-31 | 2027-03-31 | A69348 | 217d | 0d |  |  |
| A69368 |  | Final Inspection of Shaft for Elevator Install |  | 1d | 2027-04-01 | 2027-04-01 | A69358 | 217d | 50d |  |  |
|  | 3.4.2.1.2 | **Install Elevators** |  |  | 2027-06-14 | 2027-11-03 |  |  |  |  |  |
| A69328 |  | Install Elevators #4 |  | 15d | 2027-06-14 | 2027-07-06 | A69408, A68898, A69368 | 167d | 0d | start on or after 2024-08-22 |  |
| A69318 |  | CMU Infill Elevators #4 to JCC |  | 5d | 2027-07-07 | 2027-07-13 | A69328 SS+15d | 167d | 0d |  |  |
| A69308 |  | Turnover Elevators #4 |  | 1d | 2027-07-14 | 2027-07-14 | A69318, A69328 | 167d | 50d |  |  |
| A69298 |  | Frame/Hang Front Walls at Elevator Doors |  | 10d | 2027-09-24 | 2027-10-07 | A69308, A31688 | 117d | 0d |  |  |
| A69288 |  | Finish Front Walls at Elevator Doors |  | 10d | 2027-10-08 | 2027-10-21 | A69298 | 117d | 0d |  |  |
| A69278 |  | Paint - Prime Front Walls at Elevator Doors |  | 5d | 2027-10-22 | 2027-10-28 | A69288 | 117d | 0d |  | New Code Value-1 |
| A69268 |  | Paint - 1st/2nd Coat Front Walls at Elevator Doors |  | 4d | 2027-10-29 | 2027-11-03 | A69278 | 117d |  |  | New Code Value-1 |
|  | WBS81 | **Parking Deck SOGs** |  |  | 2026-04-09 | 2026-11-06 |  |  |  |  |  |
|  | WBS91 | **PKDK SOG 1 Vault** |  |  | 2026-04-09 | 2026-04-17 |  |  |  |  |  |
| A22048 |  | PKDK SOG 1 Vault: Backfill Stone Subgrade | resource dependent | 3d | 2026-04-09 | 2026-04-13 | A21718, A19558 | 507d | 0d |  |  |
| A22058 |  | PKDK SOG 1 Vault: Install Vapor Barrier | resource dependent | 1d | 2026-04-14 | 2026-04-14 | A22048 | 507d | 0d |  |  |
| A22298 |  | PKKD SOG 1 Vault: Rebar / Inspect | resource dependent | 2d | 2026-04-15 | 2026-04-16 | A22058 | 507d | 0d |  |  |
| A22068 |  | PKDK SOG 1 Vault: Pour SOG | resource dependent | 1d | 2026-04-17 | 2026-04-17 | A22298 | 507d |  |  |  |

| ID | WBS | Activity | Type | Duration | Start | Finish | Predecessors | Total float | Free float |
| --- | --- | --- | --- | --- | --- | --- | --- | --- | --- |
|  | WBS101 | **PKDK SOG 2** |  |  | 2026-10-15 | 2026-10-29 |  |  |  |
| A22158 |  | PKDK SOG 2: Underground MEPs | resource dependent | 3d | 2026-10-15 | 2026-10-19 | A19309, A68768 | 366d | 0d |
| A22168 |  | PKDK SOG 2: Edge Forms / Dig Turndown | resource dependent | 2d | 2026-10-20 | 2026-10-21 | A22158 | 366d | 0d |
| A22178 |  | PKDK SOG 2: Backfill Stone Subgrade | resource dependent | 3d | 2026-10-22 | 2026-10-26 | A22168 | 366d | 0d |
| A22188 |  | PKDK SOG 2: Install Vapor Barrier |  | 2d | 2026-10-26 | 2026-10-27 | A22178 FS-1d | 368d | 0d |
| A22198 |  | PKDK SOG 2: Rebar / Inspect | resource dependent | 2d | 2026-10-27 | 2026-10-28 | A22188 FS-1d | 368d | 0d |
| A22208 |  | PKDK SOG 2: Pour SOG | resource dependent | 1d | 2026-10-29 | 2026-10-29 | A22198 | 372d |  |
|  | WBS111 | **PKDK SOG 3** |  |  | 2026-10-20 | 2026-11-03 |  |  |  |
| A22308 |  | PKDK SOG 3: Underground MEPs | resource dependent | 3d | 2026-10-20 | 2026-10-22 | A22158 | 366d | 0d |
| A22318 |  | PKDK SOG 3: Edge Forms / Dig Turndown | resource dependent | 2d | 2026-10-23 | 2026-10-26 | A22308, A22168 | 366d | 0d |
| A22328 |  | PKDK SOG 3: Backfill Stone Subgrade | resource dependent | 3d | 2026-10-27 | 2026-10-29 | A22178, A22318 | 366d | 0d |
| A22338 |  | PKDK SOG 3: Install Vapor Barrier |  | 2d | 2026-10-29 | 2026-10-30 | A22188, A22328 FS-1d | 367d | 0d |
| A22348 |  | PKDK SOG 3: Rebar / Inspect | resource dependent | 2d | 2026-10-30 | 2026-11-02 | A22198, A22338 FS-1d | 367d | 0d |
| A22358 |  | PKDK SOG 3: Pour SOG | resource dependent | 1d | 2026-11-03 | 2026-11-03 | A22348 | 369d |  |
|  | WBS121 | **PKDK SOG 4** |  |  | 2026-10-23 | 2026-11-06 |  |  |  |
| A22368 |  | PKDK SOG 4: Underground MEPs | resource dependent | 3d | 2026-10-23 | 2026-10-27 | A22308 | 366d | 0d |
| A22378 |  | PKDK SOG 4: Edge Forms / Dig Turndown | resource dependent | 2d | 2026-10-28 | 2026-10-29 | A22368, A22318 | 366d | 0d |
| A22388 |  | PKDK SOG 4: Backfill Stone Subgrade | resource dependent | 3d | 2026-10-30 | 2026-11-03 | A22328, A22378 | 366d | 0d |
| A22398 |  | PKDK SOG 4: Install Vapor Barrier |  | 2d | 2026-11-03 | 2026-11-04 | A22338, A22388 FS-1d | 366d | 0d |
| A22408 |  | PKDK SOG 4: Rebar / Inspect | resource dependent | 2d | 2026-11-04 | 2026-11-05 | A22348, A22398 FS-1d | 366d | 0d |
| A22418 |  | PKDK SOG 4: Pour SOG | resource dependent | 1d | 2026-11-06 | 2026-11-06 | A22408 | 366d |  |
|  | WBS2191 | **Parking Deck Buildout** |  |  |  |  |  |  |  |
|  | 128 | **Building 100** |  |  | 2026-05-26 | 2027-09-28 |  |  |  |
|  | 129 | **Building 100 A** |  |  | 2026-05-26 | 2027-08-09 |  |  |  |
|  | 130 | **Structure** |  |  | 2026-05-26 | 2026-12-22 |  |  |  |
|  | 131 | **Concrete** |  |  | 2026-05-26 | 2026-07-10 |  |  |  |
|  | 133 | **SOG 4** |  |  | 2026-05-26 | 2026-07-10 |  |  |  |
| A19891 |  | SOG4: Edge Forms | resource dependent | 6d | 2026-05-26 | 2026-06-02 | A19327, A68168 | 24d | 0d |
| A19889 |  | SOG4: Underground MEPs | resource dependent | 8d | 2026-06-02 | 2026-06-11 | A19891 FS-1d, A68178 | 24d | 0d |
| A21878 |  | SOG4: Excavate Thickened Slabs |  | 5d | 2026-06-12 | 2026-06-18 | A19889, A68188 | 24d | 0d |
| A19890 |  | SOG4: Backfill Stone Subgrade | resource dependent | 3d | 2026-06-22 | 2026-06-24 | A21878, A68198 | 31d | 0d |
| A22438 |  | SOG4: Install Vapor Barrier |  | 2d | 2026-06-25 | 2026-06-26 | A19890, A68208 | 31d | 0d |
| A19892 |  | SOG4: Rebar / Inspect | resource dependent | 3d | 2026-06-29 | 2026-07-01 | A19890, A22438, A68218 | 31d | 0d |
| A19893 |  | SOG4: Pour SOG | resource dependent | 1d | 2026-07-02 | 2026-07-02 | A19892 | 31d | 0d |
| A19894 |  | SOG4: Strip forms | resource dependent | 5d | 2026-07-06 | 2026-07-10 | A19893 | 450d |  |

| ID | WBS | Activity | Type | Duration | Start | Finish | Predecessors | Total float | Free float |
| --- | --- | --- | --- | --- | --- | --- | --- | --- | --- |
|  | 134 | **CMU Shafts** |  |  | 2026-07-22 | 2026-08-11 |  |  |  |
| A19214 |  | 100A: Stair A | resource dependent | 15d | 2026-07-22 | 2026-08-11 | A19893, A37428 | 19d | 0d |
|  | WBS231 | **Structural Steel** |  |  | 2026-08-12 | 2026-11-03 |  |  |  |
| A68528 |  | Stair Pans & Risers |  | 8d | 2026-08-12 | 2026-08-21 | A19214 | 420d |  |
|  | WBS241 | **Bridge 100A to 100B** |  |  | 2026-09-02 | 2026-11-03 |  |  |  |
| A68538 |  | Bridge HSS Column_L1-L2 |  | 1d | 2026-09-02 | 2026-09-02 | A19652 SS | 410d | 30d |
| A68548 |  | Bridge HSS Column_L3-L4 |  | 1d | 2026-10-16 | 2026-10-16 | A68538, A19660 SS | 380d | 11d |
| A68558 |  | Bridge HSS Column_L5-Roof |  | 1d | 2026-11-03 | 2026-11-03 | A19668 SS, A68548 | 369d |  |
|  | 135 | **Wood Framing** |  |  | 2026-09-02 | 2026-11-24 |  |  |  |
| A68768 |  | RISE PAUSE |  | 30d | 2026-09-02 | 2026-10-14 | A19652 SS | 22d | 0d |
|  | 136 | **Level 1 (14,000 SF)** |  |  | 2026-09-02 | 2026-10-07 |  |  |  |
| A19652 |  | 100AL1: Layout | resource dependent | 2d | 2026-09-02 | 2026-09-03 | A19214, A44708 | 19d | 0d |
| A19653 |  | 100AL1: Wall Framing | resource dependent | 3d | 2026-10-01 | 2026-10-05 | A19652 FS-1d, A19329 | 0d |  |
| A19654 |  | 100AL1: Floor Trusses | resource dependent | 2d | 2026-10-05 | 2026-10-06 | A19653 FS-1d | 0d |  |
| A19655 |  | 100AL1: Decking | resource dependent | 2d | 2026-10-06 | 2026-10-07 | A19654 FS-1d | 0d |  |
|  | 137 | **Level 2 (14,000 SF)** |  |  | 2026-10-08 | 2026-10-15 |  |  |  |
| A19656 |  | 100AL2: Layout | resource dependent | 1d | 2026-10-08 | 2026-10-08 | A19655 | 0d |  |
| A19657 |  | 100AL2: Wall Framing | resource dependent | 3d | 2026-10-09 | 2026-10-13 | A19656 | 0d |  |
| A19658 |  | 100AL2: Floor Trusses | resource dependent | 2d | 2026-10-13 | 2026-10-14 | A19657 FS-1d | 0d |  |
| A19659 |  | 100AL2: Decking | resource dependent | 2d | 2026-10-14 | 2026-10-15 | A19658 FS-1d | 0d |  |
|  | 138 | **Level 3 (14,000 SF)** |  |  | 2026-10-16 | 2026-10-23 |  |  |  |
| A19660 |  | 100AL3: Layout | resource dependent | 1d | 2026-10-16 | 2026-10-16 | A19659 | 0d |  |
| A19661 |  | 100AL3: Wall Framing | resource dependent | 3d | 2026-10-19 | 2026-10-21 | A19660 | 0d |  |
| A19662 |  | 100AL3: Floor Trusses | resource dependent | 2d | 2026-10-21 | 2026-10-22 | A19661 FS-1d | 0d |  |
| A19663 |  | 100AL3: Decking | resource dependent | 2d | 2026-10-22 | 2026-10-23 | A19662 FS-1d | 0d |  |

| ID | WBS | Activity | Type | Duration | Start | Finish | Predecessors | Total float | Free float |
| --- | --- | --- | --- | --- | --- | --- | --- | --- | --- |
|  | 139 | **Level 4 (14,000 SF)** |  |  | 2026-10-26 | 2026-11-02 |  |  |  |
| A19664 |  | 100AL4: Layout | resource dependent | 1d | 2026-10-26 | 2026-10-26 | A19663 | 0d |  |
| A19665 |  | 100AL4: Wall Framing | resource dependent | 3d | 2026-10-27 | 2026-10-29 | A19664 | 0d |  |
| A19666 |  | 100AL4: Floor Trusses | resource dependent | 2d | 2026-10-29 | 2026-10-30 | A19665 FS-1d | 0d |  |
| A19667 |  | 100AL4: Decking | resource dependent | 2d | 2026-10-30 | 2026-11-02 | A19666 FS-1d | 0d |  |
|  | 140 | **Level 5 (14,000 SF)** |  |  | 2026-11-03 | 2026-11-24 |  |  |  |
| A19668 |  | 100AL5: Layout | resource dependent | 1d | 2026-11-03 | 2026-11-03 | A19667 | 0d |  |
| A19669 |  | 100AL5: Wall Framing | resource dependent | 3d | 2026-11-04 | 2026-11-06 | A19668 | 0d |  |
| A19670 |  | 100AL5: Roof Trusses | resource dependent | 4d | 2026-11-06 | 2026-11-11 | A19669 FS-1d | 0d |  |
| A19671 |  | 100AL5: Roof Decking | resource dependent | 3d | 2026-11-10 | 2026-11-12 | A19670 FS-2d | 3d | 0d |
| A19672 |  | 100AL5: Build Out Parapets | resource dependent | 3d | 2026-11-12 | 2026-11-16 | A19671 FS-1d | 3d | 0d |
| A19674 |  | 100AL5: MEP Roof Penetrations/Davits | resource dependent | 2d | 2026-11-13 | 2026-11-16 | A19671 | 360d |  |
| A22648 |  | 100AL5: Roof Deck QC Inspection |  | 5d | 2026-11-17 | 2026-11-23 | A19672 | 3d | 0d |
| A19673 |  | 100AL5: Roof Decking City Inspection | resource dependent | 1d | 2026-11-24 | 2026-11-24 | A19672, A22648 | 3d | 0d |
|  | 141 | **Exterior Sheathing** |  |  | 2026-10-22 | 2026-11-23 |  |  |  |
| A19797 |  | 100AL1: Sheathing | resource dependent | 3d | 2026-10-22 | 2026-10-26 | A19661 | 365d | 0d |
| A19798 |  | 100AL1: Sheathing Inspection | resource dependent | 2d | 2026-10-27 | 2026-10-28 | A19797 | 365d | 0d |
| A19799 |  | 100AL2: Sheathing | resource dependent | 3d | 2026-10-30 | 2026-11-03 | A19665 | 359d | 0d |
| A19800 |  | 100AL2: Sheathing Inspection | resource dependent | 2d | 2026-11-04 | 2026-11-05 | A19799 | 359d | 0d |
| A19801 |  | 100AL3: Sheathing | resource dependent | 3d | 2026-11-09 | 2026-11-11 | A19669 | 278d | 0d |
| A19802 |  | 100AL3: Sheathing Inspection | resource dependent | 2d | 2026-11-12 | 2026-11-13 | A19801 | 353d | 0d |
| A19803 |  | 100AL4: Sheathing | resource dependent | 3d | 2026-11-12 | 2026-11-16 | A19801 | 278d | 0d |
| A19804 |  | 100AL4: Sheathing Inspection | resource dependent | 2d | 2026-11-17 | 2026-11-18 | A19803 | 350d | 0d |
| A19805 |  | 100AL5: Sheathing | resource dependent | 3d | 2026-11-17 | 2026-11-19 | A19803 | 278d | 0d |
| A19806 |  | 100AL5: Sheathing Inspection | resource dependent | 2d | 2026-11-20 | 2026-11-23 | A19805 | 278d | 0d |

| ID | WBS | Activity | Type | Duration | Start | Finish | Predecessors | Total float | Free float |
| --- | --- | --- | --- | --- | --- | --- | --- | --- | --- |
|  | 142 | **Bracing Removal** |  |  | 2026-10-29 | 2026-11-24 |  |  |  |
| A19819 |  | 100AL1: Remove Bracing | resource dependent | 1d | 2026-10-29 | 2026-10-29 | A19798 | 365d | 0d |
| A19820 |  | 100AL2: Remove Bracing | resource dependent | 1d | 2026-11-06 | 2026-11-06 | A19800 | 359d | 0d |
| A19821 |  | 100AL3: Remove Bracing | resource dependent | 1d | 2026-11-16 | 2026-11-16 | A19802 | 353d | 0d |
| A19822 |  | 100AL4: Remove Bracing | resource dependent | 1d | 2026-11-19 | 2026-11-19 | A19804 | 350d | 0d |
| A19823 |  | 100AL5: Remove Bracing | resource dependent | 1d | 2026-11-24 | 2026-11-24 | A19806 | 336d | 0d |
|  | 143 | **Framing Trade Partner QC** |  |  | 2026-10-30 | 2026-12-01 |  |  |  |
| A19835 |  | 100AL1: Framing QC | resource dependent | 3d | 2026-10-30 | 2026-11-03 | A19819 | 365d | 0d |
| A19836 |  | 100AL2: Framing QC | resource dependent | 3d | 2026-11-09 | 2026-11-11 | A19820 | 359d | 0d |
| A19837 |  | 100AL3: Framing QC | resource dependent | 3d | 2026-11-17 | 2026-11-19 | A19821 | 353d | 0d |
| A19838 |  | 100AL4: Framing QC | resource dependent | 3d | 2026-11-20 | 2026-11-24 | A19822 | 350d | 0d |
| A19839 |  | 100AL5: Framing QC | resource dependent | 3d | 2026-11-25 | 2026-12-01 | A19823 | 336d | 0d |
|  | 144 | **Framing JCC Structural Punch** |  |  | 2026-11-04 | 2026-12-07 |  |  |  |
| A19840 |  | 100AL1: JCC Structural Punch | resource dependent | 4d | 2026-11-04 | 2026-11-09 | A19835 | 365d |  |
| A19842 |  | 100AL2: JCC Structural Punch | resource dependent | 4d | 2026-11-12 | 2026-11-17 | A19836 | 359d |  |
| A19843 |  | 100AL3: JCC Structural Punch | resource dependent | 4d | 2026-11-20 | 2026-11-25 | A19837 | 353d |  |
| A19844 |  | 100AL4: JCC Structural Punch | resource dependent | 4d | 2026-11-25 | 2026-12-02 | A19838 | 350d |  |
| A19845 |  | 100AL5: JCC Structural Punch | resource dependent | 4d | 2026-12-02 | 2026-12-07 | A19839 | 336d | 0d |
|  | 145 | **Structural Engineer Punch** |  |  | 2026-12-08 | 2026-12-22 |  |  |  |
| A19853 |  | 100A: EOR Create/Issue Structural Punch | resource dependent | 5d | 2026-12-08 | 2026-12-14 | A19845 | 336d | 0d |
| A19854 |  | 100A: Trade Partner Complete Punch | resource dependent | 5d | 2026-12-15 | 2026-12-21 | A19853 | 336d | 0d |
| A19855 |  | 100A: EOR Accept Punch | resource dependent | 1d | 2026-12-22 | 2026-12-22 | A19854 | 336d |  |
|  | 146 | **Building Dry-In** |  |  | 2026-11-24 | 2027-03-17 |  |  |  |
|  | 147 | **Roofing (14,000 SF)** |  |  | 2026-11-25 | 2026-12-21 |  |  |  |
| A19228 |  | 100A: Roof Dry-In | resource dependent | 10d | 2026-11-25 | 2026-12-10 | A19673 | 3d | 0d |
| A19992 |  | 100A: Roof Detail Work | resource dependent | 5d | 2026-12-11 | 2026-12-17 | A19228 | 3d | 0d |
| A22688 |  | 100A: TPO Roof QC Inspection |  | 3d | 2026-12-17 | 2026-12-21 | A19992 FS-1d | 3d | 0d |

| ID | WBS | Activity | Type | Duration | Start | Finish | Predecessors | Total float | Free float |
| --- | --- | --- | --- | --- | --- | --- | --- | --- | --- |
|  | 148 | **Exterior Skin** |  |  | 2026-11-24 | 2027-03-17 |  |  |  |
|  | 149 | **Tyvek & Windows** |  |  | 2026-11-24 | 2026-12-29 |  |  |  |
|  | 150 | **Tyvek** |  |  | 2026-11-24 | 2026-12-16 |  |  |  |
| A21640 |  | TVK: Elevation A (4,400 SF) | resource dependent | 2d | 2026-11-24 | 2026-11-25 | A19806 | 278d | 0d |
| A21641 |  | TVK: Elevation B (9,300 SF) | resource dependent | 5d | 2026-11-30 | 2026-12-04 | A21640 | 278d | 0d |
| A21642 |  | TVK: Elevation C (4,000 SF) | resource dependent | 3d | 2026-12-07 | 2026-12-09 | A21641 | 340d | 0d |
| A21643 |  | TVK: Elevation D (9,700 SF) | resource dependent | 5d | 2026-12-10 | 2026-12-16 | A21642 | 340d |  |
|  | 151 | **Windows/Doors** |  |  | 2026-12-07 | 2026-12-29 |  |  |  |
| A21644 |  | WN/DR: Elevation A (5) | resource dependent | 1d | 2026-12-07 | 2026-12-07 | A21640, A21641 | 278d | 0d |
| A21645 |  | WN/DR: Elevation B (104) | resource dependent | 7d | 2026-12-08 | 2026-12-16 | A21644 | 286d | 0d |
| A21646 |  | WN/DR: Elevation D (104) | resource dependent | 7d | 2026-12-17 | 2026-12-29 | A21645 | 302d | 13d |
|  | 152 | **Skin** |  |  | 2026-12-08 | 2027-03-17 |  |  |  |
|  | 153 | **Elevation A** |  |  | 2026-12-08 | 2027-01-07 |  |  |  |
| A21651 |  | ELA: Brick (3,800SF) | resource dependent | 15d | 2026-12-08 | 2026-12-30 | A21644 | 278d | 0d |
| A21652 |  | ELA: Siding (530 SF) | resource dependent | 2d | 2026-12-31 | 2027-01-04 | A21651 | 288d | 0d |
| A21653 |  | ELA: Paint | resource dependent | 3d | 2027-01-05 | 2027-01-07 | A21652 | 300d | 17d |
|  | 154 | **Elevation B** |  |  | 2026-12-31 | 2027-02-15 |  |  |  |
| A21654 |  | ELB: Brick (3,000SF) | resource dependent | 12d | 2026-12-31 | 2027-01-18 | A21651, A21645 | 278d | 0d |
| A21655 |  | ELB: Siding (6,300 SF) | resource dependent | 10d | 2027-01-19 | 2027-02-01 | A21654, A21652 | 278d | 0d |
| A21656 |  | ELB: Paint | resource dependent | 10d | 2027-02-02 | 2027-02-15 | A21655, A21653 | 283d | 0d |
|  | 155 | **Elevation C** |  |  | 2027-02-02 | 2027-02-24 |  |  |  |
| A21658 |  | ELC: Siding (TBD SF) | resource dependent | 10d | 2027-02-02 | 2027-02-15 | A21655 | 278d | 0d |
| A21659 |  | ELC: Paint | resource dependent | 7d | 2027-02-16 | 2027-02-24 | A21658, A21656 | 283d | 5d |
|  | 156 | **Elevation D** |  |  | 2027-01-19 | 2027-03-17 |  |  |  |
| A21660 |  | ELD: Brick (2,000SF) | resource dependent | 9d | 2027-01-19 | 2027-01-29 | A21646, A21654 | 289d | 11d |
| A21661 |  | ELD: Siding (7,700 SF) | resource dependent | 12d | 2027-02-16 | 2027-03-03 | A21658, A21660 | 278d | 0d |
| A21662 |  | ELD: Paint | resource dependent | 10d | 2027-03-04 | 2027-03-17 | A21659, A21661 | 278d |  |

| ID | WBS | Activity | Type | Duration | Start | Finish | Predecessors | Total float | Free float |
| --- | --- | --- | --- | --- | --- | --- | --- | --- | --- |
|  | 157 | **Building Interiors** |  |  | 2026-10-16 | 2027-08-09 |  |  |  |
|  | 158 | **MEPF Non-Weather Sensitive Rough-In** |  |  | 2026-10-16 | 2026-12-07 |  |  |  |
|  | 159 | **Level 1 MEPF NWSR** |  |  | 2026-10-16 | 2026-11-02 |  |  |  |
| A20007 |  | 100AL1NWSR: Plastic Rough & Valves | resource dependent | 3d | 2026-10-16 | 2026-10-20 | A19659, A68768 | 298d | 0d |
| A20008 |  | 100AL1NWSR: Electrical Conduit, Boxes & Unit Feeders | resource dependent | 3d | 2026-10-21 | 2026-10-23 | A20007 | 298d | 0d |
| A20009 |  | 100AL1NWSR: Sprinkler Mains | resource dependent | 3d | 2026-10-26 | 2026-10-28 | A20008 | 298d | 0d |
| A20010 |  | 100AL1NWSR: Mechanical Hard Pipe & Boots | resource dependent | 3d | 2026-10-29 | 2026-11-02 | A20009 | 298d | 3d |
|  | 160 | **Level 2 MEPF NWSR** |  |  | 2026-10-26 | 2026-11-10 |  |  |  |
| A20011 |  | 100AL1NWSR: Plastic Rough & Valves | resource dependent | 3d | 2026-10-26 | 2026-10-28 | A19663, A20007 | 295d | 0d |
| A20012 |  | 100AL1NWSR: Electrical Conduit, Boxes & Unit Feeders | resource dependent | 3d | 2026-10-29 | 2026-11-02 | A20011, A20008 | 295d | 0d |
| A20013 |  | 100AL1NWSR: Sprinkler Mains | resource dependent | 3d | 2026-11-03 | 2026-11-05 | A20012, A20009 | 295d | 0d |
| A20014 |  | 100AL1NWSR: Mechanical Hard Pipe & Boots | resource dependent | 3d | 2026-11-06 | 2026-11-10 | A20013, A20010 | 295d | 3d |
|  | 161 | **Level 3 MEPF NWSR** |  |  | 2026-11-03 | 2026-11-18 |  |  |  |
| A20015 |  | 100AL1NWSR: Plastic Rough & Valves | resource dependent | 3d | 2026-11-03 | 2026-11-05 | A19667, A20011 | 292d | 0d |
| A20016 |  | 100AL1NWSR: Electrical Conduit, Boxes & Unit Feeders | resource dependent | 3d | 2026-11-06 | 2026-11-10 | A20015, A20012 | 292d | 0d |
| A20017 |  | 100AL1NWSR: Sprinkler Mains | resource dependent | 3d | 2026-11-11 | 2026-11-13 | A20016, A20013 | 292d | 0d |
| A20018 |  | 100AL1NWSR: Mechanical Hard Pipe & Boots | resource dependent | 3d | 2026-11-16 | 2026-11-18 | A20017, A20014 | 292d | 5d |
|  | 162 | **Level 4 MEPF NWSR** |  |  | 2026-11-13 | 2026-12-02 |  |  |  |
| A20019 |  | 100AL1NWSR: Plastic Rough & Valves | resource dependent | 3d | 2026-11-13 | 2026-11-17 | A20015, A19671 | 287d | 0d |
| A20020 |  | 100AL1NWSR: Electrical Conduit, Boxes & Unit Feeders | resource dependent | 3d | 2026-11-18 | 2026-11-20 | A20019, A20016 | 287d | 0d |
| A20021 |  | 100AL1NWSR: Sprinkler Mains | resource dependent | 3d | 2026-11-23 | 2026-11-25 | A20020, A20017 | 287d | 0d |
| A20022 |  | 100AL1NWSR: Mechanical Hard Pipe & Boots | resource dependent | 3d | 2026-11-30 | 2026-12-02 | A20021, A20018 | 287d | 0d |
|  | 163 | **Level 5 MEPF NWSR** |  |  | 2026-11-18 | 2026-12-07 |  |  |  |
| A20023 |  | 100AL1NWSR: Plastic Rough & Valves | resource dependent | 3d | 2026-11-18 | 2026-11-20 | A20019 | 287d | 0d |
| A20024 |  | 100AL1NWSR: Electrical Conduit, Boxes & Unit Feeders | resource dependent | 3d | 2026-11-23 | 2026-11-25 | A20023, A20020 | 287d | 0d |
| A20025 |  | 100AL1NWSR: Sprinkler Mains | resource dependent | 3d | 2026-11-30 | 2026-12-02 | A20024, A20021 | 287d | 0d |
| A20026 |  | 100AL1NWSR: Mechanical Hard Pipe & Boots | resource dependent | 3d | 2026-12-03 | 2026-12-07 | A20025, A20022 | 287d | 4d |

| ID | WBS | Activity | Type | Duration | Start | Finish | Predecessors | Total float | Free float |
| --- | --- | --- | --- | --- | --- | --- | --- | --- | --- |
|  | 164 | **Weather Sensitive Rough-In (Top Down)** |  |  | 2026-12-22 | 2027-02-23 |  |  |  |
| A20109 |  | 100A: Install Insulation For Pre-Rock | resource dependent | 2d | 2026-12-22 | 2026-12-23 | A19228, A22688 | 3d | 0d |
| A20110 |  | 100A: Prehang Shafts, Tubs and Mechanical Rooms | resource dependent | 3d | 2026-12-28 | 2026-12-30 | A20109 | 3d | 0d |
| A20111 |  | 100A: Pre-Pour Gypcrete | resource dependent | 2d | 2026-12-31 | 2027-01-04 | A20110 | 3d | 0d |
|  | 165 | **Install Tubs/Shower Pans** |  |  | 2027-01-05 | 2027-01-11 |  |  |  |
| A20118 |  | 100AL1: Tubs/Shower Pans | resource dependent | 1d | 2027-01-05 | 2027-01-05 | A20111 | 3d | 0d |
| A20124 |  | 100AL2: Tubs/Shower Pans | resource dependent | 1d | 2027-01-06 | 2027-01-06 | A20118 | 325d | 0d |
| A20125 |  | 100AL3: Tubs/Shower Pans | resource dependent | 1d | 2027-01-07 | 2027-01-07 | A20124 | 325d | 0d |
| A20126 |  | 100AL4: Tubs/Shower Pans | resource dependent | 1d | 2027-01-08 | 2027-01-08 | A20125 | 325d | 0d |
| A20127 |  | 100AL5: Tubs/Shower Pans | resource dependent | 1d | 2027-01-11 | 2027-01-11 | A20126 | 325d |  |
|  | 166 | **Level 5 (11 Units)** |  |  | 2027-01-06 | 2027-01-19 |  |  |  |
|  | 167 | **L5 MEP WSR Units** |  |  | 2027-01-06 | 2027-01-13 |  |  |  |
| A20129 |  | 100AL5WSR: Mechanical Duct & Damper Install | resource dependent | 3d | 2027-01-06 | 2027-01-08 | A20118 | 3d | 0d |
| A20130 |  | 100AL5WSR: Pull Branch Circuits/Fire Caulk | resource dependent | 3d | 2027-01-11 | 2027-01-13 | A20129 | 3d | 0d |
|  | 168 | **L5 MEP WSR Corridor** |  |  | 2027-01-11 | 2027-01-19 |  |  |  |
| A20131 |  | 100AL5WSR: Corridor Mechanical Duct | resource dependent | 3d | 2027-01-11 | 2027-01-13 | A20129 | 3d | 0d |
| A20132 |  | 100AL5WSR: Corridor Circuitry | resource dependent | 2d | 2027-01-14 | 2027-01-15 | A20130, A20131 | 3d | 0d |
| A20133 |  | 100AL5WSR: Corridor LV/ERRC/FA | resource dependent | 2d | 2027-01-14 | 2027-01-15 | A20130, A20132 FS-2d | 3d | 0d |
| A20134 |  | 100AL5WSR: Service Provider Rough | resource dependent | 2d | 2027-01-18 | 2027-01-19 | A20133 | 3d | 0d |
|  | 169 | **Level 4 (11 Units)** |  |  | 2027-01-11 | 2027-01-22 |  |  |  |
|  | 170 | **L4 MEP WSR Units** |  |  | 2027-01-11 | 2027-01-18 |  |  |  |
| A20136 |  | 100AL4WSR: Mechanical Duct & Damper Install | resource dependent | 3d | 2027-01-11 | 2027-01-13 | A20129 | 7d | 0d |
| A20137 |  | 100AL4WSR: Pull Branch Circuits/Fire Caulk | resource dependent | 3d | 2027-01-14 | 2027-01-18 | A20136, A20130 | 7d | 0d |
|  | 171 | **L4 MEP WSR Corridor** |  |  | 2027-01-14 | 2027-01-22 |  |  |  |
| A20139 |  | 100AL4WSR: Corridor Mechanical Duct | resource dependent | 3d | 2027-01-14 | 2027-01-18 | A20136 | 7d | 0d |
| A20140 |  | 100AL4WSR: Corridor Circuitry | resource dependent | 2d | 2027-01-19 | 2027-01-20 | A20139, A20137 | 7d | 0d |
| A20141 |  | 100AL4WSR: Corridor LV/ERRC/FA | resource dependent | 2d | 2027-01-19 | 2027-01-20 | A20140 FS-2d, A20137 | 7d | 0d |
| A20142 |  | 100AL4WSR: Service Provider Rough | resource dependent | 2d | 2027-01-21 | 2027-01-22 | A20141 | 7d | 2d |

| ID | WBS | Activity | Type | Duration | Start | Finish | Predecessors | Total float | Free float |
| --- | --- | --- | --- | --- | --- | --- | --- | --- | --- |
|  | 172 | **Level 3 (11 Units)** |  |  | 2027-01-14 | 2027-01-27 |  |  |  |
|  | 173 | **L3 MEP WSR Units** |  |  | 2027-01-14 | 2027-01-21 |  |  |  |
| A20144 |  | 100AL3WSR: Mechanical Duct & Damper Install | resource dependent | 3d | 2027-01-14 | 2027-01-18 | A20136 | 11d | 0d |
| A20145 |  | 100AL3WSR: Pull Branch Circuits/Fire Caulk | resource dependent | 3d | 2027-01-19 | 2027-01-21 | A20137, A20144 | 11d | 0d |
|  | 174 | **L3 MEP WSR Corridor** |  |  | 2027-01-19 | 2027-01-27 |  |  |  |
| A20147 |  | 100AL3WSR: Corridor Mechanical Duct | resource dependent | 3d | 2027-01-19 | 2027-01-21 | A20144 | 11d | 0d |
| A20148 |  | 100AL3WSR: Corridor Circuitry | resource dependent | 2d | 2027-01-22 | 2027-01-25 | A20145, A20147 | 11d | 0d |
| A20149 |  | 100AL3WSR: Corridor LV/ERRC/FA | resource dependent | 2d | 2027-01-22 | 2027-01-25 | A20145, A20148 FS-2d | 11d | 0d |
| A20150 |  | 100AL3WSR: Service Provider Rough | resource dependent | 2d | 2027-01-26 | 2027-01-27 | A20149 | 11d | 4d |
|  | 175 | **Level 2 (11 Units)** |  |  | 2027-01-19 | 2027-02-01 |  |  |  |
|  | 176 | **L2 MEP WSR Units** |  |  | 2027-01-19 | 2027-01-26 |  |  |  |
| A20152 |  | 100AL2WSR: Mechanical Duct & Damper Install | resource dependent | 3d | 2027-01-19 | 2027-01-21 | A20144 | 15d | 0d |
| A20153 |  | 100AL2WSR: Pull Branch Circuits/Fire Caulk | resource dependent | 3d | 2027-01-22 | 2027-01-26 | A20145, A20152 | 15d | 0d |
|  | 177 | **L2 MEP WSR Corridor** |  |  | 2027-01-22 | 2027-02-01 |  |  |  |
| A20155 |  | 100AL2WSR: Corridor Mechanical Duct | resource dependent | 3d | 2027-01-22 | 2027-01-26 | A20152 | 15d | 0d |
| A20156 |  | 100AL2WSR: Corridor Circuitry | resource dependent | 2d | 2027-01-27 | 2027-01-28 | A20155, A20153 | 15d | 0d |
| A20157 |  | 100AL2WSR: Corridor LV/ERRC/FA | resource dependent | 2d | 2027-01-27 | 2027-01-28 | A20156 FS-2d, A20153 | 15d | 0d |
| A20158 |  | 100AL2WSR: Service Provider Rough | resource dependent | 2d | 2027-01-29 | 2027-02-01 | A20157 | 15d | 6d |
|  | 178 | **Level 1 (11 Units)** |  |  | 2027-01-22 | 2027-02-04 |  |  |  |
|  | 179 | **L1 MEP WSR Units** |  |  | 2027-01-22 | 2027-01-29 |  |  |  |
| A20160 |  | 100AL1WSR: Mechanical Duct & Damper Install | resource dependent | 3d | 2027-01-22 | 2027-01-26 | A20152 | 19d | 0d |
| A20161 |  | 100AL1WSR: Pull Branch Circuits/Fire Caulk | resource dependent | 3d | 2027-01-27 | 2027-01-29 | A20153, A20160 | 19d | 0d |
|  | 180 | **L1 MEP WSR Corridor** |  |  | 2027-01-27 | 2027-02-04 |  |  |  |
| A20163 |  | 100AL1WSR: Corridor Mechanical Duct | resource dependent | 3d | 2027-01-27 | 2027-01-29 | A20160 | 19d | 0d |
| A20164 |  | 100AL1WSR: Corridor Circuitry | resource dependent | 2d | 2027-02-01 | 2027-02-02 | A20161, A20163 | 19d | 0d |
| A20165 |  | 100AL1WSR: Corridor LV/ERRC/FA | resource dependent | 2d | 2027-02-01 | 2027-02-02 | A20161, A20164 FS-2d | 19d | 0d |
| A20166 |  | 100AL1WSR: Service Provider Rough | resource dependent | 2d | 2027-02-03 | 2027-02-04 | A20165 | 19d | 8d |

| ID | WBS | Activity | Type | Duration | Start | Finish | Predecessors | Total float | Free float |
| --- | --- | --- | --- | --- | --- | --- | --- | --- | --- |
|  | WBS131 | **MEPF WSR Quality Control** |  |  | 2027-01-20 | 2027-02-23 |  |  |  |
| A22448 |  | MEPF WSR QC Level 5 |  | 5d | 2027-01-20 | 2027-01-26 | A20134 | 3d | 0d |
| A22458 |  | MEPF WSR QC Level 4 |  | 5d | 2027-01-27 | 2027-02-02 | A20142, A22448 | 5d | 0d |
| A22468 |  | MEPF WSR QC Level 3 |  | 5d | 2027-02-03 | 2027-02-09 | A22458, A20150 | 7d | 0d |
| A22478 |  | MEPF WSR QC Level 2 |  | 5d | 2027-02-10 | 2027-02-16 | A20158, A22468 | 9d | 0d |
| A22488 |  | MEPF WSR QC Level 1 |  | 5d | 2027-02-17 | 2027-02-23 | A22478, A20166 | 11d | 0d |
|  | 181 | **Cover-up Inspections** |  |  | 2027-01-27 | 2027-03-02 |  |  |  |
|  | 182 | **Level 5** |  |  | 2027-01-27 | 2027-02-02 |  |  |  |
| A20347 |  | 100AL5: MEPF Trade Inspection | resource dependent | 2d | 2027-01-27 | 2027-01-28 | A20134, A22448 | 3d | 0d |
| A20348 |  | 100AL5: Fire Marshal Inspection | resource dependent | 2d | 2027-01-29 | 2027-02-01 | A20347 | 3d | 0d |
| A20349 |  | 100AL5: Structural Inspection | resource dependent | 1d | 2027-02-02 | 2027-02-02 | A20348 | 3d | 0d |
|  | 183 | **Level 4** |  |  | 2027-02-03 | 2027-02-09 |  |  |  |
| A20346 |  | 100AL4: MEPF Trade Inspection | resource dependent | 2d | 2027-02-03 | 2027-02-04 | A20142, A22458 | 5d | 0d |
| A20350 |  | 100AL4: Fire Marshal Inspection | resource dependent | 2d | 2027-02-05 | 2027-02-08 | A20346 | 5d | 0d |
| A20351 |  | 100AL4: Structural Inspection | resource dependent | 1d | 2027-02-09 | 2027-02-09 | A20350 | 5d | 0d |
|  | 184 | **Level 3** |  |  | 2027-02-10 | 2027-02-16 |  |  |  |
| A20345 |  | 100AL3: MEPF Trade Inspection | resource dependent | 2d | 2027-02-10 | 2027-02-11 | A20150, A22468 | 7d | 0d |
| A20352 |  | 100AL3: Fire Marshal Inspection | resource dependent | 2d | 2027-02-12 | 2027-02-15 | A20345 | 7d | 0d |
| A20353 |  | 100AL3: Structural Inspection | resource dependent | 1d | 2027-02-16 | 2027-02-16 | A20352 | 7d | 0d |
|  | 185 | **Level 2** |  |  | 2027-02-17 | 2027-02-23 |  |  |  |
| A20344 |  | 100AL2: MEPF Trade Inspection | resource dependent | 2d | 2027-02-17 | 2027-02-18 | A20158, A22478 | 9d | 0d |
| A20354 |  | 100AL2: Fire Marshal Inspection | resource dependent | 2d | 2027-02-19 | 2027-02-22 | A20344 | 9d | 0d |
| A20355 |  | 100AL2: Structural Inspection | resource dependent | 1d | 2027-02-23 | 2027-02-23 | A20354 | 9d | 0d |
|  | 186 | **Level 1** |  |  | 2027-02-24 | 2027-03-02 |  |  |  |
| A20343 |  | 100AL1: MEPF Trade Inspection | resource dependent | 2d | 2027-02-24 | 2027-02-25 | A20166, A22488 | 11d | 0d |
| A20356 |  | 100AL1: Fire Marshal Inspection | resource dependent | 2d | 2027-02-26 | 2027-03-01 | A20343 | 11d | 0d |
| A20357 |  | 100AL1: Structural Inspection | resource dependent | 1d | 2027-03-02 | 2027-03-02 | A20356 | 11d | 0d |

| ID | WBS | Activity | Type | Duration | Start | Finish | Predecessors | Total float | Free float |
| --- | --- | --- | --- | --- | --- | --- | --- | --- | --- |
|  | 187 | **Interior Finishes** |  |  | 2027-02-03 | 2027-07-21 |  |  |  |
|  | 188 | **Level 5** |  |  | 2027-02-03 | 2027-06-10 |  |  |  |
|  | 189 | **Level 5 Residential Units** |  |  | 2027-02-03 | 2027-06-01 |  |  |  |
| A20436 |  | 100AL5: Insulation | resource dependent | 3d | 2027-02-03 | 2027-02-05 | A20349 | 3d | 0d |
| A20437 |  | 100AL5: Insulation Inspection | resource dependent | 1d | 2027-02-08 | 2027-02-08 | A20436 | 3d | 0d |
| A20495 |  | 100AL5: Install Resilient Channel | resource dependent | 2d | 2027-02-08 | 2027-02-09 | A20437 FS-1d | 3d | 0d |
| A20438 |  | 100AL5: Pre-Hang QC Inspections | resource dependent | 5d | 2027-02-10 | 2027-02-16 | A20495 | 3d | 0d |
| A20439 |  | 100AL5: Stock Drywall | resource dependent | 2d | 2027-02-17 | 2027-02-18 | A20438 | 3d | 0d |
| A20440 |  | 100AL5: Hang Drywall | resource dependent | 4d | 2027-02-19 | 2027-02-24 | A20439 | 3d | 0d |
| A20441 |  | 100AL5: Post Hang QC Inspecitons | resource dependent | 5d | 2027-02-25 | 2027-03-03 | A20440 | 3d | 0d |
| A20442 |  | 100AL5: Finish Drywall | resource dependent | 7d | 2027-03-04 | 2027-03-12 | A20441 | 3d | 0d |
| A20443 |  | 100AL5: Prime Paint | resource dependent | 3d | 2027-03-15 | 2027-03-17 | A20442 | 22d | 0d |
| A20444 |  | 100AL5: Gypcrete Prep | resource dependent | 2d | 2027-03-18 | 2027-03-19 | A20443 | 22d | 0d |
| A20445 |  | 100AL5: Install Gypcrete | resource dependent | 2d | 2027-03-22 | 2027-03-23 | A20444 | 22d | 0d |
| A20446 |  | 100AL5: Install AHU/WH | resource dependent | 2d | 2027-03-24 | 2027-03-25 | A20445 | 67d | 5d |
| A20447 |  | 100AL5: Shower Surrounds | resource dependent | 3d | 2027-03-24 | 2027-03-26 | A20445 | 51d | 0d |
| A20448 |  | 100AL5: Vanities and Kitchen Casework | resource dependent | 6d | 2027-03-30 | 2027-04-06 | A20445 FS+4d | 22d | 0d |
| A20449 |  | 100AL5: Install Countertops | resource dependent | 4d | 2027-04-07 | 2027-04-12 | A20448 | 50d | 0d |
| A20451 |  | 100AL5: Install Shower Doors | resource dependent | 5d | 2027-04-12 | 2027-04-16 | A20447 FS+10d | 51d | 1d |
| A20450 |  | 100AL5: Kitchen Backsplash | resource dependent | 3d | 2027-04-13 | 2027-04-15 | A20449 | 52d | 2d |
| A20452 |  | 100AL5: Install Interior Doors & Trim | resource dependent | 5d | 2027-04-13 | 2027-04-19 | A20449 | 50d | 0d |
| A20453 |  | 100AL5: Drywall Touch-Up | resource dependent | 3d | 2027-04-20 | 2027-04-22 | A20446, A20452, A20451, A20450 | 50d | 0d |
| A20454 |  | 100AL5: First Finish Paint (Ceilings, Trim, Doors & Walls) | resource dependent | 5d | 2027-04-23 | 2027-04-29 | A20453 | 50d | 0d |
| A20482 |  | 100AL5: MEPS Ceiling Trim Out | resource dependent | 3d | 2027-04-30 | 2027-05-04 | A20454 | 50d | 0d |
| A20483 |  | 100AL5: Install Flooring | resource dependent | 5d | 2027-05-05 | 2027-05-11 | A20482 | 50d | 0d |
| A20484 |  | 100AL5: Minor Appliance Delivery | resource dependent | 2d | 2027-05-12 | 2027-05-13 | A20483 | 62d | 0d |
| A20485 |  | 100AL5: MEP Trim-Out DW, Disposal & Sink Install | resource dependent | 3d | 2027-05-14 | 2027-05-18 | A20484 | 62d | 0d |
| A20486 |  | 100AL5: Install Door Hardware | resource dependent | 3d | 2027-05-19 | 2027-05-21 | A20485 | 62d | 0d |
| A20487 |  | 100AL5: Unit Accessories | resource dependent | 2d | 2027-05-24 | 2027-05-25 | A20486 | 62d | 0d |
| A20488 |  | 100AL5: Major Appliance Delivery - Install Refrigerator, Microwave, W/D | resource dependent | 2d | 2027-05-24 | 2027-05-25 | A20486 | 62d | 0d |
| A20489 |  | 100AL5: Rough Clean | resource dependent | 4d | 2027-05-26 | 2027-06-01 | A20487, A20488 | 62d | 0d |

| ID | WBS | Activity | Type | Duration | Start | Finish | Predecessors | Total float | Free float |
| --- | --- | --- | --- | --- | --- | --- | --- | --- | --- |
|  | 190 | **Level 5 Common Areas** |  |  | 2027-02-19 | 2027-06-10 |  |  |  |
| A20456 |  | 100AL5: Stock Drywall | resource dependent | 1d | 2027-02-19 | 2027-02-19 | A20439 | 279d | 3d |
| A20457 |  | 100AL5: Hang/Finish Drywall | resource dependent | 4d | 2027-02-25 | 2027-03-02 | A20456, A20440 | 276d | 11d |
| A20458 |  | 100AL5: Prime Paint | resource dependent | 1d | 2027-03-18 | 2027-03-18 | A20457, A20443 | 265d | 22d |
| A20459 |  | 100AL5: Install Wood Base | resource dependent | 1d | 2027-04-20 | 2027-04-20 | A20458, A20452 | 243d | 7d |
| A20460 |  | 100AL5: First Finish Paint | resource dependent | 2d | 2027-04-30 | 2027-05-03 | A20454, A20459 | 236d | 1d |
| A20490 |  | 100AL5: MEP Device Trim-Out | resource dependent | 1d | 2027-05-05 | 2027-05-05 | A20482, A20460 | 235d | 4d |
| A20491 |  | 100AL5: Install Flooring | resource dependent | 1d | 2027-05-12 | 2027-05-12 | A20483, A20490 | 231d | 13d |
| A20492 |  | 100AL5: Rough Clean | resource dependent | 1d | 2027-06-02 | 2027-06-02 | A20491, A20489 | 218d | 0d |
| A20493 |  | 100AL5: JCC Punchlist | resource dependent | 5d | 2027-06-03 | 2027-06-09 | A20492 | 218d | 0d |
| A20494 |  | 100AL5: Final Clean | resource dependent | 1d | 2027-06-10 | 2027-06-10 | A20493 | 218d |  |
|  | 191 | **Level 4** |  |  | 2027-02-10 | 2027-06-22 |  |  |  |
|  | 192 | **Level 4 Residential Units** |  |  | 2027-02-10 | 2027-06-10 |  |  |  |
| A20497 |  | 100AL4: Insulation | resource dependent | 3d | 2027-02-10 | 2027-02-12 | A20351 | 5d | 0d |
| A20498 |  | 100AL4: Insulation Inspection | resource dependent | 1d | 2027-02-15 | 2027-02-15 | A20497 | 5d | 0d |
| A20499 |  | 100AL4: Install Resilient Channel | resource dependent | 2d | 2027-02-15 | 2027-02-16 | A20498 FS-1d | 5d | 0d |
| A20500 |  | 100AL4: Pre-Hang QC Inspections | resource dependent | 5d | 2027-02-17 | 2027-02-23 | A20499 | 5d | 0d |
| A20501 |  | 100AL4: Stock Drywall | resource dependent | 2d | 2027-02-24 | 2027-02-25 | A20500 | 5d | 0d |
| A20502 |  | 100AL4: Hang Drywall | resource dependent | 4d | 2027-02-26 | 2027-03-03 | A20440, A20501 | 5d | 0d |
| A20503 |  | 100AL4: Post Hang QC Inspecitons | resource dependent | 5d | 2027-03-04 | 2027-03-10 | A20502 | 5d | 2d |
| A20504 |  | 100AL4: Finish Drywall | resource dependent | 7d | 2027-03-15 | 2027-03-23 | A20442, A20503 | 3d | 0d |
| A20505 |  | 100AL4: Prime Paint | resource dependent | 3d | 2027-03-24 | 2027-03-26 | A20504, A20443 | 21d | 0d |
| A20506 |  | 100AL4: Gypcrete Prep | resource dependent | 2d | 2027-03-29 | 2027-03-30 | A20505 | 21d | 0d |
| A20507 |  | 100AL4: Install Gypcrete | resource dependent | 2d | 2027-03-31 | 2027-04-01 | A20506 | 21d | 0d |
| A20508 |  | 100AL4: Install AHU/WH | resource dependent | 2d | 2027-04-02 | 2027-04-05 | A20507, A20446 | 65d | 5d |
| A20509 |  | 100AL4: Shower Surrounds | resource dependent | 3d | 2027-04-02 | 2027-04-06 | A20507, A20447 | 49d | 0d |
| A20510 |  | 100AL4: Vanities and Kitchen Casework | resource dependent | 6d | 2027-04-08 | 2027-04-15 | A20448, A20507 FS+4d | 21d | 0d |
| A20511 |  | 100AL4: Install Countertops | resource dependent | 4d | 2027-04-16 | 2027-04-21 | A20510, A20449 | 48d | 0d |
| A20513 |  | 100AL4: Install Shower Doors | resource dependent | 5d | 2027-04-21 | 2027-04-27 | A20509 FS+10d, A20451 | 49d | 1d |
| A20512 |  | 100AL4: Kitchen Backsplash | resource dependent | 3d | 2027-04-22 | 2027-04-26 | A20511 | 50d | 2d |
| A20514 |  | 100AL4: Install Interior Doors & Trim | resource dependent | 5d | 2027-04-22 | 2027-04-28 | A20452, A20511 | 48d | 0d |
| A20515 |  | 100AL4: Drywall Touch-Up | resource dependent | 3d | 2027-04-29 | 2027-05-03 | A20512, A20514, A20513, A20508 | 48d | 0d |
| A20516 |  | 100AL4: First Finish Paint (Ceilings, Trim, Doors & Walls) | resource dependent | 5d | 2027-05-04 | 2027-05-10 | A20454, A20515 | 48d | 0d |
| A20517 |  | 100AL4: MEPS Ceiling Trim Out | resource dependent | 3d | 2027-05-11 | 2027-05-13 | A20516, A20482 | 48d | 0d |
| A20518 |  | 100AL4: Install Flooring | resource dependent | 5d | 2027-05-14 | 2027-05-20 | A20483, A20517 | 48d | 0d |
| A20519 |  | 100AL4: Minor Appliance Delivery | resource dependent | 2d | 2027-05-21 | 2027-05-24 | A20518 | 61d | 0d |
| A20520 |  | 100AL4: MEP Trim-Out DW, Disposal & Sink Install | resource dependent | 3d | 2027-05-25 | 2027-05-27 | A20519 | 61d | 0d |
| A20521 |  | 100AL4: Install Door Hardware | resource dependent | 3d | 2027-05-28 | 2027-06-02 | A20520 | 61d | 0d |
| A20522 |  | 100AL4: Unit Accessories | resource dependent | 2d | 2027-06-03 | 2027-06-04 | A20521, A20487 | 61d | 0d |
| A20523 |  | 100AL4: Major Appliance Delivery - Install Refrigerator, Microwave, W/D | resource dependent | 2d | 2027-06-03 | 2027-06-04 | A20521, A20488 | 61d | 0d |
| A20524 |  | 100AL4: Rough Clean | resource dependent | 4d | 2027-06-07 | 2027-06-10 | A20523, A20522, A20489 | 61d | 0d |

| ID | WBS | Activity | Type | Duration | Start | Finish | Predecessors | Total float | Free float |
| --- | --- | --- | --- | --- | --- | --- | --- | --- | --- |
|  | 193 | **Level 4 Common Areas** |  |  | 2027-02-26 | 2027-06-22 |  |  |  |
| A20526 |  | 100AL4: Stock Drywall | resource dependent | 1d | 2027-02-26 | 2027-02-26 | A20501 | 274d | 3d |
| A20527 |  | 100AL4: Hang/Finish Drywall | resource dependent | 4d | 2027-03-04 | 2027-03-09 | A20502, A20526 | 271d | 13d |
| A20528 |  | 100AL4: Prime Paint | resource dependent | 1d | 2027-03-29 | 2027-03-29 | A20505, A20527 | 258d | 22d |
| A20529 |  | 100AL4: Install Wood Base | resource dependent | 1d | 2027-04-29 | 2027-04-29 | A20514, A20528 | 236d | 7d |
| A20530 |  | 100AL4: First Finish Paint | resource dependent | 2d | 2027-05-11 | 2027-05-12 | A20516, A20529 | 229d | 1d |
| A20531 |  | 100AL4: MEP Device Trim-Out | resource dependent | 1d | 2027-05-14 | 2027-05-14 | A20517, A20530 | 228d | 4d |
| A20532 |  | 100AL4: Install Flooring | resource dependent | 1d | 2027-05-21 | 2027-05-21 | A20518, A20531 | 224d | 13d |
| A20533 |  | 100AL4: Rough Clean | resource dependent | 1d | 2027-06-11 | 2027-06-11 | A20524, A20532 | 211d | 0d |
| A20534 |  | 100AL4: JCC Punchlist | resource dependent | 5d | 2027-06-14 | 2027-06-21 | A20533 | 211d | 0d |
| A20535 |  | 100AL4: Final Clean | resource dependent | 1d | 2027-06-22 | 2027-06-22 | A20534 | 211d |  |
|  | 194 | **Level 3** |  |  | 2027-02-17 | 2027-07-01 |  |  |  |
|  | 195 | **Level 3 Residential Units** |  |  | 2027-02-17 | 2027-06-22 |  |  |  |
| A20540 |  | 100AL3: Insulation | resource dependent | 3d | 2027-02-17 | 2027-02-19 | A20353 | 7d | 0d |
| A20541 |  | 100AL3: Insulation Inspection | resource dependent | 1d | 2027-02-22 | 2027-02-22 | A20540 | 7d | 0d |
| A20542 |  | 100AL3: Install Resilient Channel | resource dependent | 2d | 2027-02-22 | 2027-02-23 | A20541 FS-1d | 7d | 0d |
| A20543 |  | 100AL3: Pre-Hang QC Inspections | resource dependent | 5d | 2027-02-24 | 2027-03-02 | A20542 | 7d | 0d |
| A20544 |  | 100AL3: Stock Drywall | resource dependent | 2d | 2027-03-03 | 2027-03-04 | A20543 | 7d | 0d |
| A20545 |  | 100AL3: Hang Drywall | resource dependent | 4d | 2027-03-05 | 2027-03-10 | A20502, A20544 | 7d | 0d |
| A20546 |  | 100AL3: Post Hang QC Inspecitons | resource dependent | 5d | 2027-03-11 | 2027-03-17 | A20545 | 7d | 4d |
| A20547 |  | 100AL3: Finish Drywall | resource dependent | 7d | 2027-03-24 | 2027-04-01 | A20504, A20546 | 3d | 0d |
| A20548 |  | 100AL3: Prime Paint | resource dependent | 3d | 2027-04-02 | 2027-04-06 | A20547, A20505 | 20d | 0d |
| A20549 |  | 100AL3: Gypcrete Prep | resource dependent | 2d | 2027-04-07 | 2027-04-08 | A20548 | 20d | 0d |
| A20550 |  | 100AL3: Install Gypcrete | resource dependent | 2d | 2027-04-09 | 2027-04-12 | A20549 | 20d | 0d |
| A20551 |  | 100AL3: Install AHU/WH | resource dependent | 2d | 2027-04-13 | 2027-04-14 | A20550, A20508 | 63d | 5d |
| A20552 |  | 100AL3: Shower Surrounds | resource dependent | 3d | 2027-04-13 | 2027-04-15 | A20550, A20509 | 47d | 0d |
| A20553 |  | 100AL3: Vanities and Kitchen Casework | resource dependent | 6d | 2027-04-19 | 2027-04-26 | A20510, A20550 FS+4d | 20d | 0d |
| A20554 |  | 100AL3: Install Countertops | resource dependent | 4d | 2027-04-27 | 2027-04-30 | A20553, A20511 | 46d | 0d |
| A20556 |  | 100AL3: Install Shower Doors | resource dependent | 5d | 2027-04-30 | 2027-05-06 | A20552 FS+10d, A20513 | 47d | 1d |
| A20555 |  | 100AL3: Kitchen Backsplash | resource dependent | 3d | 2027-05-03 | 2027-05-05 | A20554 | 48d | 2d |
| A20557 |  | 100AL3: Install Interior Doors & Trim | resource dependent | 5d | 2027-05-03 | 2027-05-07 | A20514, A20554 | 46d | 0d |
| A20558 |  | 100AL3: Drywall Touch-Up | resource dependent | 3d | 2027-05-10 | 2027-05-12 | A20551, A20557, A20556, A20555 | 46d | 0d |
| A20559 |  | 100AL3: First Finish Paint (Ceilings, Trim, Doors & Walls) | resource dependent | 5d | 2027-05-13 | 2027-05-19 | A20516, A20558 | 46d | 0d |
| A20560 |  | 100AL3: MEPS Ceiling Trim Out | resource dependent | 3d | 2027-05-20 | 2027-05-24 | A20559, A20517 | 46d | 0d |
| A20561 |  | 100AL3: Install Flooring | resource dependent | 5d | 2027-05-25 | 2027-06-01 | A20518, A20560 | 46d | 0d |
| A20562 |  | 100AL3: Minor Appliance Delivery | resource dependent | 2d | 2027-06-02 | 2027-06-03 | A20561 | 60d | 0d |
| A20563 |  | 100AL3: MEP Trim-Out DW, Disposal & Sink Install | resource dependent | 3d | 2027-06-04 | 2027-06-08 | A20562 | 60d | 0d |
| A20564 |  | 100AL3: Install Door Hardware | resource dependent | 3d | 2027-06-09 | 2027-06-11 | A20563 | 60d | 0d |
| A20565 |  | 100AL3: Unit Accessories | resource dependent | 2d | 2027-06-14 | 2027-06-15 | A20564, A20522 | 60d | 0d |
| A20566 |  | 100AL3: Major Appliance Delivery - Install Refrigerator, Microwave, W/D | resource dependent | 2d | 2027-06-14 | 2027-06-15 | A20564, A20523 | 60d | 0d |
| A20567 |  | 100AL3: Rough Clean | resource dependent | 4d | 2027-06-16 | 2027-06-22 | A20565, A20566, A20524 | 60d | 0d |

| ID | WBS | Activity | Type | Duration | Start | Finish | Predecessors | Total float | Free float |
| --- | --- | --- | --- | --- | --- | --- | --- | --- | --- |
|  | 196 | **Level 3 Common Areas** |  |  | 2027-03-05 | 2027-07-01 |  |  |  |
| A20569 |  | 100AL3: Stock Drywall | resource dependent | 1d | 2027-03-05 | 2027-03-05 | A20544 | 269d | 3d |
| A20570 |  | 100AL3: Hang/Finish Drywall | resource dependent | 4d | 2027-03-11 | 2027-03-16 | A20569, A20545 | 266d | 15d |
| A20571 |  | 100AL3: Prime Paint | resource dependent | 1d | 2027-04-07 | 2027-04-07 | A20570, A20548 | 251d | 22d |
| A20572 |  | 100AL3: Install Wood Base | resource dependent | 1d | 2027-05-10 | 2027-05-10 | A20571, A20557 | 229d | 7d |
| A20573 |  | 100AL3: First Finish Paint | resource dependent | 2d | 2027-05-20 | 2027-05-21 | A20572, A20559 | 222d | 1d |
| A20574 |  | 100AL3: MEP Device Trim-Out | resource dependent | 1d | 2027-05-25 | 2027-05-25 | A20573, A20560 | 221d | 4d |
| A20575 |  | 100AL3: Install Flooring | resource dependent | 1d | 2027-06-02 | 2027-06-02 | A20561, A20574 | 217d | 13d |
| A20576 |  | 100AL3: Rough Clean | resource dependent | 1d | 2027-06-23 | 2027-06-23 | A20567, A20575 | 204d | 0d |
| A20577 |  | 100AL3: JCC Punchlist | resource dependent | 5d | 2027-06-24 | 2027-06-30 | A20576 | 204d | 0d |
| A20578 |  | 100AL3: Final Clean | resource dependent | 1d | 2027-07-01 | 2027-07-01 | A20577 | 204d |  |
|  | 197 | **Level 2** |  |  | 2027-02-24 | 2027-07-13 |  |  |  |
|  | 198 | **Level 2 Residential Units** |  |  | 2027-02-24 | 2027-07-01 |  |  |  |
| A20580 |  | 100AL2: Insulation | resource dependent | 3d | 2027-02-24 | 2027-02-26 | A20355 | 9d | 0d |
| A20581 |  | 100AL2: Insulation Inspection | resource dependent | 1d | 2027-03-01 | 2027-03-01 | A20580 | 9d | 0d |
| A20582 |  | 100AL2: Install Resilient Channel | resource dependent | 2d | 2027-03-01 | 2027-03-02 | A20581 FS-1d | 9d | 0d |
| A20583 |  | 100AL2: Pre-Hang QC Inspections | resource dependent | 5d | 2027-03-03 | 2027-03-09 | A20582 | 9d | 0d |
| A20584 |  | 100AL2: Stock Drywall | resource dependent | 2d | 2027-03-10 | 2027-03-11 | A20583 | 9d | 0d |
| A20585 |  | 100AL2: Hang Drywall | resource dependent | 4d | 2027-03-12 | 2027-03-17 | A20584, A20545 | 9d | 0d |
| A20586 |  | 100AL2: Post Hang QC Inspecitons | resource dependent | 5d | 2027-03-18 | 2027-03-24 | A20585 | 9d | 6d |
| A20587 |  | 100AL2: Finish Drywall | resource dependent | 7d | 2027-04-02 | 2027-04-12 | A20586, A20547 | 3d | 0d |
| A20588 |  | 100AL2: Prime Paint | resource dependent | 3d | 2027-04-13 | 2027-04-15 | A20587, A20548 | 19d | 0d |
| A20589 |  | 100AL2: Gypcrete Prep | resource dependent | 2d | 2027-04-16 | 2027-04-19 | A20588 | 19d | 0d |
| A20590 |  | 100AL2: Install Gypcrete | resource dependent | 2d | 2027-04-20 | 2027-04-21 | A20589 | 19d | 0d |
| A20591 |  | 100AL2: Install AHU/WH | resource dependent | 2d | 2027-04-22 | 2027-04-23 | A20590, A20551 | 61d | 1d |
| A20592 |  | 100AL2: Shower Surrounds | resource dependent | 3d | 2027-04-22 | 2027-04-26 | A20590, A20552 | 45d | 0d |
| A20593 |  | 100AL2: Vanities and Kitchen Casework | resource dependent | 6d | 2027-04-28 | 2027-05-05 | A20590 FS+4d, A20553 | 19d | 0d |
| A20594 |  | 100AL2: Install Countertops | resource dependent | 4d | 2027-05-06 | 2027-05-11 | A20593, A20554 | 44d | 0d |
| A20596 |  | 100AL2: Install Shower Doors | resource dependent | 5d | 2027-05-11 | 2027-05-17 | A20592 FS+10d, A20556 | 45d | 0d |
| A20595 |  | 100AL2: Kitchen Backsplash | resource dependent | 3d | 2027-05-12 | 2027-05-14 | A20594 | 46d | 2d |
| A20597 |  | 100AL2: Install Interior Doors & Trim | resource dependent | 5d | 2027-05-12 | 2027-05-18 | A20594, A20557 | 44d | 0d |
| A20598 |  | 100AL2: Drywall Touch-Up | resource dependent | 3d | 2027-05-19 | 2027-05-21 | A20591, A20595, A20597, A20596 | 44d | 0d |
| A20599 |  | 100AL2: First Finish Paint (Ceilings, Trim, Doors & Walls) | resource dependent | 5d | 2027-05-24 | 2027-05-28 | A20598, A20559 | 44d | 0d |
| A20600 |  | 100AL2: MEPS Ceiling Trim Out | resource dependent | 3d | 2027-06-01 | 2027-06-03 | A20599, A20560 | 44d | 0d |
| A20601 |  | 100AL2: Install Flooring | resource dependent | 5d | 2027-06-04 | 2027-06-10 | A20561, A20600 | 44d | 0d |
| A20602 |  | 100AL2: Minor Appliance Delivery | resource dependent | 2d | 2027-06-11 | 2027-06-14 | A20601 | 58d | 0d |
| A20603 |  | 100AL2: MEP Trim-Out DW, Disposal & Sink Install | resource dependent | 3d | 2027-06-15 | 2027-06-17 | A20602 | 58d | 0d |
| A20604 |  | 100AL2: Install Door Hardware | resource dependent | 3d | 2027-06-21 | 2027-06-23 | A20603 | 58d | 0d |
| A20605 |  | 100AL2: Unit Accessories | resource dependent | 2d | 2027-06-24 | 2027-06-25 | A20604, A20565 | 58d | 0d |
| A20606 |  | 100AL2: Major Appliance Delivery - Install Refrigerator, Microwave, W/D | resource dependent | 2d | 2027-06-24 | 2027-06-25 | A20604, A20566 | 58d | 0d |
| A20607 |  | 100AL2: Rough Clean | resource dependent | 4d | 2027-06-28 | 2027-07-01 | A20606, A20605, A20567 | 58d | 0d |

| ID | WBS | Activity | Type | Duration | Start | Finish | Predecessors | Total float | Free float |
| --- | --- | --- | --- | --- | --- | --- | --- | --- | --- |
|  | 199 | **Level 2 Common Areas** |  |  | 2027-03-12 | 2027-07-13 |  |  |  |
| A20609 |  | 100AL2: Stock Drywall | resource dependent | 1d | 2027-03-12 | 2027-03-12 | A20584 | 264d | 3d |
| A20610 |  | 100AL2: Hang/Finish Drywall | resource dependent | 4d | 2027-03-18 | 2027-03-23 | A20585, A20609 | 261d | 17d |
| A20611 |  | 100AL2: Prime Paint | resource dependent | 1d | 2027-04-16 | 2027-04-16 | A20588, A20610 | 244d | 22d |
| A20612 |  | 100AL2: Install Wood Base | resource dependent | 1d | 2027-05-19 | 2027-05-19 | A20597, A20611 | 222d | 7d |
| A20613 |  | 100AL2: First Finish Paint | resource dependent | 2d | 2027-06-01 | 2027-06-02 | A20599, A20612 | 215d | 1d |
| A20614 |  | 100AL2: MEP Device Trim-Out | resource dependent | 1d | 2027-06-04 | 2027-06-04 | A20613, A20600 | 214d | 4d |
| A20615 |  | 100AL2: Install Flooring | resource dependent | 1d | 2027-06-11 | 2027-06-11 | A20614, A20601 | 210d | 13d |
| A20616 |  | 100AL2: Rough Clean | resource dependent | 1d | 2027-07-02 | 2027-07-02 | A20615, A20607 | 197d | 0d |
| A20617 |  | 100AL2: JCC Punchlist | resource dependent | 5d | 2027-07-06 | 2027-07-12 | A20616 | 197d | 0d |
| A20618 |  | 100AL2: Final Clean | resource dependent | 1d | 2027-07-13 | 2027-07-13 | A20617 | 197d |  |
|  | 200 | **Level 1** |  |  | 2027-03-03 | 2027-07-21 |  |  |  |
|  | 201 | **Level 1 Residential Units** |  |  | 2027-03-03 | 2027-07-12 |  |  |  |
| A20620 |  | 100AL1: Insulation | resource dependent | 3d | 2027-03-03 | 2027-03-05 | A20357 | 11d | 0d |
| A20621 |  | 100AL1: Insulation Inspection | resource dependent | 1d | 2027-03-08 | 2027-03-08 | A20620 | 11d | 0d |
| A20622 |  | 100AL1: Install Resilient Channel | resource dependent | 2d | 2027-03-08 | 2027-03-09 | A20621 FS-1d | 11d | 0d |
| A20623 |  | 100AL1: Pre-Hang QC Inspections | resource dependent | 5d | 2027-03-10 | 2027-03-16 | A20622 | 11d | 0d |
| A20624 |  | 100AL1: Stock Drywall | resource dependent | 2d | 2027-03-17 | 2027-03-18 | A20623 | 11d | 0d |
| A20625 |  | 100AL1: Hang Drywall | resource dependent | 4d | 2027-03-19 | 2027-03-24 | A20585, A20624 | 11d | 0d |
| A20626 |  | 100AL1: Post Hang QC Inspecitons | resource dependent | 5d | 2027-03-25 | 2027-03-31 | A20625 | 11d | 8d |
| A20627 |  | 100AL1: Finish Drywall | resource dependent | 7d | 2027-04-13 | 2027-04-21 | A20587, A20626 | 3d | 0d |
| A20628 |  | 100AL1: Prime Paint | resource dependent | 3d | 2027-04-22 | 2027-04-26 | A20627, A20588 | 21d | 0d |
| A20631 |  | 100AL1: Install AHU/WH | resource dependent | 2d | 2027-04-27 | 2027-04-28 | A20628, A20591 | 63d | 9d |
| A20632 |  | 100AL1: Shower Surrounds | resource dependent | 3d | 2027-04-27 | 2027-04-29 | A20628, A20592 | 47d | 2d |
| A20633 |  | 100AL1: Vanities and Kitchen Casework | resource dependent | 6d | 2027-05-06 | 2027-05-13 | A20593 | 19d | 0d |
| A20634 |  | 100AL1: Install Countertops | resource dependent | 4d | 2027-05-14 | 2027-05-19 | A20633, A20594 | 43d | 0d |
| A20636 |  | 100AL1: Install Shower Doors | resource dependent | 5d | 2027-05-18 | 2027-05-24 | A20632 FS+10d, A20596 | 45d | 2d |
| A20635 |  | 100AL1: Kitchen Backsplash | resource dependent | 3d | 2027-05-20 | 2027-05-24 | A20634 | 45d | 2d |
| A20637 |  | 100AL1: Install Interior Doors & Trim | resource dependent | 5d | 2027-05-20 | 2027-05-26 | A20597, A20634 | 43d | 0d |
| A20638 |  | 100AL1: Drywall Touch-Up | resource dependent | 3d | 2027-05-27 | 2027-06-01 | A20631, A20635, A20637, A20636 | 43d | 0d |
| A20639 |  | 100AL1: First Finish Paint (Ceilings, Trim, Doors & Walls) | resource dependent | 5d | 2027-06-02 | 2027-06-08 | A20599, A20638 | 43d | 0d |
| A20640 |  | 100AL1: MEPS Ceiling Trim Out | resource dependent | 3d | 2027-06-09 | 2027-06-11 | A20639, A20600 | 43d | 0d |
| A20641 |  | 100AL1: Install Flooring | resource dependent | 5d | 2027-06-14 | 2027-06-21 | A20601, A20640 | 43d | 0d |
| A20642 |  | 100AL1: Minor Appliance Delivery | resource dependent | 2d | 2027-06-22 | 2027-06-23 | A20641 | 56d | 0d |
| A20643 |  | 100AL1: MEP Trim-Out DW, Disposal & Sink Install | resource dependent | 3d | 2027-06-24 | 2027-06-28 | A20642 | 56d | 0d |
| A20644 |  | 100AL1: Install Door Hardware | resource dependent | 3d | 2027-06-29 | 2027-07-01 | A20643 | 56d | 0d |
| A20645 |  | 100AL1: Unit Accessories | resource dependent | 2d | 2027-07-02 | 2027-07-06 | A20644, A20605 | 56d | 0d |
| A20646 |  | 100AL1: Major Appliance Delivery - Install Refrigerator, Microwave, W/D | resource dependent | 2d | 2027-07-02 | 2027-07-06 | A20644, A20606 | 56d | 0d |
| A20647 |  | 100AL1: Rough Clean | resource dependent | 4d | 2027-07-07 | 2027-07-12 | A20646, A20645, A20607 | 56d | 0d |

| ID | WBS | Activity | Type | Duration | Start | Finish | Predecessors | Total float | Free float |
| --- | --- | --- | --- | --- | --- | --- | --- | --- | --- |
|  | 202 | **Level 1 Common Areas** |  |  | 2027-03-19 | 2027-07-21 |  |  |  |
| A20649 |  | 100AL1: Stock Drywall | resource dependent | 1d | 2027-03-19 | 2027-03-19 | A20624 | 259d | 3d |
| A20650 |  | 100AL1: Hang/Finish Drywall | resource dependent | 4d | 2027-03-25 | 2027-03-30 | A20625, A20649 | 256d | 19d |
| A20651 |  | 100AL1: Prime Paint | resource dependent | 1d | 2027-04-27 | 2027-04-27 | A20628, A20650 | 237d | 21d |
| A20652 |  | 100AL1: Install Wood Base | resource dependent | 1d | 2027-05-27 | 2027-05-27 | A20651, A20637 | 216d | 7d |
| A20653 |  | 100AL1: First Finish Paint | resource dependent | 2d | 2027-06-09 | 2027-06-10 | A20652, A20639 | 209d | 1d |
| A20654 |  | 100AL1: MEP Device Trim-Out | resource dependent | 1d | 2027-06-14 | 2027-06-14 | A20653, A20640 | 208d | 4d |
| A20655 |  | 100AL1: Install Flooring | resource dependent | 1d | 2027-06-22 | 2027-06-22 | A20654, A20641 | 204d | 13d |
| A20656 |  | 100AL1: Rough Clean | resource dependent | 1d | 2027-07-13 | 2027-07-13 | A20655, A20647 | 191d | 0d |
| A20657 |  | 100AL1: JCC Punchlist | resource dependent | 5d | 2027-07-14 | 2027-07-20 | A20656 | 191d | 0d |
| A20658 |  | 100AL1: Final Clean | resource dependent | 1d | 2027-07-21 | 2027-07-21 | A20657 | 191d |  |
|  | 203 | **Final Inspections** |  |  | 2027-05-26 | 2027-07-09 |  |  |  |
| A21278 |  | 100AL5: Final Inspections | resource dependent | 3d | 2027-05-26 | 2027-05-28 | A20488 | 190d |  |
| A21279 |  | 100AL4: Final Inspections | resource dependent | 3d | 2027-06-07 | 2027-06-09 | A20523 | 183d |  |
| A21280 |  | 100AL3: Final Inspections | resource dependent | 3d | 2027-06-16 | 2027-06-21 | A20566 | 176d |  |
| A21281 |  | 100AL2: Final Inspections | resource dependent | 3d | 2027-06-28 | 2027-06-30 | A20606 | 169d |  |
| A21282 |  | 100AL1: Final Inspections | resource dependent | 3d | 2027-07-07 | 2027-07-09 | A20646 | 163d |  |
|  | 204 | **JCC/Owner Punch** |  |  | 2027-06-02 | 2027-08-09 |  |  |  |
|  | 205 | **JCC Punch** |  |  | 2027-06-02 | 2027-07-26 |  |  |  |
| A21303 |  | Level 5 JCC Punch | resource dependent | 10d | 2027-06-02 | 2027-06-15 | A20489 | 62d | 0d |
| A21304 |  | Level 4 JCC Punch | resource dependent | 10d | 2027-06-11 | 2027-06-25 | A20524, A21303 FS-4d | 61d | 0d |
| A21305 |  | Level 3 JCC Punch | resource dependent | 10d | 2027-06-23 | 2027-07-07 | A20567, A21304 FS-4d | 60d | 0d |
| A21306 |  | Level 2 JCC Punch | resource dependent | 10d | 2027-07-02 | 2027-07-16 | A20607, A21305 FS-4d | 59d | 0d |
| A21307 |  | Level 1 JCC Punch | resource dependent | 10d | 2027-07-13 | 2027-07-26 | A20647, A21306 FS-4d | 59d | 0d |

| ID | WBS | Activity | Type | Duration | Start | Finish | Predecessors | Total float | Free float |
| --- | --- | --- | --- | --- | --- | --- | --- | --- | --- |
|  | 206 | **Owner Punch** |  |  | 2027-06-16 | 2027-08-09 |  |  |  |
| A21308 |  | Level 5 Owner Punch | resource dependent | 10d | 2027-06-16 | 2027-06-30 | A21303 | 169d |  |
| A21309 |  | Level 4 Owner Punch | resource dependent | 10d | 2027-06-28 | 2027-07-12 | A21304 | 162d |  |
| A21310 |  | Level 3 Owner Punch | resource dependent | 10d | 2027-07-08 | 2027-07-21 | A21305 | 155d |  |
| A21311 |  | Level 2 Owner Punch | resource dependent | 10d | 2027-07-19 | 2027-07-30 | A21306 | 148d |  |
| A21312 |  | Level 1 Owner Punch | resource dependent | 10d | 2027-07-27 | 2027-08-09 | A21307 | 142d |  |
|  | 207 | **Building 100 B** |  |  | 2026-06-03 | 2027-09-28 |  |  |  |
|  | 130 | **Structure** |  |  | 2026-06-03 | 2027-02-05 |  |  |  |
|  | 131 | **Concrete** |  |  | 2026-06-03 | 2026-08-11 |  |  |  |
|  | WBS151 | **Elevator #3 Pit** |  |  | 2026-06-22 | 2026-07-02 |  |  |  |
| A68048 |  | ELEV3: Excavate | resource dependent | 1d | 2026-06-22 | 2026-06-22 | A21878 | 24d | 0d |
| A68058 |  | ELEV3: Reinforcement for Pit Slab | resource dependent | 1d | 2026-06-23 | 2026-06-23 | A68048 | 24d | 0d |
| A68068 |  | ELEV3: Inspection | resource dependent | 1d | 2026-06-23 | 2026-06-23 | A68058 FS-1d | 24d | 0d |
| A68078 |  | ELEV3: Pour Pit Slab | resource dependent | 1d | 2026-06-24 | 2026-06-24 | A68068 | 24d | 0d |
| A68088 |  | ELEV3: One Side Pit Walls | resource dependent | 1d | 2026-06-25 | 2026-06-25 | A68078 | 24d | 0d |
| A68098 |  | ELEV3: Reinforcement Pit Walls | resource dependent | 1d | 2026-06-26 | 2026-06-26 | A68088 | 24d | 0d |
| A68108 |  | ELEV3: Inspection Pit Walls | resource dependent | 1d | 2026-06-26 | 2026-06-26 | A68098 FS-1d | 24d | 0d |
| A68118 |  | ELEV3: Second Side Pit Walls | resource dependent | 1d | 2026-06-26 | 2026-06-26 | A68108 FS-1d | 24d | 0d |
| A68128 |  | ELEV3: Pour Pit Walls | resource dependent | 1d | 2026-06-29 | 2026-06-29 | A68118 | 24d | 0d |
| A68138 |  | ELEV3: Strip/Patch Tie Holes | resource dependent | 1d | 2026-06-30 | 2026-06-30 | A68128 | 24d | 0d |
| A68148 |  | ELEV3: Waterproof Pit Walls | resource dependent | 1d | 2026-07-01 | 2026-07-01 | A68138 | 24d | 0d |
| A68158 |  | ELEV3: Backfill Pit Walls | resource dependent | 1d | 2026-07-02 | 2026-07-02 | A68148 | 24d | 0d |
|  | 133 | **SOG 5** |  |  | 2026-06-03 | 2026-08-11 |  |  |  |
| A45238 |  | SOG5: Edge Forms | resource dependent | 6d | 2026-06-03 | 2026-06-10 | A19891 | 40d | 16d |
| A45248 |  | SOG5: Underground MEPs | resource dependent | 8d | 2026-07-06 | 2026-07-15 | A45238 FS-1d, A19889, A68158 | 24d | 0d |
| A45258 |  | SOG5: Excavate Thickened Slabs |  | 5d | 2026-07-16 | 2026-07-22 | A45248, A21878 | 24d | 0d |
| A45268 |  | SOG5: Backfill Stone Subgrade | resource dependent | 3d | 2026-07-23 | 2026-07-27 | A45258, A19890 | 24d | 0d |
| A48268 |  | SOG5: Install Vapor Barrier |  | 2d | 2026-07-28 | 2026-07-29 | A45268, A22438 | 24d | 0d |
| A45278 |  | SOG5: Rebar / Inspect | resource dependent | 3d | 2026-07-30 | 2026-08-03 | A45268, A48268, A19892 | 24d | 0d |
| A45288 |  | SOG5: Pour SOG | resource dependent | 1d | 2026-08-04 | 2026-08-04 | A45278 | 24d | 0d |
| A45298 |  | SOG5: Strip forms | resource dependent | 5d | 2026-08-05 | 2026-08-11 | A45288 | 428d |  |

| ID | WBS | Activity | Type | Duration | Start | Finish | Predecessors | Total float | Free float | Constraint |
| --- | --- | --- | --- | --- | --- | --- | --- | --- | --- | --- |
|  | 134 | **CMU Shafts** |  |  | 2026-08-12 | 2026-09-01 |  |  |  |  |
| A44708 |  | 100B: Stair B | resource dependent | 15d | 2026-08-12 | 2026-09-01 | A45288, A19214 | 19d | 0d |  |
|  | WBS231 | **Structural Steel** |  |  | 2026-09-02 | 2026-12-17 |  |  |  |  |
| A68568 |  | Stair Pans & Risers |  | 8d | 2026-09-02 | 2026-09-14 | A44708 | 405d |  |  |
|  | WBS241 | **Bridge 100A to 100B** |  |  | 2026-09-02 | 2026-12-17 |  |  |  |  |
| A68578 |  | Bridge HSS Column_L1-L2 |  | 1d | 2026-09-02 | 2026-09-02 | A44728 SS | 410d | 60d |  |
| A68588 |  | Bridge HSS Column_L3-L4 |  | 1d | 2026-12-01 | 2026-12-01 | A68578, A44808 SS | 350d | 11d |  |
| A68598 |  | Bridge HSS Column_L5-Roof |  | 1d | 2026-12-17 | 2026-12-17 | A44888 SS, A68588 | 339d |  |  |
|  | 135 | **Wood Framing** |  |  | 2026-09-02 | 2027-01-12 |  |  |  |  |
|  | 136 | **Level 1 (14,000 SF)** |  |  | 2026-09-02 | 2026-11-18 |  |  |  |  |
| A44728 |  | 100BL1: Layout | resource dependent | 2d | 2026-09-02 | 2026-09-03 | A44708 | 49d | 0d | as late as possible |
| A44738 |  | 100BL1: Wall Framing | resource dependent | 3d | 2026-11-12 | 2026-11-16 | A44728 FS-1d, A19670 | 0d |  |  |
| A44748 |  | 100BL1: Floor Trusses | resource dependent | 2d | 2026-11-16 | 2026-11-17 | A44738 FS-1d | 0d |  |  |
| A44758 |  | 100BL1: Decking | resource dependent | 2d | 2026-11-17 | 2026-11-18 | A44748 FS-1d | 0d |  |  |
|  | 137 | **Level 2 (14,000 SF)** |  |  | 2026-11-19 | 2026-11-30 |  |  |  |  |
| A44768 |  | 100BL2: Layout | resource dependent | 1d | 2026-11-19 | 2026-11-19 | A44758 | 0d |  |  |
| A44778 |  | 100BL2: Wall Framing | resource dependent | 3d | 2026-11-20 | 2026-11-24 | A44768 | 0d |  |  |
| A44788 |  | 100BL2: Floor Trusses | resource dependent | 2d | 2026-11-24 | 2026-11-25 | A44778 FS-1d | 0d |  |  |
| A44798 |  | 100BL2: Decking | resource dependent | 2d | 2026-11-25 | 2026-11-30 | A44788 FS-1d | 0d |  |  |
|  | 138 | **Level 3 (14,000 SF)** |  |  | 2026-12-01 | 2026-12-08 |  |  |  |  |
| A44808 |  | 100BL3: Layout | resource dependent | 1d | 2026-12-01 | 2026-12-01 | A44798 | 0d |  |  |
| A44818 |  | 100BL3: Wall Framing | resource dependent | 3d | 2026-12-02 | 2026-12-04 | A44808 | 0d |  |  |
| A44828 |  | 100BL3: Floor Trusses | resource dependent | 2d | 2026-12-04 | 2026-12-07 | A44818 FS-1d | 0d |  |  |
| A44838 |  | 100BL3: Decking | resource dependent | 2d | 2026-12-07 | 2026-12-08 | A44828 FS-1d | 0d |  |  |

| ID | WBS | Activity | Type | Duration | Start | Finish | Predecessors | Total float | Free float |
| --- | --- | --- | --- | --- | --- | --- | --- | --- | --- |
|  | 139 | **Level 4 (14,000 SF)** |  |  | 2026-12-09 | 2026-12-16 |  |  |  |
| A44848 |  | 100BL4: Layout | resource dependent | 1d | 2026-12-09 | 2026-12-09 | A44838 | 0d |  |
| A44858 |  | 100BL4: Wall Framing | resource dependent | 3d | 2026-12-10 | 2026-12-14 | A44848 | 0d |  |
| A44868 |  | 100BL4: Floor Trusses | resource dependent | 2d | 2026-12-14 | 2026-12-15 | A44858 FS-1d | 0d |  |
| A44878 |  | 100BL4: Decking | resource dependent | 2d | 2026-12-15 | 2026-12-16 | A44868 FS-1d | 0d |  |
|  | 140 | **Level 5 (14,000 SF)** |  |  | 2026-12-17 | 2027-01-12 |  |  |  |
| A44888 |  | 100BL5: Layout | resource dependent | 1d | 2026-12-17 | 2026-12-17 | A44878 | 0d |  |
| A44898 |  | 100BL5: Wall Framing | resource dependent | 3d | 2026-12-18 | 2026-12-22 | A44888 | 0d |  |
| A44908 |  | 100BL5: Roof Trusses | resource dependent | 4d | 2026-12-22 | 2026-12-29 | A44898 FS-1d | 0d |  |
| A44918 |  | 100BL5: Roof Decking | resource dependent | 3d | 2026-12-28 | 2026-12-30 | A44908 FS-2d | 8d | 0d |
| A44928 |  | 100BL5: Build Out Parapets | resource dependent | 3d | 2026-12-30 | 2027-01-04 | A44918 FS-1d | 8d | 0d |
| A44948 |  | 100BL5: MEP Roof Penetrations/Davits | resource dependent | 2d | 2026-12-31 | 2027-01-04 | A44918 | 330d |  |
| A48328 |  | 100BL5: Roof Deck QC Inspection |  | 5d | 2027-01-05 | 2027-01-11 | A44928 | 8d | 0d |
| A44938 |  | 100BL5: Roof Decking City Inspection | resource dependent | 1d | 2027-01-12 | 2027-01-12 | A44928, A48328 | 8d | 0d |
|  | 141 | **Exterior Sheathing** |  |  | 2026-12-07 | 2027-01-11 |  |  |  |
| A44958 |  | 100BL1: Sheathing | resource dependent | 3d | 2026-12-07 | 2026-12-09 | A44818 | 335d | 0d |
| A44968 |  | 100BL1: Sheathing Inspection | resource dependent | 2d | 2026-12-10 | 2026-12-11 | A44958 | 335d | 0d |
| A44978 |  | 100BL2: Sheathing | resource dependent | 3d | 2026-12-15 | 2026-12-17 | A44858 | 329d | 0d |
| A44988 |  | 100BL2: Sheathing Inspection | resource dependent | 2d | 2026-12-18 | 2026-12-21 | A44978 | 329d | 0d |
| A44998 |  | 100BL3: Sheathing | resource dependent | 3d | 2026-12-23 | 2026-12-29 | A44898 | 224d | 0d |
| A45008 |  | 100BL3: Sheathing Inspection | resource dependent | 2d | 2026-12-30 | 2026-12-31 | A44998 | 323d | 0d |
| A45018 |  | 100BL4: Sheathing | resource dependent | 3d | 2026-12-30 | 2027-01-04 | A44998 | 224d | 0d |
| A45028 |  | 100BL4: Sheathing Inspection | resource dependent | 2d | 2027-01-05 | 2027-01-06 | A45018 | 320d | 0d |
| A45038 |  | 100BL5: Sheathing | resource dependent | 3d | 2027-01-05 | 2027-01-07 | A45018 | 224d | 0d |
| A45048 |  | 100BL5: Sheathing Inspection | resource dependent | 2d | 2027-01-08 | 2027-01-11 | A45038 | 224d | 0d |

| ID | WBS | Activity | Type | Duration | Start | Finish | Predecessors | Total float | Free float |
| --- | --- | --- | --- | --- | --- | --- | --- | --- | --- |
|  | 142 | **Bracing Removal** |  |  | 2026-12-14 | 2027-01-12 |  |  |  |
| A45058 |  | 100BL1: Remove Bracing | resource dependent | 1d | 2026-12-14 | 2026-12-14 | A44968 | 335d | 0d |
| A45068 |  | 100BL2: Remove Bracing | resource dependent | 1d | 2026-12-22 | 2026-12-22 | A44988 | 329d | 0d |
| A45078 |  | 100BL3: Remove Bracing | resource dependent | 1d | 2027-01-04 | 2027-01-04 | A45008 | 323d | 0d |
| A45088 |  | 100BL4: Remove Bracing | resource dependent | 1d | 2027-01-07 | 2027-01-07 | A45028 | 320d | 0d |
| A45098 |  | 100BL5: Remove Bracing | resource dependent | 1d | 2027-01-12 | 2027-01-12 | A45048 | 306d | 0d |
|  | 143 | **Framing Trade Partner QC** |  |  | 2026-12-15 | 2027-01-15 |  |  |  |
| A45108 |  | 100BL1: Framing QC | resource dependent | 3d | 2026-12-15 | 2026-12-17 | A45058 | 335d | 0d |
| A45118 |  | 100BL2: Framing QC | resource dependent | 3d | 2026-12-23 | 2026-12-29 | A45068 | 329d | 0d |
| A45128 |  | 100BL3: Framing QC | resource dependent | 3d | 2027-01-05 | 2027-01-07 | A45078 | 323d | 0d |
| A45138 |  | 100BL4: Framing QC | resource dependent | 3d | 2027-01-08 | 2027-01-12 | A45088 | 320d | 0d |
| A45148 |  | 100BL5: Framing QC | resource dependent | 3d | 2027-01-13 | 2027-01-15 | A45098 | 306d | 0d |
|  | 144 | **Framing JCC Structural Punch** |  |  | 2026-12-18 | 2027-01-21 |  |  |  |
| A45158 |  | 100BL1: JCC Structural Punch | resource dependent | 4d | 2026-12-18 | 2026-12-23 | A45108 | 335d |  |
| A45168 |  | 100BL2: JCC Structural Punch | resource dependent | 4d | 2026-12-30 | 2027-01-05 | A45118 | 329d |  |
| A45178 |  | 100BL3: JCC Structural Punch | resource dependent | 4d | 2027-01-08 | 2027-01-13 | A45128 | 323d |  |
| A45188 |  | 100BL4: JCC Structural Punch | resource dependent | 4d | 2027-01-13 | 2027-01-18 | A45138 | 320d |  |
| A45198 |  | 100BL5: JCC Structural Punch | resource dependent | 4d | 2027-01-18 | 2027-01-21 | A45148 | 306d | 0d |
|  | 145 | **Structural Engineer Punch** |  |  | 2027-01-22 | 2027-02-05 |  |  |  |
| A45208 |  | 100B: EOR Create/Issue Structural Punch | resource dependent | 5d | 2027-01-22 | 2027-01-28 | A45198 | 306d | 0d |
| A45218 |  | 100B: Trade Partner Complete Punch | resource dependent | 5d | 2027-01-29 | 2027-02-04 | A45208 | 306d | 0d |
| A45228 |  | 100B: EOR Accept Punch | resource dependent | 1d | 2027-02-05 | 2027-02-05 | A45218 | 306d |  |
|  | 146 | **Building Dry-In** |  |  | 2027-01-12 | 2027-06-02 |  |  |  |
|  | 147 | **Roofing (16,000 SF)** |  |  | 2027-01-13 | 2027-02-04 |  |  |  |
| A44718 |  | 100B: Roof Dry-In | resource dependent | 10d | 2027-01-13 | 2027-01-26 | A44938 | 8d | 0d |
| A45308 |  | 100B: Roof Detail Work | resource dependent | 5d | 2027-01-27 | 2027-02-02 | A44718 | 8d | 0d |
| A48338 |  | 100B: TPO Roof QC Inspection |  | 3d | 2027-02-02 | 2027-02-04 | A45308 FS-1d | 8d | 0d |

| ID | WBS | Activity | Type | Duration | Start | Finish | Predecessors | Total float | Free float |
| --- | --- | --- | --- | --- | --- | --- | --- | --- | --- |
|  | 148 | **Exterior Skin** |  |  | 2027-01-12 | 2027-06-02 |  |  |  |
|  | 149 | **Tyvek & Windows** |  |  | 2027-01-12 | 2027-02-10 |  |  |  |
|  | 150 | **Tyvek** |  |  | 2027-01-12 | 2027-02-02 |  |  |  |
| A48078 |  | TVK: Elevation A (4,400 SF) | resource dependent | 2d | 2027-01-12 | 2027-01-13 | A45048 | 224d | 0d |
| A48088 |  | TVK: Elevation B (9,300 SF) | resource dependent | 5d | 2027-01-14 | 2027-01-20 | A48078 | 224d | 0d |
| A48098 |  | TVK: Elevation C (4,000 SF) | resource dependent | 2d | 2027-01-21 | 2027-01-22 | A48088 | 309d | 0d |
| A48108 |  | TVK: Elevation D (9,700 SF) | resource dependent | 7d | 2027-01-25 | 2027-02-02 | A48098 | 309d |  |
|  | 151 | **Windows/Doors** |  |  | 2027-01-21 | 2027-02-10 |  |  |  |
| A48118 |  | WN/DR: Elevation A (10) | resource dependent | 1d | 2027-01-21 | 2027-01-21 | A48078, A48088 | 224d | 0d |
| A48128 |  | WN/DR: Elevation B (104) | resource dependent | 7d | 2027-01-22 | 2027-02-01 | A48118 | 226d | 0d |
| A48138 |  | WN/DR: Elevation D (104) | resource dependent | 7d | 2027-02-02 | 2027-02-10 | A48128 | 303d |  |
|  | 152 | **Skin** |  |  | 2027-01-22 | 2027-06-02 |  |  |  |
|  | 153 | **Elevation A** |  |  | 2027-01-22 | 2027-02-19 |  |  |  |
| A48148 |  | ELA: Brick (TBD SF) | resource dependent | 9d | 2027-01-22 | 2027-02-03 | A48118 | 224d | 0d |
| A48158 |  | ELA: Siding (TBD SF) | resource dependent | 7d | 2027-02-04 | 2027-02-12 | A48148 | 229d | 0d |
| A48168 |  | ELA: Paint | resource dependent | 5d | 2027-02-15 | 2027-02-19 | A48158 | 278d | 24d |
|  | 154 | **Elevation B** |  |  | 2027-02-04 | 2027-04-06 |  |  |  |
| A48178 |  | ELB: Brick (4,300SF) | resource dependent | 12d | 2027-02-04 | 2027-02-19 | A48128, A48148 | 224d | 0d |
| A48188 |  | ELB: Siding (7,700 SF) | resource dependent | 24d | 2027-02-22 | 2027-03-25 | A48158, A48178 | 224d | 0d |
| A48198 |  | ELB: Paint | resource dependent | 8d | 2027-03-26 | 2027-04-06 | A48168, A48188 | 254d | 0d |
|  | 155 | **Elevation C** |  |  | 2027-02-22 | 2027-04-08 |  |  |  |
| A48208 |  | ELC: Brick (TBD) | resource dependent | 15d | 2027-02-22 | 2027-03-12 | A48178 | 233d | 9d |
| A48218 |  | ELC: Siding (TBD) | resource dependent | 7d | 2027-03-26 | 2027-04-05 | A48188, A48208 | 224d | 0d |
| A48228 |  | ELC: Paint | resource dependent | 2d | 2027-04-07 | 2027-04-08 | A48198, A48218 | 254d | 30d |

| ID | WBS | Activity | Type | Duration | Start | Finish | Predecessors | Planned finish | Total float | Free float | Constraint | HTP |
| --- | --- | --- | --- | --- | --- | --- | --- | --- | --- | --- | --- | --- |
|  | 156 | **Elevation D** |  |  | 2027-04-06 | 2027-06-02 |  |  |  |  |  |  |
| A48248 |  | ELD: Siding (10,400 SF) | resource dependent | 33d | 2027-04-06 | 2027-05-20 | A48218 |  | 224d | 0d |  |  |
| A48258 |  | ELD: Paint | resource dependent | 8d | 2027-05-21 | 2027-06-02 | A48228, A48248 |  | 224d |  |  |  |
|  | WBS251 | **Elevators** |  |  | 2027-03-02 | 2027-06-11 |  |  |  |  |  |  |
| A69068 |  | Shafts Dry | milestone | 0d | 2027-03-02 | 2027-03-02 | A45308, A68788 | 2027-03-02 | 167d | 0d |  |  |
|  | 3.4.2 | **Elevators** |  |  | 2027-03-03 | 2027-06-11 |  |  |  |  |  |  |
|  | 3.4.2.1 | **Elevator #3** |  |  | 2027-03-03 | 2027-06-11 |  |  |  |  |  |  |
|  | WBS2171 | **Install Hoist Beams and Divider Steel** |  |  | 2027-03-03 | 2027-03-10 |  |  |  |  |  |  |
| A69208 |  | Install Divider beams |  | 5d | 2027-03-03 | 2027-03-09 | A69068, A69228 FS-3d |  | 167d | 0d |  |  |
| A69228 |  | Install scaffold/swing stage |  | 3d | 2027-03-03 | 2027-03-05 | A69068 |  | 167d | 0d |  |  |
| A69218 |  | Install Hoist Beam |  | 1d | 2027-03-09 | 2027-03-09 | A69208 FF |  | 167d | 0d |  |  |
| A69238 |  | Tear down scaffold |  | 1d | 2027-03-10 | 2027-03-10 | A69218 FF+1d |  | 167d | 0d |  |  |
|  | 3.4.2.1.1 | **Prepare Shaft** |  |  | 2027-03-11 | 2027-03-18 |  |  |  |  |  |  |
| A69078 |  | Install Sump Pit Cover & Ladder |  | 2d | 2027-03-11 | 2027-03-12 | A69238 |  | 167d | 0d |  |  |
| A69088 |  | Install 15 Amp Circuit with Lockable Disconnect for Temp |  | 1d | 2027-03-15 | 2027-03-15 | A69078 |  | 167d | 0d |  |  |
| A69168 |  | Install Pit Lighting |  | 1d | 2027-03-15 | 2027-03-15 | A69088 SS, A69238 |  | 167d | 0d |  | New Code Value-10 |
| A69178 |  | Verify All Penetrations are Properly Fire Caulked |  | 1d | 2027-03-16 | 2027-03-16 | A69168 |  | 167d | 0d |  |  |
| A69188 |  | Clean Pit |  | 1d | 2027-03-17 | 2027-03-17 | A69178 |  | 167d | 0d |  |  |
| A69198 |  | Final Inspection of Shaft for Elevator Install |  | 1d | 2027-03-18 | 2027-03-18 | A69188 |  | 167d | 0d |  |  |
|  | 3.4.2.1.2 | **Install Elevators** |  |  | 2027-03-19 | 2027-06-11 |  |  |  |  |  |  |
| A69158 |  | Install Elevators #3 |  | 25d | 2027-03-19 | 2027-04-22 | A69198, A69238 |  | 167d | 0d | start on or after 2024-08-22 |  |
| A69148 |  | CMU Infill Elevators #3 to JCC |  | 5d | 2027-04-23 | 2027-04-29 | A69158 SS+25d |  | 217d | 0d |  |  |
| A69138 |  | Turnover Elevators #3 |  | 1d | 2027-04-30 | 2027-04-30 | A69148, A69158 |  | 217d | 0d |  |  |
| A69128 |  | Frame/Hang Front Walls at Elevator Doors |  | 10d | 2027-05-03 | 2027-05-14 | A46248, A69138 |  | 217d | 0d |  |  |
| A69118 |  | Finish Front Walls at Elevator Doors |  | 10d | 2027-05-17 | 2027-05-28 | A69128 |  | 217d | 0d |  |  |
| A69108 |  | Paint - Prime Front Walls at Elevator Doors |  | 5d | 2027-06-01 | 2027-06-07 | A69118 |  | 217d | 0d |  | New Code Value-1 |
| A69098 |  | Paint - 1st/2nd Coat Front Walls at Elevator Doors |  | 4d | 2027-06-08 | 2027-06-11 | A69108 |  | 217d |  |  | New Code Value-1 |

| ID | WBS | Activity | Type | Duration | Start | Finish | Predecessors | Total float | Free float |
| --- | --- | --- | --- | --- | --- | --- | --- | --- | --- |
|  | 157 | **Building Interiors** |  |  | 2026-12-01 | 2027-09-28 |  |  |  |
|  | 158 | **MEPF Non-Weather Sensitive Rough-In** |  |  | 2026-12-01 | 2027-01-21 |  |  |  |
|  | 159 | **Level 1 MEPF NWSR** |  |  | 2026-12-01 | 2026-12-16 |  |  |  |
| A45318 |  | 100BL1NWSR: Plastic Rough & Valves | resource dependent | 3d | 2026-12-01 | 2026-12-03 | A44798, A20023 | 283d | 0d |
| A45328 |  | 100BL1NWSR: Electrical Conduit, Boxes & Unit Feeders | resource dependent | 3d | 2026-12-04 | 2026-12-08 | A45318, A20024 | 283d | 0d |
| A45338 |  | 100BL1NWSR: Sprinkler Mains | resource dependent | 3d | 2026-12-09 | 2026-12-11 | A45328, A20025 | 283d | 0d |
| A45348 |  | 100BL1NWSR: Mechanical Hard Pipe & Boots | resource dependent | 3d | 2026-12-14 | 2026-12-16 | A45338, A20026 | 283d | 3d |
|  | 160 | **Level 2 MEPF NWSR** |  |  | 2026-12-09 | 2026-12-28 |  |  |  |
| A45358 |  | 100BL1NWSR: Plastic Rough & Valves | resource dependent | 3d | 2026-12-09 | 2026-12-11 | A45318, A44838 | 280d | 0d |
| A45368 |  | 100BL1NWSR: Electrical Conduit, Boxes & Unit Feeders | resource dependent | 3d | 2026-12-14 | 2026-12-16 | A45328, A45358 | 280d | 0d |
| A45378 |  | 100BL1NWSR: Sprinkler Mains | resource dependent | 3d | 2026-12-17 | 2026-12-21 | A45338, A45368 | 280d | 0d |
| A45388 |  | 100BL1NWSR: Mechanical Hard Pipe & Boots | resource dependent | 3d | 2026-12-22 | 2026-12-28 | A45348, A45378 | 280d | 3d |
|  | 161 | **Level 3 MEPF NWSR** |  |  | 2026-12-17 | 2027-01-06 |  |  |  |
| A45398 |  | 100BL1NWSR: Plastic Rough & Valves | resource dependent | 3d | 2026-12-17 | 2026-12-21 | A45358, A44878 | 277d | 0d |
| A45408 |  | 100BL1NWSR: Electrical Conduit, Boxes & Unit Feeders | resource dependent | 3d | 2026-12-22 | 2026-12-28 | A45368, A45398 | 277d | 0d |
| A45418 |  | 100BL1NWSR: Sprinkler Mains | resource dependent | 3d | 2026-12-29 | 2026-12-31 | A45378, A45408 | 277d | 0d |
| A45428 |  | 100BL1NWSR: Mechanical Hard Pipe & Boots | resource dependent | 3d | 2027-01-04 | 2027-01-06 | A45388, A45418 | 277d | 5d |
|  | 162 | **Level 4 MEPF NWSR** |  |  | 2026-12-31 | 2027-01-18 |  |  |  |
| A45438 |  | 100BL1NWSR: Plastic Rough & Valves | resource dependent | 3d | 2026-12-31 | 2027-01-05 | A45398, A44918 | 272d | 0d |
| A45448 |  | 100BL1NWSR: Electrical Conduit, Boxes & Unit Feeders | resource dependent | 3d | 2027-01-06 | 2027-01-08 | A45408, A45438 | 272d | 0d |
| A45458 |  | 100BL1NWSR: Sprinkler Mains | resource dependent | 3d | 2027-01-11 | 2027-01-13 | A45418, A45448 | 272d | 0d |
| A45468 |  | 100BL1NWSR: Mechanical Hard Pipe & Boots | resource dependent | 3d | 2027-01-14 | 2027-01-18 | A45428, A45458 | 272d | 0d |
|  | 163 | **Level 5 MEPF NWSR** |  |  | 2027-01-06 | 2027-01-21 |  |  |  |
| A45478 |  | 100BL1NWSR: Plastic Rough & Valves | resource dependent | 3d | 2027-01-06 | 2027-01-08 | A45438 | 272d | 0d |
| A45488 |  | 100BL1NWSR: Electrical Conduit, Boxes & Unit Feeders | resource dependent | 3d | 2027-01-11 | 2027-01-13 | A45448, A45478 | 272d | 0d |
| A45498 |  | 100BL1NWSR: Sprinkler Mains | resource dependent | 3d | 2027-01-14 | 2027-01-18 | A45458, A45488 | 272d | 0d |
| A45508 |  | 100BL1NWSR: Mechanical Hard Pipe & Boots | resource dependent | 3d | 2027-01-19 | 2027-01-21 | A45468, A45498 | 272d | 4d |

| ID | WBS | Activity | Type | Duration | Start | Finish | Predecessors | Total float | Free float |
| --- | --- | --- | --- | --- | --- | --- | --- | --- | --- |
|  | 164 | **Weather Sensitive Rough-In (Top Down)** |  |  | 2027-02-05 | 2027-04-06 |  |  |  |
| A45518 |  | 100B: Install Insulation For Pre-Rock | resource dependent | 2d | 2027-02-05 | 2027-02-08 | A48338, A44718 | 8d | 0d |
| A45528 |  | 100B: Prehang Shafts, Tubs and Mechanical Rooms | resource dependent | 3d | 2027-02-09 | 2027-02-11 | A45518 | 8d | 0d |
| A45538 |  | 100B: Pre-Pour Gypcrete | resource dependent | 2d | 2027-02-12 | 2027-02-15 | A45528 | 8d | 0d |
|  | 165 | **Install Tubs/Shower Pans** |  |  | 2027-02-16 | 2027-02-22 |  |  |  |
| A45548 |  | 100BL1: Tubs/Shower Pans | resource dependent | 1d | 2027-02-16 | 2027-02-16 | A45538 | 8d | 0d |
| A45558 |  | 100BL2: Tubs/Shower Pans | resource dependent | 1d | 2027-02-17 | 2027-02-17 | A45548 | 295d | 0d |
| A45568 |  | 100BL3: Tubs/Shower Pans | resource dependent | 1d | 2027-02-18 | 2027-02-18 | A45558 | 295d | 0d |
| A45578 |  | 100BL4: Tubs/Shower Pans | resource dependent | 1d | 2027-02-19 | 2027-02-19 | A45568 | 295d | 0d |
| A45588 |  | 100BL5: Tubs/Shower Pans | resource dependent | 1d | 2027-02-22 | 2027-02-22 | A45578 | 295d |  |
|  | 166 | **Level 5 (11 Units)** |  |  | 2027-02-17 | 2027-03-02 |  |  |  |
|  | 167 | **L5 MEP WSR Units** |  |  | 2027-02-17 | 2027-02-24 |  |  |  |
| A45598 |  | 100BL5WSR: Mechanical Duct & Damper Install | resource dependent | 3d | 2027-02-17 | 2027-02-19 | A45548, A20160 | 8d | 0d |
| A45608 |  | 100BL5WSR: Pull Branch Circuits/Fire Caulk | resource dependent | 3d | 2027-02-22 | 2027-02-24 | A45598, A20161 | 8d | 0d |
|  | 168 | **L5 MEP WSR Corridor** |  |  | 2027-02-22 | 2027-03-02 |  |  |  |
| A45618 |  | 100BL5WSR: Corridor Mechanical Duct | resource dependent | 3d | 2027-02-22 | 2027-02-24 | A45598 | 8d | 0d |
| A45628 |  | 100BL5WSR: Corridor Circuitry | resource dependent | 2d | 2027-02-25 | 2027-02-26 | A45608, A45618 | 8d | 0d |
| A45638 |  | 100BL5WSR: Corridor LV/ERRC/FA | resource dependent | 2d | 2027-02-25 | 2027-02-26 | A45608, A45628 FS-2d | 8d | 0d |
| A45648 |  | 100BL5WSR: Service Provider Rough | resource dependent | 2d | 2027-03-01 | 2027-03-02 | A45638 | 8d | 0d |
|  | 169 | **Level 4 (11 Units)** |  |  | 2027-02-22 | 2027-03-05 |  |  |  |
|  | 170 | **L4 MEP WSR Units** |  |  | 2027-02-22 | 2027-03-01 |  |  |  |
| A45658 |  | 100BL4WSR: Mechanical Duct & Damper Install | resource dependent | 3d | 2027-02-22 | 2027-02-24 | A45598 | 12d | 0d |
| A45668 |  | 100BL4WSR: Pull Branch Circuits/Fire Caulk | resource dependent | 3d | 2027-02-25 | 2027-03-01 | A45658, A45608 | 12d | 0d |
|  | 171 | **L4 MEP WSR Corridor** |  |  | 2027-02-25 | 2027-03-05 |  |  |  |
| A45678 |  | 100BL4WSR: Corridor Mechanical Duct | resource dependent | 3d | 2027-02-25 | 2027-03-01 | A45658 | 12d | 0d |
| A45688 |  | 100BL4WSR: Corridor Circuitry | resource dependent | 2d | 2027-03-02 | 2027-03-03 | A45668, A45678 | 12d | 0d |
| A45698 |  | 100BL4WSR: Corridor LV/ERRC/FA | resource dependent | 2d | 2027-03-02 | 2027-03-03 | A45668, A45688 FS-2d | 12d | 0d |
| A45708 |  | 100BL4WSR: Service Provider Rough | resource dependent | 2d | 2027-03-04 | 2027-03-05 | A45698 | 12d | 2d |

| ID | WBS | Activity | Type | Duration | Start | Finish | Predecessors | Total float | Free float |
| --- | --- | --- | --- | --- | --- | --- | --- | --- | --- |
|  | 172 | **Level 3 (11 Units)** |  |  | 2027-02-25 | 2027-03-10 |  |  |  |
|  | 173 | **L3 MEP WSR Units** |  |  | 2027-02-25 | 2027-03-04 |  |  |  |
| A45718 |  | 100BL3WSR: Mechanical Duct & Damper Install | resource dependent | 3d | 2027-02-25 | 2027-03-01 | A45658 | 16d | 0d |
| A45728 |  | 100BL3WSR: Pull Branch Circuits/Fire Caulk | resource dependent | 3d | 2027-03-02 | 2027-03-04 | A45668, A45718 | 16d | 0d |
|  | 174 | **L3 MEP WSR Corridor** |  |  | 2027-03-02 | 2027-03-10 |  |  |  |
| A45738 |  | 100BL3WSR: Corridor Mechanical Duct | resource dependent | 3d | 2027-03-02 | 2027-03-04 | A45718 | 16d | 0d |
| A45748 |  | 100BL3WSR: Corridor Circuitry | resource dependent | 2d | 2027-03-05 | 2027-03-08 | A45728, A45738 | 16d | 0d |
| A45758 |  | 100BL3WSR: Corridor LV/ERRC/FA | resource dependent | 2d | 2027-03-05 | 2027-03-08 | A45728, A45748 FS-2d | 16d | 0d |
| A45768 |  | 100BL3WSR: Service Provider Rough | resource dependent | 2d | 2027-03-09 | 2027-03-10 | A45758 | 16d | 4d |
|  | 175 | **Level 2 (11 Units)** |  |  | 2027-03-02 | 2027-03-15 |  |  |  |
|  | 176 | **L2 MEP WSR Units** |  |  | 2027-03-02 | 2027-03-09 |  |  |  |
| A45778 |  | 100BL2WSR: Mechanical Duct & Damper Install | resource dependent | 3d | 2027-03-02 | 2027-03-04 | A45718 | 20d | 0d |
| A45788 |  | 100BL2WSR: Pull Branch Circuits/Fire Caulk | resource dependent | 3d | 2027-03-05 | 2027-03-09 | A45728, A45778 | 20d | 0d |
|  | 177 | **L2 MEP WSR Corridor** |  |  | 2027-03-05 | 2027-03-15 |  |  |  |
| A45798 |  | 100BL2WSR: Corridor Mechanical Duct | resource dependent | 3d | 2027-03-05 | 2027-03-09 | A45778 | 20d | 0d |
| A45808 |  | 100BL2WSR: Corridor Circuitry | resource dependent | 2d | 2027-03-10 | 2027-03-11 | A45788, A45798 | 20d | 0d |
| A45818 |  | 100BL2WSR: Corridor LV/ERRC/FA | resource dependent | 2d | 2027-03-10 | 2027-03-11 | A45788, A45808 FS-2d | 20d | 0d |
| A45828 |  | 100BL2WSR: Service Provider Rough | resource dependent | 2d | 2027-03-12 | 2027-03-15 | A45818 | 20d | 6d |
|  | 178 | **Level 1 (11 Units)** |  |  | 2027-03-05 | 2027-03-18 |  |  |  |
|  | 179 | **L1 MEP WSR Units** |  |  | 2027-03-05 | 2027-03-12 |  |  |  |
| A45838 |  | 100BL1WSR: Mechanical Duct & Damper Install | resource dependent | 3d | 2027-03-05 | 2027-03-09 | A45778 | 24d | 0d |
| A45848 |  | 100BL1WSR: Pull Branch Circuits/Fire Caulk | resource dependent | 3d | 2027-03-10 | 2027-03-12 | A45788, A45838 | 24d | 0d |
|  | 180 | **L1 MEP WSR Corridor** |  |  | 2027-03-10 | 2027-03-18 |  |  |  |
| A45858 |  | 100BL1WSR: Corridor Mechanical Duct | resource dependent | 3d | 2027-03-10 | 2027-03-12 | A45838 | 24d | 0d |
| A45868 |  | 100BL1WSR: Corridor Circuitry | resource dependent | 2d | 2027-03-15 | 2027-03-16 | A45848, A45858 | 24d | 0d |
| A45878 |  | 100BL1WSR: Corridor LV/ERRC/FA | resource dependent | 2d | 2027-03-15 | 2027-03-16 | A45848, A45868 FS-2d | 24d | 0d |
| A45888 |  | 100BL1WSR: Service Provider Rough | resource dependent | 2d | 2027-03-17 | 2027-03-18 | A45878 | 24d | 8d |

| ID | WBS | Activity | Type | Duration | Start | Finish | Predecessors | Total float | Free float |
| --- | --- | --- | --- | --- | --- | --- | --- | --- | --- |
|  | WBS131 | **MEPF WSR Quality Control** |  |  | 2027-03-03 | 2027-04-06 |  |  |  |
| A48278 |  | MEPF WSR QC Level 5 |  | 5d | 2027-03-03 | 2027-03-09 | A45648 | 8d | 0d |
| A48288 |  | MEPF WSR QC Level 4 |  | 5d | 2027-03-10 | 2027-03-16 | A45708, A48278 | 10d | 0d |
| A48298 |  | MEPF WSR QC Level 3 |  | 5d | 2027-03-17 | 2027-03-23 | A45768, A48288 | 12d | 0d |
| A48308 |  | MEPF WSR QC Level 2 |  | 5d | 2027-03-24 | 2027-03-30 | A45828, A48298 | 14d | 0d |
| A48318 |  | MEPF WSR QC Level 1 |  | 5d | 2027-03-31 | 2027-04-06 | A45888, A48308 | 16d | 0d |
|  | 181 | **Cover-up Inspections** |  |  | 2027-03-10 | 2027-04-13 |  |  |  |
|  | 182 | **Level 5** |  |  | 2027-03-10 | 2027-03-16 |  |  |  |
| A45938 |  | 100BL5: MEPF Trade Inspection | resource dependent | 2d | 2027-03-10 | 2027-03-11 | A45648, A48278 | 8d | 0d |
| A45948 |  | 100BL5: Fire Marshal Inspection | resource dependent | 2d | 2027-03-12 | 2027-03-15 | A45938 | 8d | 0d |
| A45958 |  | 100BL5: Structural Inspection | resource dependent | 1d | 2027-03-16 | 2027-03-16 | A45948 | 8d | 0d |
|  | 183 | **Level 4** |  |  | 2027-03-17 | 2027-03-23 |  |  |  |
| A45928 |  | 100BL4: MEPF Trade Inspection | resource dependent | 2d | 2027-03-17 | 2027-03-18 | A45708, A48288 | 10d | 0d |
| A45968 |  | 100BL4: Fire Marshal Inspection | resource dependent | 2d | 2027-03-19 | 2027-03-22 | A45928 | 10d | 0d |
| A45978 |  | 100BL4: Structural Inspection | resource dependent | 1d | 2027-03-23 | 2027-03-23 | A45968 | 10d | 0d |
|  | 184 | **Level 3** |  |  | 2027-03-24 | 2027-03-30 |  |  |  |
| A45918 |  | 100BL3: MEPF Trade Inspection | resource dependent | 2d | 2027-03-24 | 2027-03-25 | A45768, A48298 | 12d | 0d |
| A45988 |  | 100BL3: Fire Marshal Inspection | resource dependent | 2d | 2027-03-26 | 2027-03-29 | A45918 | 12d | 0d |
| A45998 |  | 100BL3: Structural Inspection | resource dependent | 1d | 2027-03-30 | 2027-03-30 | A45988 | 12d | 0d |
|  | 185 | **Level 2** |  |  | 2027-03-31 | 2027-04-06 |  |  |  |
| A45908 |  | 100BL2: MEPF Trade Inspection | resource dependent | 2d | 2027-03-31 | 2027-04-01 | A45828, A48308 | 14d | 0d |
| A46008 |  | 100BL2: Fire Marshal Inspection | resource dependent | 2d | 2027-04-02 | 2027-04-05 | A45908 | 14d | 0d |
| A46018 |  | 100BL2: Structural Inspection | resource dependent | 1d | 2027-04-06 | 2027-04-06 | A46008 | 14d | 0d |
|  | 186 | **Level 1** |  |  | 2027-04-07 | 2027-04-13 |  |  |  |
| A45898 |  | 100BL1: MEPF Trade Inspection | resource dependent | 2d | 2027-04-07 | 2027-04-08 | A45888, A48318 | 16d | 0d |
| A46028 |  | 100BL1: Fire Marshal Inspection | resource dependent | 2d | 2027-04-09 | 2027-04-12 | A45898 | 16d | 0d |
| A46038 |  | 100BL1: Structural Inspection | resource dependent | 1d | 2027-04-13 | 2027-04-13 | A46028 | 16d | 0d |

| ID | WBS | Activity | Type | Duration | Start | Finish | Predecessors | Total float | Free float |
| --- | --- | --- | --- | --- | --- | --- | --- | --- | --- |
|  | 187 | **Interior Finishes** |  |  | 2027-03-17 | 2027-09-09 |  |  |  |
|  | 188 | **Level 5** |  |  | 2027-03-17 | 2027-08-02 |  |  |  |
|  | 189 | **Level 5 Residential Units** |  |  | 2027-03-17 | 2027-07-22 |  |  |  |
| A46048 |  | 100BL5: Insulation | resource dependent | 3d | 2027-03-17 | 2027-03-19 | A45958 | 8d | 0d |
| A46058 |  | 100BL5: Insulation Inspection | resource dependent | 1d | 2027-03-22 | 2027-03-22 | A46048 | 8d | 0d |
| A46068 |  | 100BL5: Install Resilient Channel | resource dependent | 2d | 2027-03-22 | 2027-03-23 | A46058 FS-1d | 8d | 0d |
| A46078 |  | 100BL5: Pre-Hang QC Inspections | resource dependent | 5d | 2027-03-24 | 2027-03-30 | A46068 | 8d | 0d |
| A46088 |  | 100BL5: Stock Drywall | resource dependent | 2d | 2027-03-31 | 2027-04-01 | A46078 | 8d | 0d |
| A46098 |  | 100BL5: Hang Drywall | resource dependent | 4d | 2027-04-02 | 2027-04-07 | A20625, A46088 | 8d | 0d |
| A46108 |  | 100BL5: Post Hang QC Inspecitons | resource dependent | 5d | 2027-04-08 | 2027-04-14 | A46098 | 8d | 5d |
| A46118 |  | 100BL5: Finish Drywall | resource dependent | 7d | 2027-04-22 | 2027-04-30 | A46108, A20627 | 3d | 0d |
| A46128 |  | 100BL5: Prime Paint | resource dependent | 3d | 2027-05-03 | 2027-05-05 | A20628, A46118 | 17d | 0d |
| A46138 |  | 100BL5: Gypcrete Prep | resource dependent | 2d | 2027-05-06 | 2027-05-07 | A46128 | 17d | 0d |
| A46148 |  | 100BL5: Install Gypcrete | resource dependent | 2d | 2027-05-10 | 2027-05-11 | A46138 | 17d | 0d |
| A46158 |  | 100BL5: Install AHU/WH | resource dependent | 2d | 2027-05-12 | 2027-05-13 | A20631, A46148 | 57d | 5d |
| A46168 |  | 100BL5: Shower Surrounds | resource dependent | 3d | 2027-05-12 | 2027-05-14 | A20632, A46148 | 41d | 0d |
| A46178 |  | 100BL5: Vanities and Kitchen Casework | resource dependent | 6d | 2027-05-18 | 2027-05-25 | A20633, A46148 FS+4d | 17d | 0d |
| A46188 |  | 100BL5: Install Countertops | resource dependent | 4d | 2027-05-26 | 2027-06-01 | A20634, A46178 | 40d | 0d |
| A46218 |  | 100BL5: Install Shower Doors | resource dependent | 5d | 2027-06-01 | 2027-06-07 | A20636, A46168 FS+10d | 41d | 1d |
| A46198 |  | 100BL5: Install Interior Doors & Trim | resource dependent | 5d | 2027-06-02 | 2027-06-08 | A20637, A46188 | 40d | 0d |
| A46208 |  | 100BL5: Kitchen Backsplash | resource dependent | 3d | 2027-06-02 | 2027-06-04 | A46188 | 42d | 2d |
| A46228 |  | 100BL5: Drywall Touch-Up | resource dependent | 3d | 2027-06-09 | 2027-06-11 | A46158, A46198, A46208, A46218 | 40d | 0d |
| A46288 |  | 100BL5: First Finish Paint (Ceilings, Trim, Doors & Walls) | resource dependent | 5d | 2027-06-14 | 2027-06-21 | A46228 | 40d | 0d |
| A46298 |  | 100BL5: MEPS Ceiling Trim Out | resource dependent | 3d | 2027-06-22 | 2027-06-24 | A20640, A46288 | 40d | 0d |
| A46308 |  | 100BL5: Install Flooring | resource dependent | 5d | 2027-06-25 | 2027-07-01 | A20641, A46298 | 40d | 0d |
| A46318 |  | 100BL5: Minor Appliance Delivery | resource dependent | 2d | 2027-07-02 | 2027-07-06 | A46308 | 52d | 0d |
| A46328 |  | 100BL5: MEP Trim-Out DW, Disposal & Sink Install | resource dependent | 3d | 2027-07-07 | 2027-07-09 | A46318 | 52d | 0d |
| A46338 |  | 100BL5: Install Door Hardware | resource dependent | 3d | 2027-07-12 | 2027-07-14 | A46328 | 52d | 0d |
| A46348 |  | 100BL5: Unit Accessories | resource dependent | 2d | 2027-07-15 | 2027-07-16 | A46338, A20645 | 52d | 0d |
| A46358 |  | 100BL5: Major Appliance Delivery - Install Refrigerator, Microwave, W/D | resource dependent | 2d | 2027-07-15 | 2027-07-16 | A46338 | 52d | 0d |
| A46418 |  | 100BL5: Rough Clean | resource dependent | 4d | 2027-07-19 | 2027-07-22 | A20647, A46348, A46358 | 52d | 0d |

| ID | WBS | Activity | Type | Duration | Start | Finish | Predecessors | Total float | Free float |
| --- | --- | --- | --- | --- | --- | --- | --- | --- | --- |
|  | 190 | **Level 5 Common Areas** |  |  | 2027-04-02 | 2027-08-02 |  |  |  |
| A46238 |  | 100BL5: Stock Drywall | resource dependent | 1d | 2027-04-02 | 2027-04-02 | A46088 | 233d | 3d |
| A46248 |  | 100BL5: Hang/Finish Drywall | resource dependent | 4d | 2027-04-08 | 2027-04-13 | A46098, A46238 | 230d | 13d |
| A46258 |  | 100BL5: Prime Paint | resource dependent | 1d | 2027-05-06 | 2027-05-06 | A46128, A46248 | 230d | 22d |
| A46268 |  | 100BL5: Install Wood Base | resource dependent | 1d | 2027-06-09 | 2027-06-09 | A46198, A46258 | 208d | 7d |
| A46278 |  | 100BL5: First Finish Paint | resource dependent | 2d | 2027-06-22 | 2027-06-23 | A46268, A46288 | 201d | 1d |
| A46368 |  | 100BL5: MEP Device Trim-Out | resource dependent | 1d | 2027-06-25 | 2027-06-25 | A46278, A46298 | 200d | 4d |
| A46378 |  | 100BL5: Install Flooring | resource dependent | 1d | 2027-07-02 | 2027-07-02 | A46308, A46368 | 196d | 13d |
| A46388 |  | 100BL5: Rough Clean | resource dependent | 1d | 2027-07-23 | 2027-07-23 | A46378, A46418 | 183d | 0d |
| A46398 |  | 100BL5: JCC Punchlist | resource dependent | 5d | 2027-07-26 | 2027-07-30 | A46388 | 183d | 0d |
| A46408 |  | 100BL5: Final Clean | resource dependent | 1d | 2027-08-02 | 2027-08-02 | A46398 | 183d |  |
|  | 191 | **Level 4** |  |  | 2027-03-24 | 2027-08-11 |  |  |  |
|  | 192 | **Level 4 Residential Units** |  |  | 2027-03-24 | 2027-08-02 |  |  |  |
| A46428 |  | 100BL4: Insulation | resource dependent | 3d | 2027-03-24 | 2027-03-26 | A45978 | 10d | 0d |
| A46438 |  | 100BL4: Insulation Inspection | resource dependent | 1d | 2027-03-29 | 2027-03-29 | A46428 | 10d | 0d |
| A46448 |  | 100BL4: Install Resilient Channel | resource dependent | 2d | 2027-03-29 | 2027-03-30 | A46438 FS-1d | 10d | 0d |
| A46458 |  | 100BL4: Pre-Hang QC Inspections | resource dependent | 5d | 2027-03-31 | 2027-04-06 | A46448 | 10d | 0d |
| A46468 |  | 100BL4: Stock Drywall | resource dependent | 2d | 2027-04-07 | 2027-04-08 | A46458 | 10d | 0d |
| A46478 |  | 100BL4: Hang Drywall | resource dependent | 4d | 2027-04-09 | 2027-04-14 | A46098, A46468 | 10d | 0d |
| A46488 |  | 100BL4: Post Hang QC Inspecitons | resource dependent | 5d | 2027-04-15 | 2027-04-21 | A46478 | 10d | 7d |
| A46498 |  | 100BL4: Finish Drywall | resource dependent | 7d | 2027-05-03 | 2027-05-11 | A46118, A46488 | 3d | 0d |
| A46508 |  | 100BL4: Prime Paint | resource dependent | 3d | 2027-05-12 | 2027-05-14 | A46498, A46128 | 16d | 0d |
| A46518 |  | 100BL4: Gypcrete Prep | resource dependent | 2d | 2027-05-17 | 2027-05-18 | A46508 | 16d | 0d |
| A46528 |  | 100BL4: Install Gypcrete | resource dependent | 2d | 2027-05-19 | 2027-05-20 | A46518 | 16d | 0d |
| A46538 |  | 100BL4: Install AHU/WH | resource dependent | 2d | 2027-05-21 | 2027-05-24 | A46158, A46528 | 55d | 5d |
| A46548 |  | 100BL4: Shower Surrounds | resource dependent | 3d | 2027-05-21 | 2027-05-25 | A46168, A46528 | 39d | 0d |
| A46558 |  | 100BL4: Vanities and Kitchen Casework | resource dependent | 6d | 2027-05-27 | 2027-06-04 | A46178, A46528 FS+4d | 16d | 0d |
| A46568 |  | 100BL4: Install Countertops | resource dependent | 4d | 2027-06-07 | 2027-06-10 | A46188, A46558 | 38d | 0d |
| A46598 |  | 100BL4: Install Shower Doors | resource dependent | 5d | 2027-06-10 | 2027-06-16 | A46218, A46548 FS+10d | 39d | 1d |
| A46578 |  | 100BL4: Kitchen Backsplash | resource dependent | 3d | 2027-06-11 | 2027-06-15 | A46568 | 40d | 2d |
| A46588 |  | 100BL4: Install Interior Doors & Trim | resource dependent | 5d | 2027-06-11 | 2027-06-17 | A46198, A46568 | 38d | 0d |
| A46608 |  | 100BL4: Drywall Touch-Up | resource dependent | 3d | 2027-06-21 | 2027-06-23 | A46538, A46578, A46588, A46598 | 38d | 0d |
| A46618 |  | 100BL4: First Finish Paint (Ceilings, Trim, Doors & Walls) | resource dependent | 5d | 2027-06-24 | 2027-06-30 | A46288, A46608 | 38d | 0d |
| A46628 |  | 100BL4: MEPS Ceiling Trim Out | resource dependent | 3d | 2027-07-01 | 2027-07-06 | A46298, A46618 | 38d | 0d |
| A46638 |  | 100BL4: Install Flooring | resource dependent | 5d | 2027-07-07 | 2027-07-13 | A46308, A46628 | 38d | 0d |
| A46648 |  | 100BL4: Minor Appliance Delivery | resource dependent | 2d | 2027-07-14 | 2027-07-15 | A46638 | 51d | 0d |
| A46658 |  | 100BL4: MEP Trim-Out DW, Disposal & Sink Install | resource dependent | 3d | 2027-07-16 | 2027-07-20 | A46648 | 51d | 0d |
| A46668 |  | 100BL4: Install Door Hardware | resource dependent | 3d | 2027-07-21 | 2027-07-23 | A46658 | 51d | 0d |
| A46678 |  | 100BL4: Unit Accessories | resource dependent | 2d | 2027-07-26 | 2027-07-27 | A46668, A46348 | 51d | 0d |
| A46688 |  | 100BL4: Major Appliance Delivery - Install Refrigerator, Microwave, W/D | resource dependent | 2d | 2027-07-26 | 2027-07-27 | A46358, A46668 | 51d | 0d |
| A46698 |  | 100BL4: Rough Clean | resource dependent | 4d | 2027-07-28 | 2027-08-02 | A46418, A46678, A46688 | 51d | 0d |

| ID | WBS | Activity | Type | Duration | Start | Finish | Predecessors | Total float | Free float |
| --- | --- | --- | --- | --- | --- | --- | --- | --- | --- |
|  | 193 | **Level 4 Common Areas** |  |  | 2027-04-09 | 2027-08-11 |  |  |  |
| A46708 |  | 100BL4: Stock Drywall | resource dependent | 1d | 2027-04-09 | 2027-04-09 | A46468 | 244d | 3d |
| A46718 |  | 100BL4: Hang/Finish Drywall | resource dependent | 4d | 2027-04-15 | 2027-04-20 | A46478, A46708 | 241d | 18d |
| A46728 |  | 100BL4: Prime Paint | resource dependent | 1d | 2027-05-17 | 2027-05-17 | A46508, A46718 | 223d | 22d |
| A46738 |  | 100BL4: Install Wood Base | resource dependent | 1d | 2027-06-21 | 2027-06-21 | A46588, A46728 | 201d | 7d |
| A46748 |  | 100BL4: First Finish Paint | resource dependent | 2d | 2027-07-01 | 2027-07-02 | A46618, A46738 | 194d | 1d |
| A46758 |  | 100BL4: MEP Device Trim-Out | resource dependent | 1d | 2027-07-07 | 2027-07-07 | A46628, A46748 | 193d | 4d |
| A46768 |  | 100BL4: Install Flooring | resource dependent | 1d | 2027-07-14 | 2027-07-14 | A46638, A46758 | 189d | 13d |
| A46778 |  | 100BL4: Rough Clean | resource dependent | 1d | 2027-08-03 | 2027-08-03 | A46698, A46768 | 176d | 0d |
| A46788 |  | 100BL4: JCC Punchlist | resource dependent | 5d | 2027-08-04 | 2027-08-10 | A46778 | 176d | 0d |
| A46798 |  | 100BL4: Final Clean | resource dependent | 1d | 2027-08-11 | 2027-08-11 | A46788 | 176d |  |
|  | 194 | **Level 3** |  |  | 2027-03-31 | 2027-08-20 |  |  |  |
|  | 195 | **Level 3 Residential Units** |  |  | 2027-03-31 | 2027-08-11 |  |  |  |
| A46808 |  | 100BL3: Insulation | resource dependent | 3d | 2027-03-31 | 2027-04-02 | A45998 | 12d | 0d |
| A46818 |  | 100BL3: Insulation Inspection | resource dependent | 1d | 2027-04-05 | 2027-04-05 | A46808 | 12d | 0d |
| A46828 |  | 100BL3: Install Resilient Channel | resource dependent | 2d | 2027-04-05 | 2027-04-06 | A46818 FS-1d | 12d | 0d |
| A46838 |  | 100BL3: Pre-Hang QC Inspections | resource dependent | 5d | 2027-04-07 | 2027-04-13 | A46828 | 12d | 0d |
| A46848 |  | 100BL3: Stock Drywall | resource dependent | 2d | 2027-04-14 | 2027-04-15 | A46838 | 12d | 0d |
| A46858 |  | 100BL3: Hang Drywall | resource dependent | 4d | 2027-04-16 | 2027-04-21 | A46478, A46848 | 12d | 0d |
| A46868 |  | 100BL3: Post Hang QC Inspecitons | resource dependent | 5d | 2027-04-22 | 2027-04-28 | A46858 | 12d | 9d |
| A46878 |  | 100BL3: Finish Drywall | resource dependent | 7d | 2027-05-12 | 2027-05-20 | A46498, A46868 | 3d | 0d |
| A46888 |  | 100BL3: Prime Paint | resource dependent | 3d | 2027-05-21 | 2027-05-25 | A46878, A46508 | 15d | 0d |
| A46898 |  | 100BL3: Gypcrete Prep | resource dependent | 2d | 2027-05-26 | 2027-05-27 | A46888 | 15d | 0d |
| A46908 |  | 100BL3: Install Gypcrete | resource dependent | 2d | 2027-05-28 | 2027-06-01 | A46898 | 15d | 0d |
| A46918 |  | 100BL3: Install AHU/WH | resource dependent | 2d | 2027-06-02 | 2027-06-03 | A46538, A46908 | 53d | 5d |
| A46928 |  | 100BL3: Shower Surrounds | resource dependent | 3d | 2027-06-02 | 2027-06-04 | A46548, A46908 | 37d | 0d |
| A46938 |  | 100BL3: Vanities and Kitchen Casework | resource dependent | 6d | 2027-06-08 | 2027-06-15 | A46558, A46908 FS+4d | 15d | 0d |
| A46948 |  | 100AL3: Install Countertops | resource dependent | 4d | 2027-06-16 | 2027-06-22 | A46568, A46938 | 36d | 0d |
| A46978 |  | 100BL3: Install Shower Doors | resource dependent | 5d | 2027-06-22 | 2027-06-28 | A46598, A46928 FS+10d | 37d | 1d |
| A46958 |  | 100BL3: Kitchen Backsplash | resource dependent | 3d | 2027-06-23 | 2027-06-25 | A46948 | 38d | 2d |
| A46968 |  | 100BL3: Install Interior Doors & Trim | resource dependent | 5d | 2027-06-23 | 2027-06-29 | A46588, A46948 | 36d | 0d |
| A46988 |  | 100BL3: Drywall Touch-Up | resource dependent | 3d | 2027-06-30 | 2027-07-02 | A46918, A46958, A46968, A46978 | 36d | 0d |
| A46998 |  | 100BL3: First Finish Paint (Ceilings, Trim, Doors & Walls) | resource dependent | 5d | 2027-07-06 | 2027-07-12 | A46618, A46988 | 36d | 0d |
| A47008 |  | 100BL3: MEPS Ceiling Trim Out | resource dependent | 3d | 2027-07-13 | 2027-07-15 | A46628, A46998 | 36d | 0d |
| A47018 |  | 100BL3: Install Flooring | resource dependent | 5d | 2027-07-16 | 2027-07-22 | A46638, A47008 | 36d | 0d |
| A47028 |  | 100BL3: Minor Appliance Delivery | resource dependent | 2d | 2027-07-23 | 2027-07-26 | A47018 | 50d | 0d |
| A47038 |  | 100BL3: MEP Trim-Out DW, Disposal & Sink Install | resource dependent | 3d | 2027-07-27 | 2027-07-29 | A47028 | 50d | 0d |
| A47048 |  | 100BL3: Install Door Hardware | resource dependent | 3d | 2027-07-30 | 2027-08-03 | A47038 | 50d | 0d |
| A47058 |  | 100BL3: Unit Accessories | resource dependent | 2d | 2027-08-04 | 2027-08-05 | A47048, A46678 | 50d | 0d |
| A47068 |  | 100BL3: Major Appliance Delivery - Install Refrigerator, Microwave, W/D | resource dependent | 2d | 2027-08-04 | 2027-08-05 | A46688, A47048 | 50d | 0d |
| A47078 |  | 100BL3: Rough Clean | resource dependent | 4d | 2027-08-06 | 2027-08-11 | A46698, A47058, A47068 | 50d | 0d |

| ID | WBS | Activity | Type | Duration | Start | Finish | Predecessors | Total float | Free float |
| --- | --- | --- | --- | --- | --- | --- | --- | --- | --- |
|  | 196 | **Level 3 Common Areas** |  |  | 2027-04-16 | 2027-08-20 |  |  |  |
| A47088 |  | 100BL3: Stock Drywall | resource dependent | 1d | 2027-04-16 | 2027-04-16 | A46848 | 239d | 3d |
| A47098 |  | 100BL3: Hang/Finish Drywall | resource dependent | 4d | 2027-04-22 | 2027-04-27 | A46858, A47088 | 236d | 20d |
| A47108 |  | 100BL3: Prime Paint | resource dependent | 1d | 2027-05-26 | 2027-05-26 | A46888, A47098 | 216d | 22d |
| A47118 |  | 100BL3: Install Wood Base | resource dependent | 1d | 2027-06-30 | 2027-06-30 | A46968, A47108 | 194d | 7d |
| A47128 |  | 100BL3: First Finish Paint | resource dependent | 2d | 2027-07-13 | 2027-07-14 | A46998, A47118 | 187d | 1d |
| A47138 |  | 100BL3: MEP Device Trim-Out | resource dependent | 1d | 2027-07-16 | 2027-07-16 | A47008, A47128 | 186d | 4d |
| A47148 |  | 100BL3: Install Flooring | resource dependent | 1d | 2027-07-23 | 2027-07-23 | A47018, A47138 | 182d | 13d |
| A47158 |  | 100BL3: Rough Clean | resource dependent | 1d | 2027-08-12 | 2027-08-12 | A47078, A47148 | 169d | 0d |
| A47168 |  | 100BL3: JCC Punchlist | resource dependent | 5d | 2027-08-13 | 2027-08-19 | A47158 | 169d | 0d |
| A47178 |  | 100BL3: Final Clean | resource dependent | 1d | 2027-08-20 | 2027-08-20 | A47168 | 169d |  |
|  | 197 | **Level 2** |  |  | 2027-04-07 | 2027-08-31 |  |  |  |
|  | 198 | **Level 2 Residential Units** |  |  | 2027-04-07 | 2027-08-20 |  |  |  |
| A47188 |  | 100BL2: Insulation | resource dependent | 3d | 2027-04-07 | 2027-04-09 | A46018 | 14d | 0d |
| A47198 |  | 100BL2: Insulation Inspection | resource dependent | 1d | 2027-04-12 | 2027-04-12 | A47188 | 14d | 0d |
| A47208 |  | 100BL2: Install Resilient Channel | resource dependent | 2d | 2027-04-12 | 2027-04-13 | A47198 FS-1d | 14d | 0d |
| A47218 |  | 100BL2: Pre-Hang QC Inspections | resource dependent | 5d | 2027-04-14 | 2027-04-20 | A47208 | 14d | 0d |
| A47228 |  | 100BL2: Stock Drywall | resource dependent | 2d | 2027-04-21 | 2027-04-22 | A47218 | 14d | 0d |
| A47238 |  | 100BL2: Hang Drywall | resource dependent | 4d | 2027-04-23 | 2027-04-28 | A46858, A47228 | 14d | 0d |
| A47248 |  | 100BL2: Post Hang QC Inspecitons | resource dependent | 5d | 2027-04-29 | 2027-05-05 | A47238 | 14d | 11d |
| A47258 |  | 100BL2: Finish Drywall | resource dependent | 7d | 2027-05-21 | 2027-06-01 | A46878, A47248 | 3d | 0d |
| A47268 |  | 100BL2: Prime Paint | resource dependent | 3d | 2027-06-02 | 2027-06-04 | A47258, A46888 | 14d | 0d |
| A47278 |  | 100BL2: Gypcrete Prep | resource dependent | 2d | 2027-06-07 | 2027-06-08 | A47268 | 14d | 0d |
| A47288 |  | 100BL2: Install Gypcrete | resource dependent | 2d | 2027-06-09 | 2027-06-10 | A47278 | 14d | 0d |
| A47298 |  | 100BL2: Install AHU/WH | resource dependent | 2d | 2027-06-11 | 2027-06-14 | A46918, A47288 | 51d | 1d |
| A47308 |  | 100BL2: Shower Surrounds | resource dependent | 3d | 2027-06-11 | 2027-06-15 | A46928, A47288 | 35d | 0d |
| A47318 |  | 100BL2: Vanities and Kitchen Casework | resource dependent | 6d | 2027-06-17 | 2027-06-25 | A46938, A47288 FS+4d | 14d | 0d |
| A47328 |  | 100BL2: Install Countertops | resource dependent | 4d | 2027-06-28 | 2027-07-01 | A46948, A47318 | 34d | 0d |
| A47358 |  | 100BL2: Install Shower Doors | resource dependent | 5d | 2027-07-01 | 2027-07-08 | A46978, A47308 FS+10d | 35d | 0d |
| A47338 |  | 100BL2: Kitchen Backsplash | resource dependent | 3d | 2027-07-02 | 2027-07-07 | A47328 | 36d | 2d |
| A47348 |  | 100BL2: Install Interior Doors & Trim | resource dependent | 5d | 2027-07-02 | 2027-07-09 | A46968, A47328 | 34d | 0d |
| A47368 |  | 100BL2: Drywall Touch-Up | resource dependent | 3d | 2027-07-12 | 2027-07-14 | A47298, A47338, A47348, A47358 | 34d | 0d |
| A47378 |  | 100BL2: First Finish Paint (Ceilings, Trim, Doors & Walls) | resource dependent | 5d | 2027-07-15 | 2027-07-21 | A46998, A47368 | 34d | 0d |
| A47388 |  | 100BL2: MEPS Ceiling Trim Out | resource dependent | 3d | 2027-07-22 | 2027-07-26 | A47008, A47378 | 34d | 0d |
| A47398 |  | 100BL2: Install Flooring | resource dependent | 5d | 2027-07-27 | 2027-08-02 | A47018, A47388 | 34d | 0d |
| A47408 |  | 100BL2: Minor Appliance Delivery | resource dependent | 2d | 2027-08-03 | 2027-08-04 | A47398 | 48d | 0d |
| A47418 |  | 100BL2: MEP Trim-Out DW, Disposal & Sink Install | resource dependent | 3d | 2027-08-05 | 2027-08-09 | A47408 | 48d | 0d |
| A47428 |  | 100BL2: Install Door Hardware | resource dependent | 3d | 2027-08-10 | 2027-08-12 | A47418 | 48d | 0d |
| A47438 |  | 100BL2: Unit Accessories | resource dependent | 2d | 2027-08-13 | 2027-08-16 | A47428, A47058 | 48d | 0d |
| A47448 |  | 100BL2: Major Appliance Delivery - Install Refrigerator, Microwave, W/D | resource dependent | 2d | 2027-08-13 | 2027-08-16 | A47068, A47428 | 48d | 0d |
| A47458 |  | 100BL2: Rough Clean | resource dependent | 4d | 2027-08-17 | 2027-08-20 | A47078, A47438, A47448 | 48d | 0d |

| ID | WBS | Activity | Type | Duration | Start | Finish | Predecessors | Total float | Free float |
| --- | --- | --- | --- | --- | --- | --- | --- | --- | --- |
|  | 199 | **Level 2 Common Areas** |  |  | 2027-04-23 | 2027-08-31 |  |  |  |
| A47468 |  | 100BL2: Stock Drywall | resource dependent | 1d | 2027-04-23 | 2027-04-23 | A47228 | 234d | 3d |
| A47478 |  | 100BL2: Hang/Finish Drywall | resource dependent | 4d | 2027-04-29 | 2027-05-04 | A47238, A47468 | 231d | 22d |
| A47488 |  | 100BL2: Prime Paint | resource dependent | 1d | 2027-06-07 | 2027-06-07 | A47268, A47478 | 209d | 22d |
| A47498 |  | 100BL2: Install Wood Base | resource dependent | 1d | 2027-07-12 | 2027-07-12 | A47348, A47488 | 187d | 7d |
| A47508 |  | 100BL2: First Finish Paint | resource dependent | 2d | 2027-07-22 | 2027-07-23 | A47378, A47498 | 180d | 1d |
| A47518 |  | 100BL2: MEP Device Trim-Out | resource dependent | 1d | 2027-07-27 | 2027-07-27 | A47388, A47508 | 179d | 4d |
| A47528 |  | 100BL2: Install Flooring | resource dependent | 1d | 2027-08-03 | 2027-08-03 | A47398, A47518 | 175d | 13d |
| A47538 |  | 100BL2: Rough Clean | resource dependent | 1d | 2027-08-23 | 2027-08-23 | A47458, A47528 | 162d | 0d |
| A47548 |  | 100BL2: JCC Punchlist | resource dependent | 5d | 2027-08-24 | 2027-08-30 | A47538 | 162d | 0d |
| A47558 |  | 100BL2: Final Clean | resource dependent | 1d | 2027-08-31 | 2027-08-31 | A47548 | 162d |  |
|  | 200 | **Level 1** |  |  | 2027-04-14 | 2027-09-09 |  |  |  |
|  | 201 | **Level 1 Residential Units** |  |  | 2027-04-14 | 2027-08-30 |  |  |  |
| A47568 |  | 100BL1: Insulation | resource dependent | 3d | 2027-04-14 | 2027-04-16 | A46038 | 16d | 0d |
| A47578 |  | 100BL1: Insulation Inspection | resource dependent | 1d | 2027-04-19 | 2027-04-19 | A47568 | 16d | 0d |
| A47588 |  | 100BL1: Install Resilient Channel | resource dependent | 2d | 2027-04-19 | 2027-04-20 | A47578 FS-1d | 16d | 0d |
| A47598 |  | 100BL1: Pre-Hang QC Inspections | resource dependent | 5d | 2027-04-21 | 2027-04-27 | A47588 | 16d | 0d |
| A47608 |  | 100BL1: Stock Drywall | resource dependent | 2d | 2027-04-28 | 2027-04-29 | A47598 | 16d | 0d |
| A47618 |  | 100BL1: Hang Drywall | resource dependent | 4d | 2027-04-30 | 2027-05-05 | A47238, A47608 | 16d | 0d |
| A47628 |  | 100BL1: Post Hang QC Inspecitons | resource dependent | 5d | 2027-05-06 | 2027-05-12 | A47618 | 16d | 13d |
| A47638 |  | 100BL1: Finish Drywall | resource dependent | 7d | 2027-06-02 | 2027-06-10 | A47258, A47628 | 3d | 0d |
| A47648 |  | 100BL1: Prime Paint | resource dependent | 3d | 2027-06-11 | 2027-06-15 | A47638, A47268 | 16d | 0d |
| A47658 |  | 100BL1: Install AHU/WH | resource dependent | 2d | 2027-06-16 | 2027-06-17 | A47298, A47648 | 53d | 9d |
| A47668 |  | 100BL1: Shower Surrounds | resource dependent | 3d | 2027-06-16 | 2027-06-21 | A47308, A47648 | 37d | 2d |
| A47678 |  | 100BL1: Vanities and Kitchen Casework | resource dependent | 6d | 2027-06-28 | 2027-07-06 | A47318 | 14d | 0d |
| A47688 |  | 100BL1: Install Countertops | resource dependent | 4d | 2027-07-07 | 2027-07-12 | A47328, A47678 | 33d | 0d |
| A47718 |  | 100BL1: Install Shower Doors | resource dependent | 5d | 2027-07-09 | 2027-07-15 | A47358, A47668 FS+10d | 35d | 2d |
| A47698 |  | 100BL1: Kitchen Backsplash | resource dependent | 3d | 2027-07-13 | 2027-07-15 | A47688 | 35d | 2d |
| A47708 |  | 100BL1: Install Interior Doors & Trim | resource dependent | 5d | 2027-07-13 | 2027-07-19 | A47348, A47688 | 33d | 0d |
| A47728 |  | 100BL1: Drywall Touch-Up | resource dependent | 3d | 2027-07-20 | 2027-07-22 | A47658, A47698, A47708, A47718 | 33d | 0d |
| A47738 |  | 100BL1: First Finish Paint (Ceilings, Trim, Doors & Walls) | resource dependent | 5d | 2027-07-23 | 2027-07-29 | A47378, A47728 | 33d | 0d |
| A47748 |  | 100BL1: MEPS Ceiling Trim Out | resource dependent | 3d | 2027-07-30 | 2027-08-03 | A47388, A47738 | 33d | 0d |
| A47758 |  | 100BL1: Install Flooring | resource dependent | 5d | 2027-08-04 | 2027-08-10 | A47398, A47748 | 33d | 0d |
| A47768 |  | 100BL1: Minor Appliance Delivery | resource dependent | 2d | 2027-08-11 | 2027-08-12 | A47758 | 46d | 0d |
| A47778 |  | 100BL1: MEP Trim-Out DW, Disposal & Sink Install | resource dependent | 3d | 2027-08-13 | 2027-08-17 | A47768 | 46d | 0d |
| A47788 |  | 100BL1: Install Door Hardware | resource dependent | 3d | 2027-08-18 | 2027-08-20 | A47778 | 46d | 0d |
| A47798 |  | 100BL1: Unit Accessories | resource dependent | 2d | 2027-08-23 | 2027-08-24 | A47788, A47438 | 46d | 0d |
| A47808 |  | 100BL1: Major Appliance Delivery - Install Refrigerator, Microwave, W/D | resource dependent | 2d | 2027-08-23 | 2027-08-24 | A47448, A47788 | 46d | 0d |
| A47818 |  | 100BL1: Rough Clean | resource dependent | 4d | 2027-08-25 | 2027-08-30 | A47458, A47798, A47808 | 46d | 0d |

| ID | WBS | Activity | Type | Duration | Start | Finish | Predecessors | Total float | Free float |
| --- | --- | --- | --- | --- | --- | --- | --- | --- | --- |
|  | 202 | **Level 1 Common Areas** |  |  | 2027-04-30 | 2027-09-09 |  |  |  |
| A47828 |  | 100BL1: Stock Drywall | resource dependent | 1d | 2027-04-30 | 2027-04-30 | A47608 | 229d | 3d |
| A47838 |  | 100BL1: Hang/Finish Drywall | resource dependent | 4d | 2027-05-06 | 2027-05-11 | A47618, A47828 | 226d | 24d |
| A47848 |  | 100BL1: Prime Paint | resource dependent | 1d | 2027-06-16 | 2027-06-16 | A47648, A47838 | 202d | 21d |
| A47858 |  | 100BL1: Install Wood Base | resource dependent | 1d | 2027-07-20 | 2027-07-20 | A47708, A47848 | 181d | 7d |
| A47868 |  | 100BL1: First Finish Paint | resource dependent | 2d | 2027-07-30 | 2027-08-02 | A47738, A47858 | 174d | 1d |
| A47878 |  | 100BL1: MEP Device Trim-Out | resource dependent | 1d | 2027-08-04 | 2027-08-04 | A47748, A47868 | 173d | 4d |
| A47888 |  | 100BL1: Install Flooring | resource dependent | 1d | 2027-08-11 | 2027-08-11 | A47758, A47878 | 169d | 13d |
| A47898 |  | 100BL1: Rough Clean | resource dependent | 1d | 2027-08-31 | 2027-08-31 | A47818, A47888 | 156d | 0d |
| A47908 |  | 100BL1: JCC Punchlist | resource dependent | 5d | 2027-09-01 | 2027-09-08 | A47898 | 156d | 0d |
| A47918 |  | 100BL1: Final Clean | resource dependent | 1d | 2027-09-09 | 2027-09-09 | A47908 | 156d |  |
|  | 203 | **Final Inspections** |  |  | 2027-07-19 | 2027-08-27 |  |  |  |
| A47928 |  | 100BL5: Final Inspections | resource dependent | 3d | 2027-07-19 | 2027-07-21 | A46358 | 155d |  |
| A47938 |  | 100BL4: Final Inspections | resource dependent | 3d | 2027-07-28 | 2027-07-30 | A46688 | 148d |  |
| A47948 |  | 100BL3: Final Inspections | resource dependent | 3d | 2027-08-06 | 2027-08-10 | A47068 | 141d |  |
| A47958 |  | 100BL2: Final Inspections | resource dependent | 3d | 2027-08-17 | 2027-08-19 | A47448 | 134d |  |
| A47968 |  | 100BL1: Final Inspections | resource dependent | 3d | 2027-08-25 | 2027-08-27 | A47808 | 128d |  |
|  | 204 | **JCC/Owner Punch** |  |  | 2027-07-23 | 2027-09-28 |  |  |  |
|  | 205 | **JCC Punch** |  |  | 2027-07-23 | 2027-09-14 |  |  |  |
| A47978 |  | Level 5 JCC Punch | resource dependent | 10d | 2027-07-23 | 2027-08-05 | A46418, A21307 FS-9d | 52d | 0d |
| A47988 |  | Level 4 JCC Punch | resource dependent | 10d | 2027-08-03 | 2027-08-16 | A47978 FS-4d, A46698 | 51d | 0d |
| A47998 |  | Level 3 JCC Punch | resource dependent | 10d | 2027-08-12 | 2027-08-25 | A47988 FS-4d, A47078 | 50d | 0d |
| A48008 |  | Level 2 JCC Punch | resource dependent | 10d | 2027-08-23 | 2027-09-03 | A47998 FS-4d, A47458 | 49d | 0d |
| A48018 |  | Level 1 JCC Punch | resource dependent | 10d | 2027-08-31 | 2027-09-14 | A48008 FS-4d, A47818 | 49d | 0d |

| ID | WBS | Activity | Type | Duration | Start | Finish | Predecessors | Total float | Free float | Constraint |
| --- | --- | --- | --- | --- | --- | --- | --- | --- | --- | --- |
|  | 206 | **Owner Punch** |  |  | 2027-08-06 | 2027-09-28 |  |  |  |  |
| A48028 |  | Level 5 Owner Punch | resource dependent | 10d | 2027-08-06 | 2027-08-19 | A47978 | 170d |  |  |
| A48038 |  | Level 4 Owner Punch | resource dependent | 10d | 2027-08-17 | 2027-08-30 | A47988 | 163d |  |  |
| A48048 |  | Level 3 Owner Punch | resource dependent | 10d | 2027-08-26 | 2027-09-09 | A47998 | 156d |  |  |
| A48058 |  | Level 2 Owner Punch | resource dependent | 10d | 2027-09-07 | 2027-09-20 | A48008 | 149d |  |  |
| A48068 |  | Level 1 Owner Punch | resource dependent | 10d | 2027-09-15 | 2027-09-28 | A48018 | 143d |  |  |
|  | 284 | **Building 200** |  |  | 2026-05-04 | 2028-02-22 |  |  |  |  |
|  | 355 | **Building 200 B** |  |  | 2026-05-04 | 2027-11-16 |  |  |  |  |
|  | 130 | **Structure** |  |  | 2026-05-04 | 2027-03-19 |  |  |  |  |
|  | 131 | **Concrete** |  |  | 2026-05-04 | 2026-06-10 |  |  |  |  |
|  | WBS201 | **Pour 2A/2B** |  |  | 2026-05-04 | 2026-06-10 |  |  |  |  |
| A68248 |  | SOG 2 A/B: Edge Forms | resource dependent | 4d | 2026-05-04 | 2026-05-07 | A68328, A21788 | 1d | 0d |  |
| A68258 |  | SOG 2 A/B: Underground MEPs | resource dependent | 6d | 2026-05-08 | 2026-05-15 | A68338, A68248 FS-1d | 0d |  |  |
| A68268 |  | SOG 2 A/B: Excavate Thickened Slabs |  | 5d | 2026-05-18 | 2026-05-22 | A68258, A68348 | 3d | 0d |  |
| A68278 |  | SOG 2 A/B: Backfill Stone Subgrade | resource dependent | 3d | 2026-05-26 | 2026-05-28 | A68358, A68268 | 5d | 0d |  |
| A68288 |  | SOG 2 A/B: Install Vapor Barrier |  | 2d | 2026-05-29 | 2026-06-01 | A68278, A68368 | 19d | 0d |  |
| A68298 |  | SOG 2 A/B: Rebar / Inspect | resource dependent | 3d | 2026-06-02 | 2026-06-04 | A68288, A68378 | 19d | 0d |  |
| A68308 |  | SOG 2 A/B: Pour SOG | resource dependent | 1d | 2026-06-05 | 2026-06-05 | A68298 | 19d | 0d |  |
| A68318 |  | SOG 2 A/B: Strip forms | resource dependent | 3d | 2026-06-08 | 2026-06-10 | A68308 | 470d |  |  |
|  | 134 | **CMU Shafts** |  |  | 2026-06-08 | 2026-06-29 |  |  |  |  |
| A33788 |  | 200B: Stair E | resource dependent | 15d | 2026-06-08 | 2026-06-29 | A68308, A30148 FS-10d | 19d | 0d |  |
|  | WBS231 | **Structural Steel** |  |  | 2026-06-30 | 2026-12-17 |  |  |  |  |
| A68608 |  | Stair Pans & Risers |  | 8d | 2026-06-30 | 2026-07-10 | A33788 | 450d |  |  |
|  | WBS241 | **Bridge 200B to Railroad Ave.** |  |  | 2026-12-07 | 2026-12-17 |  |  |  |  |
| A68618 |  | Bridge HSS Column_L1-L2 |  | 1d | 2026-12-07 | 2026-12-07 | A33818 SS-15d | 333d | 0d | as late as possible |
| A68628 |  | Bridge Structure |  | 5d | 2026-12-08 | 2026-12-14 | A68618 | 333d | 0d |  |
| A68638 |  | Bridge Structural Inspections |  | 3d | 2026-12-15 | 2026-12-17 | A68628 | 339d |  |  |

| ID | WBS | Activity | Type | Duration | Start | Finish | Predecessors | Total float | Free float | Constraint |
| --- | --- | --- | --- | --- | --- | --- | --- | --- | --- | --- |
|  | 135 | **Wood Framing** |  |  | 2026-12-29 | 2027-02-23 |  |  |  |  |
|  | 136 | **Level 1 (9,000 SF)** |  |  | 2026-12-29 | 2027-01-06 |  |  |  |  |
| A33808 |  | 200BL1: Layout | resource dependent | 2d | 2026-12-29 | 2026-12-30 | A33788 | 0d |  | as late as possible |
| A33818 |  | 200BL1: Wall Framing | resource dependent | 3d | 2026-12-30 | 2027-01-04 | A33808 FS-1d, A44908, A69548 | 0d |  |  |
| A33828 |  | 200BL1: Floor Trusses | resource dependent | 2d | 2027-01-04 | 2027-01-05 | A33818 FS-1d | 0d |  |  |
| A33838 |  | 200BL1: Decking | resource dependent | 2d | 2027-01-05 | 2027-01-06 | A33828 FS-1d | 0d |  |  |
|  | 137 | **Level 2 (9,000 SF)** |  |  | 2027-01-07 | 2027-01-14 |  |  |  |  |
| A33848 |  | 200BL2: Layout | resource dependent | 1d | 2027-01-07 | 2027-01-07 | A33838 | 0d |  |  |
| A33858 |  | 200BL2: Wall Framing | resource dependent | 3d | 2027-01-08 | 2027-01-12 | A33848 | 0d |  |  |
| A33868 |  | 200BL2: Floor Trusses | resource dependent | 2d | 2027-01-12 | 2027-01-13 | A33858 FS-1d | 0d |  |  |
| A33878 |  | 200BL2: Decking | resource dependent | 2d | 2027-01-13 | 2027-01-14 | A33868 FS-1d | 0d |  |  |
|  | 138 | **Level 3 (9,000 SF)** |  |  | 2027-01-15 | 2027-01-22 |  |  |  |  |
| A33888 |  | 200BL3: Layout | resource dependent | 1d | 2027-01-15 | 2027-01-15 | A33878 | 0d |  |  |
| A33898 |  | 200BL3: Wall Framing | resource dependent | 3d | 2027-01-18 | 2027-01-20 | A33888 | 0d |  |  |
| A33908 |  | 200BL3: Floor Trusses | resource dependent | 2d | 2027-01-20 | 2027-01-21 | A33898 FS-1d | 0d |  |  |
| A33918 |  | 200BL3: Decking | resource dependent | 2d | 2027-01-21 | 2027-01-22 | A33908 FS-1d | 0d |  |  |
|  | 139 | **Level 4 (9,000 SF)** |  |  | 2027-01-25 | 2027-02-01 |  |  |  |  |
| A33928 |  | 200BL4: Layout | resource dependent | 1d | 2027-01-25 | 2027-01-25 | A33918 | 0d |  |  |
| A33938 |  | 200BL4: Wall Framing | resource dependent | 3d | 2027-01-26 | 2027-01-28 | A33928 | 0d |  |  |
| A33948 |  | 200BL4: Floor Trusses | resource dependent | 2d | 2027-01-28 | 2027-01-29 | A33938 FS-1d | 0d |  |  |
| A33958 |  | 200BL4: Decking | resource dependent | 2d | 2027-01-29 | 2027-02-01 | A33948 FS-1d | 0d |  |  |
|  | 140 | **Level 5 (9,000 SF)** |  |  | 2027-02-02 | 2027-02-23 |  |  |  |  |
| A33968 |  | 200BL5: Layout | resource dependent | 1d | 2027-02-02 | 2027-02-02 | A33958 | 0d |  |  |
| A33978 |  | 200BL5: Wall Framing | resource dependent | 3d | 2027-02-03 | 2027-02-05 | A33968 | 0d |  |  |
| A33988 |  | 200BL5: Roof Trusses | resource dependent | 4d | 2027-02-05 | 2027-02-10 | A33978 FS-1d | 0d |  |  |
| A33998 |  | 200BL5: Roof Decking | resource dependent | 3d | 2027-02-09 | 2027-02-11 | A33988 FS-2d | 16d | 0d |  |
| A34008 |  | 200BL5: Build Out Parapets | resource dependent | 3d | 2027-02-11 | 2027-02-15 | A33998 FS-1d | 16d | 0d |  |
| A34028 |  | 200BL5: MEP Roof Penetrations/Davits | resource dependent | 2d | 2027-02-12 | 2027-02-15 | A33998 | 300d |  |  |
| A37408 |  | 200BL5: Roof Deck QC Inspection |  | 5d | 2027-02-16 | 2027-02-22 | A34008 | 16d | 0d |  |
| A34018 |  | 200BL5: Roof Decking City Inspection | resource dependent | 1d | 2027-02-23 | 2027-02-23 | A34008, A37408 | 16d | 0d |  |

| ID | WBS | Activity | Type | Duration | Start | Finish | Predecessors | Total float | Free float |
| --- | --- | --- | --- | --- | --- | --- | --- | --- | --- |
|  | 141 | **Exterior Sheathing** |  |  | 2027-01-21 | 2027-02-22 |  |  |  |
| A34038 |  | 200BL1: Sheathing | resource dependent | 3d | 2027-01-21 | 2027-01-25 | A33898 | 305d | 0d |
| A34048 |  | 200BL1: Sheathing Inspection | resource dependent | 2d | 2027-01-26 | 2027-01-27 | A34038 | 305d | 0d |
| A34058 |  | 200BL2: Sheathing | resource dependent | 3d | 2027-01-29 | 2027-02-02 | A33938 | 299d | 0d |
| A34068 |  | 200BL2: Sheathing Inspection | resource dependent | 2d | 2027-02-03 | 2027-02-04 | A34058 | 299d | 0d |
| A34078 |  | 200BL3: Sheathing | resource dependent | 3d | 2027-02-08 | 2027-02-10 | A33978 | 239d | 0d |
| A34088 |  | 200BL3: Sheathing Inspection | resource dependent | 2d | 2027-02-11 | 2027-02-12 | A34078 | 293d | 0d |
| A34098 |  | 200BL4: Sheathing | resource dependent | 3d | 2027-02-11 | 2027-02-15 | A34078 | 239d | 0d |
| A34108 |  | 200BL4: Sheathing Inspection | resource dependent | 2d | 2027-02-16 | 2027-02-17 | A34098 | 290d | 0d |
| A34118 |  | 200BL5: Sheathing | resource dependent | 3d | 2027-02-16 | 2027-02-18 | A34098 | 239d | 0d |
| A34128 |  | 200BL5: Sheathing Inspection | resource dependent | 2d | 2027-02-19 | 2027-02-22 | A34118 | 239d | 0d |
|  | 142 | **Bracing Removal** |  |  | 2027-01-28 | 2027-02-23 |  |  |  |
| A34138 |  | 200BL1: Remove Bracing | resource dependent | 1d | 2027-01-28 | 2027-01-28 | A34048 | 305d | 0d |
| A34148 |  | 200BL2: Remove Bracing | resource dependent | 1d | 2027-02-05 | 2027-02-05 | A34068 | 299d | 0d |
| A34158 |  | 200BL3: Remove Bracing | resource dependent | 1d | 2027-02-15 | 2027-02-15 | A34088 | 293d | 0d |
| A34168 |  | 200BL4: Remove Bracing | resource dependent | 1d | 2027-02-18 | 2027-02-18 | A34108 | 290d | 0d |
| A34178 |  | 200BL5: Remove Bracing | resource dependent | 1d | 2027-02-23 | 2027-02-23 | A34128 | 276d | 0d |
|  | 143 | **Framing Trade Partner QC** |  |  | 2027-01-29 | 2027-02-26 |  |  |  |
| A34188 |  | 200BL1: Framing QC | resource dependent | 3d | 2027-01-29 | 2027-02-02 | A34138 | 305d | 0d |
| A34198 |  | 200BL2: Framing QC | resource dependent | 3d | 2027-02-08 | 2027-02-10 | A34148 | 299d | 0d |
| A34208 |  | 200BL3: Framing QC | resource dependent | 3d | 2027-02-16 | 2027-02-18 | A34158 | 293d | 0d |
| A34218 |  | 200BL4: Framing QC | resource dependent | 3d | 2027-02-19 | 2027-02-23 | A34168 | 290d | 0d |
| A34228 |  | 200BL5: Framing QC | resource dependent | 3d | 2027-02-24 | 2027-02-26 | A34178 | 276d | 0d |
|  | 144 | **Framing JCC Structural Punch** |  |  | 2027-02-03 | 2027-03-04 |  |  |  |
| A34238 |  | 200BL1: JCC Structural Punch | resource dependent | 4d | 2027-02-03 | 2027-02-08 | A34188 | 305d |  |
| A34248 |  | 200BL2: JCC Structural Punch | resource dependent | 4d | 2027-02-11 | 2027-02-16 | A34198 | 299d |  |
| A34258 |  | 200BL3: JCC Structural Punch | resource dependent | 4d | 2027-02-19 | 2027-02-24 | A34208 | 293d |  |
| A34268 |  | 200BL4: JCC Structural Punch | resource dependent | 4d | 2027-02-24 | 2027-03-01 | A34218 | 290d |  |
| A34278 |  | 200BL5: JCC Structural Punch | resource dependent | 4d | 2027-03-01 | 2027-03-04 | A34228 | 276d | 0d |

| ID | WBS | Activity | Type | Duration | Start | Finish | Predecessors | Total float | Free float |
| --- | --- | --- | --- | --- | --- | --- | --- | --- | --- |
|  | 145 | **Structural Engineer Punch** |  |  | 2027-03-05 | 2027-03-19 |  |  |  |
| A34288 |  | 200B: EOR Create/Issue Structural Punch | resource dependent | 5d | 2027-03-05 | 2027-03-11 | A34278 | 276d | 0d |
| A34298 |  | 200B: Trade Partner Complete Punch | resource dependent | 5d | 2027-03-12 | 2027-03-18 | A34288 | 276d | 0d |
| A34308 |  | 200B: EOR Accept Punch | resource dependent | 1d | 2027-03-19 | 2027-03-19 | A34298 | 276d |  |
|  | 146 | **Building Dry-In** |  |  | 2027-02-23 | 2027-05-11 |  |  |  |
|  | 147 | **Roofing (9,000 SF)** |  |  | 2027-02-24 | 2027-03-15 |  |  |  |
| A33798 |  | 200B: Roof Dry-In | resource dependent | 6d | 2027-02-24 | 2027-03-03 | A34018 | 16d | 0d |
| A34388 |  | 200B: Roof Detail Work | resource dependent | 6d | 2027-03-04 | 2027-03-11 | A33798 | 16d | 0d |
| A37418 |  | 200B: TPO Roof QC Inspection |  | 3d | 2027-03-11 | 2027-03-15 | A34388 FS-1d | 16d | 0d |
|  | 148 | **Exterior Skin** |  |  | 2027-02-23 | 2027-05-11 |  |  |  |
|  | 149 | **Tyvek & Windows** |  |  | 2027-02-23 | 2027-03-12 |  |  |  |
|  | 150 | **Tyvek** |  |  | 2027-02-23 | 2027-03-03 |  |  |  |
| A37158 |  | TVK: Elevation A (1,800 SF) | resource dependent | 2d | 2027-02-23 | 2027-02-24 | A34128 | 239d | 0d |
| A37168 |  | TVK: Elevation B (8,700 SF) | resource dependent | 5d | 2027-02-25 | 2027-03-03 | A37158 | 239d | 0d |
|  | 151 | **Windows/Doors** |  |  | 2027-03-04 | 2027-03-12 |  |  |  |
| A37208 |  | WN/DR: Elevation B (104) | resource dependent | 7d | 2027-03-04 | 2027-03-12 | A37168 | 239d | 0d |
|  | 152 | **Skin** |  |  | 2027-02-25 | 2027-05-11 |  |  |  |
|  | 153 | **Elevation A** |  |  | 2027-02-25 | 2027-03-16 |  |  |  |
| A37228 |  | ELA: Brick (1,300 SF) | resource dependent | 7d | 2027-02-25 | 2027-03-05 | A37158 | 244d | 0d |
| A37238 |  | ELA: Siding (550 SF) | resource dependent | 4d | 2027-03-08 | 2027-03-11 | A37228 | 250d | 0d |
| A37248 |  | ELA: Paint | resource dependent | 3d | 2027-03-12 | 2027-03-16 | A37238 | 271d | 32d |
|  | 154 | **Elevation B** |  |  | 2027-03-15 | 2027-05-11 |  |  |  |
| A37258 |  | ELB: Brick (1,200 SF) | resource dependent | 10d | 2027-03-15 | 2027-03-26 | A37208, A37228 | 239d | 0d |
| A37268 |  | ELB: Siding (6,300 SF) | resource dependent | 24d | 2027-03-29 | 2027-04-29 | A37238, A37258 | 239d | 0d |
| A37278 |  | ELB: Paint | resource dependent | 8d | 2027-04-30 | 2027-05-11 | A37248, A37268 | 239d |  |

| ID | WBS | Activity | Type | Duration | Start | Finish | Predecessors | Total float | Free float |
| --- | --- | --- | --- | --- | --- | --- | --- | --- | --- |
|  | 157 | **Building Interiors** |  |  | 2027-01-15 | 2027-11-16 |  |  |  |
|  | 158 | **MEPF Non-Weather Sensitive Rough-In** |  |  | 2027-01-15 | 2027-03-04 |  |  |  |
|  | 159 | **Level 1 MEPF NWSR** |  |  | 2027-01-15 | 2027-02-01 |  |  |  |
| A34398 |  | 200BL1NWSR: Plastic Rough & Valves | resource dependent | 3d | 2027-01-15 | 2027-01-19 | A33878, A45478 | 268d | 0d |
| A34408 |  | 200BL1NWSR: Electrical Conduit, Boxes & Unit Feeders | resource dependent | 3d | 2027-01-20 | 2027-01-22 | A34398, A45488 | 268d | 0d |
| A34418 |  | 200BL1NWSR: Sprinkler Mains | resource dependent | 3d | 2027-01-25 | 2027-01-27 | A34408, A45498 | 268d | 0d |
| A34428 |  | 200BL1NWSR: Mechanical Hard Pipe & Boots | resource dependent | 3d | 2027-01-28 | 2027-02-01 | A34418, A45508 | 268d | 3d |
|  | 160 | **Level 2 MEPF NWSR** |  |  | 2027-01-25 | 2027-02-09 |  |  |  |
| A34438 |  | 200BL1NWSR: Plastic Rough & Valves | resource dependent | 3d | 2027-01-25 | 2027-01-27 | A33918, A34398 | 265d | 0d |
| A34448 |  | 200BL1NWSR: Electrical Conduit, Boxes & Unit Feeders | resource dependent | 3d | 2027-01-28 | 2027-02-01 | A34408, A34438 | 265d | 0d |
| A34458 |  | 200BL1NWSR: Sprinkler Mains | resource dependent | 3d | 2027-02-02 | 2027-02-04 | A34418, A34448 | 265d | 0d |
| A34468 |  | 200BL1NWSR: Mechanical Hard Pipe & Boots | resource dependent | 3d | 2027-02-05 | 2027-02-09 | A34428, A34458 | 265d | 3d |
|  | 161 | **Level 3 MEPF NWSR** |  |  | 2027-02-02 | 2027-02-17 |  |  |  |
| A34478 |  | 200BL1NWSR: Plastic Rough & Valves | resource dependent | 3d | 2027-02-02 | 2027-02-04 | A33958, A34438 | 262d | 0d |
| A34488 |  | 200BL1NWSR: Electrical Conduit, Boxes & Unit Feeders | resource dependent | 3d | 2027-02-05 | 2027-02-09 | A34448, A34478 | 262d | 0d |
| A34498 |  | 200BL1NWSR: Sprinkler Mains | resource dependent | 3d | 2027-02-10 | 2027-02-12 | A34458, A34488 | 262d | 0d |
| A34508 |  | 200BL1NWSR: Mechanical Hard Pipe & Boots | resource dependent | 3d | 2027-02-15 | 2027-02-17 | A34468, A34498 | 262d | 5d |
|  | 162 | **Level 4 MEPF NWSR** |  |  | 2027-02-12 | 2027-03-01 |  |  |  |
| A34518 |  | 200BL1NWSR: Plastic Rough & Valves | resource dependent | 3d | 2027-02-12 | 2027-02-16 | A33998, A34478 | 257d | 0d |
| A34528 |  | 200BL1NWSR: Electrical Conduit, Boxes & Unit Feeders | resource dependent | 3d | 2027-02-17 | 2027-02-19 | A34488, A34518 | 257d | 0d |
| A34538 |  | 200BL1NWSR: Sprinkler Mains | resource dependent | 3d | 2027-02-22 | 2027-02-24 | A34498, A34528 | 257d | 0d |
| A34548 |  | 200BL1NWSR: Mechanical Hard Pipe & Boots | resource dependent | 3d | 2027-02-25 | 2027-03-01 | A34508, A34538 | 257d | 0d |
|  | 163 | **Level 5 MEPF NWSR** |  |  | 2027-02-17 | 2027-03-04 |  |  |  |
| A34558 |  | 200BL1NWSR: Plastic Rough & Valves | resource dependent | 3d | 2027-02-17 | 2027-02-19 | A34518 | 257d | 0d |
| A34568 |  | 200BL1NWSR: Electrical Conduit, Boxes & Unit Feeders | resource dependent | 3d | 2027-02-22 | 2027-02-24 | A34528, A34558 | 257d | 0d |
| A34578 |  | 200BL1NWSR: Sprinkler Mains | resource dependent | 3d | 2027-02-25 | 2027-03-01 | A34538, A34568 | 257d | 0d |
| A34588 |  | 200BL1NWSR: Mechanical Hard Pipe & Boots | resource dependent | 3d | 2027-03-02 | 2027-03-04 | A34548, A34578 | 257d | 4d |

| ID | WBS | Activity | Type | Duration | Start | Finish | Predecessors | Total float | Free float |
| --- | --- | --- | --- | --- | --- | --- | --- | --- | --- |
|  | 164 | **Weather Sensitive Rough-In (Top Down)** |  |  | 2027-03-16 | 2027-05-13 |  |  |  |
| A34598 |  | 200B: Install Insulation For Pre-Rock | resource dependent | 2d | 2027-03-16 | 2027-03-17 | A33798, A37418 | 16d | 0d |
| A34608 |  | 200B: Prehang Shafts, Tubs and Mechanical Rooms | resource dependent | 3d | 2027-03-18 | 2027-03-22 | A34598 | 16d | 0d |
| A34618 |  | 200B: Pre-Pour Gypcrete | resource dependent | 2d | 2027-03-23 | 2027-03-24 | A34608 | 16d | 0d |
|  | 165 | **Install Tubs/Shower Pans** |  |  | 2027-03-25 | 2027-03-31 |  |  |  |
| A34628 |  | 200BL1: Tubs/Shower Pans | resource dependent | 1d | 2027-03-25 | 2027-03-25 | A34618 | 16d | 0d |
| A34638 |  | 200BL2: Tubs/Shower Pans | resource dependent | 1d | 2027-03-26 | 2027-03-26 | A34628 | 268d | 0d |
| A34648 |  | 200BL3: Tubs/Shower Pans | resource dependent | 1d | 2027-03-29 | 2027-03-29 | A34638 | 268d | 0d |
| A34658 |  | 200BL4: Tubs/Shower Pans | resource dependent | 1d | 2027-03-30 | 2027-03-30 | A34648 | 268d | 0d |
| A34668 |  | 200BL5: Tubs/Shower Pans | resource dependent | 1d | 2027-03-31 | 2027-03-31 | A34658 | 268d |  |
|  | 166 | **Level 5 (11 Units)** |  |  | 2027-03-26 | 2027-04-08 |  |  |  |
|  | 167 | **L5 MEP WSR Units** |  |  | 2027-03-26 | 2027-04-02 |  |  |  |
| A34678 |  | 200BL5WSR: Mechanical Duct & Damper Install | resource dependent | 3d | 2027-03-26 | 2027-03-30 | A34628, A45838 | 16d | 0d |
| A34688 |  | 200BL5WSR: Pull Branch Circuits/Fire Caulk | resource dependent | 3d | 2027-03-31 | 2027-04-02 | A34678, A45848 | 16d | 0d |
|  | 168 | **L5 MEP WSR Corridor** |  |  | 2027-03-31 | 2027-04-08 |  |  |  |
| A34698 |  | 200BL5WSR: Corridor Mechanical Duct | resource dependent | 3d | 2027-03-31 | 2027-04-02 | A34678 | 16d | 0d |
| A34708 |  | 200BL5WSR: Corridor Circuitry | resource dependent | 2d | 2027-04-05 | 2027-04-06 | A34688, A34698 | 16d | 0d |
| A34718 |  | 200BL5WSR: Corridor LV/ERRC/FA | resource dependent | 2d | 2027-04-05 | 2027-04-06 | A34688, A34708 FS-2d | 16d | 0d |
| A34728 |  | 200BL5WSR: Service Provider Rough | resource dependent | 2d | 2027-04-07 | 2027-04-08 | A34718 | 16d | 0d |
|  | 169 | **Level 4 (11 Units)** |  |  | 2027-03-31 | 2027-04-13 |  |  |  |
|  | 170 | **L4 MEP WSR Units** |  |  | 2027-03-31 | 2027-04-07 |  |  |  |
| A34738 |  | 200BL4WSR: Mechanical Duct & Damper Install | resource dependent | 3d | 2027-03-31 | 2027-04-02 | A34678 | 20d | 0d |
| A34748 |  | 200BL4WSR: Pull Branch Circuits/Fire Caulk | resource dependent | 3d | 2027-04-05 | 2027-04-07 | A34738, A34688 | 20d | 0d |
|  | 171 | **L4 MEP WSR Corridor** |  |  | 2027-04-05 | 2027-04-13 |  |  |  |
| A34758 |  | 200BL4WSR: Corridor Mechanical Duct | resource dependent | 3d | 2027-04-05 | 2027-04-07 | A34738 | 20d | 0d |
| A34768 |  | 200BL4WSR: Corridor Circuitry | resource dependent | 2d | 2027-04-08 | 2027-04-09 | A34748, A34758 | 20d | 0d |
| A34778 |  | 200BL4WSR: Corridor LV/ERRC/FA | resource dependent | 2d | 2027-04-08 | 2027-04-09 | A34748, A34768 FS-2d | 20d | 0d |
| A34788 |  | 200BL4WSR: Service Provider Rough | resource dependent | 2d | 2027-04-12 | 2027-04-13 | A34778 | 20d | 2d |

| ID | WBS | Activity | Type | Duration | Start | Finish | Predecessors | Total float | Free float |
| --- | --- | --- | --- | --- | --- | --- | --- | --- | --- |
|  | 172 | **Level 3 (11 Units)** |  |  | 2027-04-05 | 2027-04-16 |  |  |  |
|  | 173 | **L3 MEP WSR Units** |  |  | 2027-04-05 | 2027-04-12 |  |  |  |
| A34798 |  | 200BL3WSR: Mechanical Duct & Damper Install | resource dependent | 3d | 2027-04-05 | 2027-04-07 | A34738 | 22d | 0d |
| A34808 |  | 200BL3WSR: Pull Branch Circuits/Fire Caulk | resource dependent | 3d | 2027-04-08 | 2027-04-12 | A34748, A34798 | 22d | 0d |
|  | 174 | **L3 MEP WSR Corridor** |  |  | 2027-04-08 | 2027-04-16 |  |  |  |
| A34818 |  | 200BL3WSR: Corridor Mechanical Duct | resource dependent | 3d | 2027-04-08 | 2027-04-12 | A34798 | 22d | 0d |
| A34828 |  | 200BL3WSR: Corridor Circuitry | resource dependent | 2d | 2027-04-13 | 2027-04-14 | A34808, A34818 | 22d | 0d |
| A34838 |  | 200BL3WSR: Corridor LV/ERRC/FA | resource dependent | 2d | 2027-04-13 | 2027-04-14 | A34808, A34828 FS-2d | 22d | 0d |
| A34848 |  | 200BL3WSR: Service Provider Rough | resource dependent | 2d | 2027-04-15 | 2027-04-16 | A34838 | 22d | 4d |
|  | 175 | **Level 2 (11 Units)** |  |  | 2027-04-08 | 2027-04-21 |  |  |  |
|  | 176 | **L2 MEP WSR Units** |  |  | 2027-04-08 | 2027-04-15 |  |  |  |
| A34858 |  | 200BL2WSR: Mechanical Duct & Damper Install | resource dependent | 3d | 2027-04-08 | 2027-04-12 | A34798 | 23d | 0d |
| A34868 |  | 200BL2WSR: Pull Branch Circuits/Fire Caulk | resource dependent | 3d | 2027-04-13 | 2027-04-15 | A34808, A34858 | 23d | 0d |
|  | 177 | **L2 MEP WSR Corridor** |  |  | 2027-04-13 | 2027-04-21 |  |  |  |
| A34878 |  | 200BL2WSR: Corridor Mechanical Duct | resource dependent | 3d | 2027-04-13 | 2027-04-15 | A34858 | 24d | 0d |
| A34888 |  | 200BL2WSR: Corridor Circuitry | resource dependent | 2d | 2027-04-16 | 2027-04-19 | A34868, A34878 | 24d | 0d |
| A34898 |  | 200BL2WSR: Corridor LV/ERRC/FA | resource dependent | 2d | 2027-04-16 | 2027-04-19 | A34868, A34888 FS-2d | 24d | 0d |
| A34908 |  | 200BL2WSR: Service Provider Rough | resource dependent | 2d | 2027-04-20 | 2027-04-21 | A34898 | 24d | 6d |
|  | 178 | **Level 1 (11 Units)** |  |  | 2027-04-13 | 2027-04-26 |  |  |  |
|  | 179 | **L1 MEP WSR Units** |  |  | 2027-04-13 | 2027-04-20 |  |  |  |
| A34918 |  | 200BL1WSR: Mechanical Duct & Damper Install | resource dependent | 3d | 2027-04-13 | 2027-04-15 | A34858 | 23d | 0d |
| A34928 |  | 200BL1WSR: Pull Branch Circuits/Fire Caulk | resource dependent | 3d | 2027-04-16 | 2027-04-20 | A34868, A34918 | 23d | 0d |
|  | 180 | **L1 MEP WSR Corridor** |  |  | 2027-04-16 | 2027-04-26 |  |  |  |
| A34938 |  | 200BL1WSR: Corridor Mechanical Duct | resource dependent | 3d | 2027-04-16 | 2027-04-20 | A34918 | 26d | 0d |
| A34948 |  | 200BL1WSR: Corridor Circuitry | resource dependent | 2d | 2027-04-21 | 2027-04-22 | A34928, A34938 | 26d | 0d |
| A34958 |  | 1200BL1WSR: Corridor LV/ERRC/FA | resource dependent | 2d | 2027-04-21 | 2027-04-22 | A34928, A34948 FS-2d | 26d | 0d |
| A34968 |  | 200BL1WSR: Service Provider Rough | resource dependent | 2d | 2027-04-23 | 2027-04-26 | A34958 | 26d | 8d |

| ID | WBS | Activity | Type | Duration | Start | Finish | Predecessors | Total float | Free float |
| --- | --- | --- | --- | --- | --- | --- | --- | --- | --- |
|  | WBS131 | **MEPF WSR Quality Control** |  |  | 2027-04-09 | 2027-05-13 |  |  |  |
| A37358 |  | MEPF WSR QC Level 5 |  | 5d | 2027-04-09 | 2027-04-15 | A34728 | 16d | 0d |
| A37368 |  | MEPF WSR QC Level 4 |  | 5d | 2027-04-16 | 2027-04-22 | A34788, A37358 | 18d | 0d |
| A37378 |  | MEPF WSR QC Level 3 |  | 5d | 2027-04-23 | 2027-04-29 | A34848, A37368 | 18d | 0d |
| A37388 |  | MEPF WSR QC Level 2 |  | 5d | 2027-04-30 | 2027-05-06 | A34908, A37378 | 18d | 0d |
| A37398 |  | MEPF WSR QC Level 1 |  | 5d | 2027-05-07 | 2027-05-13 | A34968, A37388 | 18d | 0d |
|  | 181 | **Cover-up Inspections** |  |  | 2027-04-16 | 2027-05-20 |  |  |  |
|  | 182 | **Level 5** |  |  | 2027-04-16 | 2027-04-22 |  |  |  |
| A35018 |  | 200BL5: MEPF Trade Inspection | resource dependent | 2d | 2027-04-16 | 2027-04-19 | A34728, A37358 | 16d | 0d |
| A35028 |  | 200BL5: Fire Marshal Inspection | resource dependent | 2d | 2027-04-20 | 2027-04-21 | A35018 | 16d | 0d |
| A35038 |  | 200BL5: Structural Inspection | resource dependent | 1d | 2027-04-22 | 2027-04-22 | A35028 | 16d | 0d |
|  | 183 | **Level 4** |  |  | 2027-04-23 | 2027-04-29 |  |  |  |
| A35008 |  | 200BL4: MEPF Trade Inspection | resource dependent | 2d | 2027-04-23 | 2027-04-26 | A34788, A37368 | 18d | 0d |
| A35048 |  | 200BL4: Fire Marshal Inspection | resource dependent | 2d | 2027-04-27 | 2027-04-28 | A35008 | 18d | 0d |
| A35058 |  | 200BL4: Structural Inspection | resource dependent | 1d | 2027-04-29 | 2027-04-29 | A35048 | 18d | 0d |
|  | 184 | **Level 3** |  |  | 2027-04-30 | 2027-05-06 |  |  |  |
| A34998 |  | 200BL3: MEPF Trade Inspection | resource dependent | 2d | 2027-04-30 | 2027-05-03 | A34848, A37378 | 20d | 0d |
| A35068 |  | 200BL3: Fire Marshal Inspection | resource dependent | 2d | 2027-05-04 | 2027-05-05 | A34998 | 20d | 0d |
| A35078 |  | 200BL3: Structural Inspection | resource dependent | 1d | 2027-05-06 | 2027-05-06 | A35068 | 20d | 0d |
|  | 185 | **Level 2** |  |  | 2027-05-07 | 2027-05-13 |  |  |  |
| A34988 |  | 200BL2: MEPF Trade Inspection | resource dependent | 2d | 2027-05-07 | 2027-05-10 | A34908, A37388 | 19d | 0d |
| A35088 |  | 200BL2: Fire Marshal Inspection | resource dependent | 2d | 2027-05-11 | 2027-05-12 | A34988 | 19d | 0d |
| A35098 |  | 200BL2: Structural Inspection | resource dependent | 1d | 2027-05-13 | 2027-05-13 | A35088 | 19d | 0d |
|  | 186 | **Level 1** |  |  | 2027-05-14 | 2027-05-20 |  |  |  |
| A34978 |  | 200BL1: MEPF Trade Inspection | resource dependent | 2d | 2027-05-14 | 2027-05-17 | A34968, A37398 | 18d | 0d |
| A35108 |  | 200BL1: Fire Marshal Inspection | resource dependent | 2d | 2027-05-18 | 2027-05-19 | A34978 | 18d | 0d |
| A35118 |  | 200BL1: Structural Inspection | resource dependent | 1d | 2027-05-20 | 2027-05-20 | A35108 | 18d | 0d |

| ID | WBS | Activity | Type | Duration | Start | Finish | Predecessors | Total float | Free float |
| --- | --- | --- | --- | --- | --- | --- | --- | --- | --- |
|  | 187 | **Interior Finishes** |  |  | 2027-04-23 | 2027-10-28 |  |  |  |
|  | 188 | **Level 5** |  |  | 2027-04-23 | 2027-09-21 |  |  |  |
|  | 189 | **Level 5 Residential Units** |  |  | 2027-04-23 | 2027-09-10 |  |  |  |
| A35128 |  | 200BL5: Insulation | resource dependent | 3d | 2027-04-23 | 2027-04-27 | A35038 | 16d | 0d |
| A35138 |  | 200BL5: Insulation Inspection | resource dependent | 1d | 2027-04-28 | 2027-04-28 | A35128 | 16d | 0d |
| A35148 |  | 200BL5: Install Resilient Channel | resource dependent | 2d | 2027-04-28 | 2027-04-29 | A35138 FS-1d | 16d | 0d |
| A35158 |  | 200BL5: Pre-Hang QC Inspections | resource dependent | 5d | 2027-04-30 | 2027-05-06 | A35148 | 16d | 0d |
| A35168 |  | 200BL5: Stock Drywall | resource dependent | 2d | 2027-05-07 | 2027-05-10 | A35158 | 16d | 0d |
| A35188 |  | 200BL5: Hang Drywall | resource dependent | 4d | 2027-05-11 | 2027-05-14 | A35168, A47618 | 16d | 0d |
| A35178 |  | 200BL5: Post Hang QC Inspecitons | resource dependent | 5d | 2027-05-17 | 2027-05-21 | A35188 | 16d | 13d |
| A35198 |  | 200BL5: Finish Drywall | resource dependent | 7d | 2027-06-11 | 2027-06-22 | A35178, A47638 | 3d | 0d |
| A35208 |  | 200BL5: Prime Paint | resource dependent | 3d | 2027-06-23 | 2027-06-25 | A35198, A47648 | 12d | 0d |
| A35218 |  | 200BL5: Gypcrete Prep | resource dependent | 2d | 2027-06-28 | 2027-06-29 | A35208 | 12d | 0d |
| A35228 |  | 200BL5: Install Gypcrete | resource dependent | 2d | 2027-06-30 | 2027-07-01 | A35218 | 12d | 0d |
| A35238 |  | 200BL5: Install AHU/WH | resource dependent | 2d | 2027-07-02 | 2027-07-06 | A35228, A47658 | 47d | 5d |
| A35248 |  | 200BL5: Shower Surrounds | resource dependent | 3d | 2027-07-02 | 2027-07-07 | A35228, A47668 | 31d | 0d |
| A35258 |  | 200BL5: Vanities and Kitchen Casework | resource dependent | 6d | 2027-07-09 | 2027-07-16 | A35228 FS+4d, A47678 | 12d | 0d |
| A35268 |  | 200BL5: Install Countertops | resource dependent | 4d | 2027-07-19 | 2027-07-22 | A35258, A47688 | 30d | 0d |
| A35298 |  | 200BL5: Install Shower Doors | resource dependent | 5d | 2027-07-22 | 2027-07-28 | A35248 FS+10d, A47718 | 31d | 1d |
| A35278 |  | 200BL5: Install Interior Doors & Trim | resource dependent | 5d | 2027-07-23 | 2027-07-29 | A35268, A47708 | 30d | 0d |
| A35288 |  | 200BL5: Kitchen Backsplash | resource dependent | 3d | 2027-07-23 | 2027-07-27 | A35268 | 32d | 2d |
| A35308 |  | 200BL5: Drywall Touch-Up | resource dependent | 3d | 2027-07-30 | 2027-08-03 | A35238, A35278, A35288, A35298 | 30d | 0d |
| A35368 |  | 200BL5: First Finish Paint (Ceilings, Trim, Doors & Walls) | resource dependent | 5d | 2027-08-04 | 2027-08-10 | A35308, A47738 | 30d | 0d |
| A35378 |  | 200BL5: MEPS Ceiling Trim Out | resource dependent | 3d | 2027-08-11 | 2027-08-13 | A35368, A47748 | 30d | 0d |
| A35388 |  | 200BL5: Install Flooring | resource dependent | 5d | 2027-08-16 | 2027-08-20 | A35378, A47758 | 30d | 0d |
| A35398 |  | 200BL5: Minor Appliance Delivery | resource dependent | 2d | 2027-08-23 | 2027-08-24 | A35388 | 42d | 0d |
| A35408 |  | 200BL5: MEP Trim-Out DW, Disposal & Sink Install | resource dependent | 3d | 2027-08-25 | 2027-08-27 | A35398 | 42d | 0d |
| A35418 |  | 200BL5: Install Door Hardware | resource dependent | 3d | 2027-08-30 | 2027-09-01 | A35408 | 42d | 0d |
| A35428 |  | 200BL5: Unit Accessories | resource dependent | 2d | 2027-09-02 | 2027-09-03 | A35418, A47798 | 42d | 0d |
| A35438 |  | 200BL5: Major Appliance Delivery - Install Refrigerator, Microwave, W/D | resource dependent | 2d | 2027-09-02 | 2027-09-03 | A35418 | 42d | 0d |
| A35498 |  | 200BL5: Rough Clean | resource dependent | 4d | 2027-09-07 | 2027-09-10 | A35428, A35438, A47818 | 42d | 0d |

| ID | WBS | Activity | Type | Duration | Start | Finish | Predecessors | Total float | Free float |
| --- | --- | --- | --- | --- | --- | --- | --- | --- | --- |
|  | 190 | **Level 5 Common Areas** |  |  | 2027-05-11 | 2027-09-21 |  |  |  |
| A35318 |  | 200BL5: Stock Drywall | resource dependent | 1d | 2027-05-11 | 2027-05-11 | A35168 | 222d | 3d |
| A35328 |  | 200BL5: Hang/Finish Drywall | resource dependent | 4d | 2027-05-17 | 2027-05-20 | A35188, A35318 | 219d | 24d |
| A35338 |  | 200BL5: Prime Paint | resource dependent | 1d | 2027-06-28 | 2027-06-28 | A35208, A35328 | 195d | 22d |
| A35348 |  | 200BL5: Install Wood Base | resource dependent | 1d | 2027-07-30 | 2027-07-30 | A35278, A35338 | 173d | 7d |
| A35358 |  | 200BL5: First Finish Paint | resource dependent | 2d | 2027-08-11 | 2027-08-12 | A35348, A35368 | 166d | 1d |
| A35448 |  | 200BL5: MEP Device Trim-Out | resource dependent | 1d | 2027-08-16 | 2027-08-16 | A35358, A35378 | 165d | 4d |
| A35458 |  | 200BL5: Install Flooring | resource dependent | 1d | 2027-08-23 | 2027-08-23 | A35388, A35448 | 161d | 13d |
| A35468 |  | 200BL5: Rough Clean | resource dependent | 1d | 2027-09-13 | 2027-09-13 | A35458, A35498 | 148d | 0d |
| A35478 |  | 200BL5: JCC Punchlist | resource dependent | 5d | 2027-09-14 | 2027-09-20 | A35468 | 148d | 0d |
| A35488 |  | 200BL5: Final Clean | resource dependent | 1d | 2027-09-21 | 2027-09-21 | A35478 | 148d |  |
|  | 191 | **Level 4** |  |  | 2027-04-30 | 2027-09-30 |  |  |  |
|  | 192 | **Level 4 Residential Units** |  |  | 2027-04-30 | 2027-09-21 |  |  |  |
| A35508 |  | 200BL4: Insulation | resource dependent | 3d | 2027-04-30 | 2027-05-04 | A35058 | 18d | 0d |
| A35518 |  | 200BL4: Insulation Inspection | resource dependent | 1d | 2027-05-05 | 2027-05-05 | A35508 | 18d | 0d |
| A35528 |  | 200BL4: Install Resilient Channel | resource dependent | 2d | 2027-05-05 | 2027-05-06 | A35518 FS-1d | 18d | 0d |
| A35538 |  | 200BL4: Pre-Hang QC Inspections | resource dependent | 5d | 2027-05-07 | 2027-05-13 | A35528 | 18d | 0d |
| A35548 |  | 200BL4: Stock Drywall | resource dependent | 2d | 2027-05-14 | 2027-05-17 | A35538 | 18d | 0d |
| A35558 |  | 200BL4: Hang Drywall | resource dependent | 4d | 2027-05-18 | 2027-05-21 | A35188, A35548 | 18d | 0d |
| A35568 |  | 200BL4: Post Hang QC Inspecitons | resource dependent | 5d | 2027-05-24 | 2027-05-28 | A35558 | 18d | 15d |
| A35578 |  | 200BL4: Finish Drywall | resource dependent | 7d | 2027-06-23 | 2027-07-01 | A35198, A35568 | 3d | 0d |
| A35588 |  | 200BL4: Prime Paint | resource dependent | 3d | 2027-07-02 | 2027-07-07 | A35578, A35208 | 11d | 0d |
| A35598 |  | 200BL4: Gypcrete Prep | resource dependent | 2d | 2027-07-08 | 2027-07-09 | A35588 | 11d | 0d |
| A35608 |  | 200BL4: Install Gypcrete | resource dependent | 2d | 2027-07-12 | 2027-07-13 | A35598 | 11d | 0d |
| A35618 |  | 200BL4: Install AHU/WH | resource dependent | 2d | 2027-07-14 | 2027-07-15 | A35608, A35238 | 45d | 5d |
| A35628 |  | 200BL4: Shower Surrounds | resource dependent | 3d | 2027-07-14 | 2027-07-16 | A35608, A35248 | 29d | 0d |
| A35638 |  | 200BL4: Vanities and Kitchen Casework | resource dependent | 6d | 2027-07-20 | 2027-07-27 | A35258, A35608 FS+4d | 11d | 0d |
| A35648 |  | 200BL4: Install Countertops | resource dependent | 4d | 2027-07-28 | 2027-08-02 | A35268, A35638 | 28d | 0d |
| A35678 |  | 200BL4: Install Shower Doors | resource dependent | 5d | 2027-08-02 | 2027-08-06 | A35628 FS+10d, A35298 | 29d | 1d |
| A35658 |  | 200BL4: Kitchen Backsplash | resource dependent | 3d | 2027-08-03 | 2027-08-05 | A35648 | 30d | 2d |
| A35668 |  | 200BL4: Install Interior Doors & Trim | resource dependent | 5d | 2027-08-03 | 2027-08-09 | A35278, A35648 | 28d | 0d |
| A35688 |  | 200BL4: Drywall Touch-Up | resource dependent | 3d | 2027-08-10 | 2027-08-12 | A35618, A35658, A35668, A35678 | 28d | 0d |
| A35698 |  | 200BL4: First Finish Paint (Ceilings, Trim, Doors & Walls) | resource dependent | 5d | 2027-08-13 | 2027-08-19 | A35368, A35688 | 28d | 0d |
| A35708 |  | 200BL4: MEPS Ceiling Trim Out | resource dependent | 3d | 2027-08-20 | 2027-08-24 | A35698, A35378 | 28d | 0d |
| A35718 |  | 200BL4: Install Flooring | resource dependent | 5d | 2027-08-25 | 2027-08-31 | A35388, A35708 | 28d | 0d |
| A35728 |  | 200BL4: Minor Appliance Delivery | resource dependent | 2d | 2027-09-01 | 2027-09-02 | A35718 | 41d | 0d |
| A35738 |  | 200BL4: MEP Trim-Out DW, Disposal & Sink Install | resource dependent | 3d | 2027-09-03 | 2027-09-08 | A35728 | 41d | 0d |
| A35748 |  | 200BL4: Install Door Hardware | resource dependent | 3d | 2027-09-09 | 2027-09-13 | A35738 | 41d | 0d |
| A35758 |  | 200BL4: Unit Accessories | resource dependent | 2d | 2027-09-14 | 2027-09-15 | A35748, A35428 | 41d | 0d |
| A35768 |  | 200BL4: Major Appliance Delivery - Install Refrigerator, Microwave, W/D | resource dependent | 2d | 2027-09-14 | 2027-09-15 | A35438, A35748 | 41d | 0d |
| A35778 |  | 200BL4: Rough Clean | resource dependent | 4d | 2027-09-16 | 2027-09-21 | A35758, A35768, A35498 | 41d | 0d |

| ID | WBS | Activity | Type | Duration | Start | Finish | Predecessors | Total float | Free float |
| --- | --- | --- | --- | --- | --- | --- | --- | --- | --- |
|  | 193 | **Level 4 Common Areas** |  |  | 2027-05-18 | 2027-09-30 |  |  |  |
| A35788 |  | 200BL4: Stock Drywall | resource dependent | 1d | 2027-05-18 | 2027-05-18 | A35548 | 217d | 3d |
| A35798 |  | 200BL4: Hang/Finish Drywall | resource dependent | 4d | 2027-05-24 | 2027-05-27 | A35558, A35788 | 214d | 26d |
| A35808 |  | 200BL4: Prime Paint | resource dependent | 1d | 2027-07-08 | 2027-07-08 | A35588, A35798 | 188d | 22d |
| A35818 |  | 200BL4: Install Wood Base | resource dependent | 1d | 2027-08-10 | 2027-08-10 | A35668, A35808 | 166d | 7d |
| A35828 |  | 200BL4: First Finish Paint | resource dependent | 2d | 2027-08-20 | 2027-08-23 | A35698, A35818 | 159d | 1d |
| A35838 |  | 200BL4: MEP Device Trim-Out | resource dependent | 1d | 2027-08-25 | 2027-08-25 | A35708, A35828 | 158d | 4d |
| A35848 |  | 200BL4: Install Flooring | resource dependent | 1d | 2027-09-01 | 2027-09-01 | A35718, A35838 | 154d | 13d |
| A35858 |  | 200BL4: Rough Clean | resource dependent | 1d | 2027-09-22 | 2027-09-22 | A35778, A35848 | 141d | 0d |
| A35868 |  | 200BL4: JCC Punchlist | resource dependent | 5d | 2027-09-23 | 2027-09-29 | A35858 | 141d | 0d |
| A35878 |  | 200BL4: Final Clean | resource dependent | 1d | 2027-09-30 | 2027-09-30 | A35868 | 141d |  |
|  | 194 | **Level 3** |  |  | 2027-05-07 | 2027-10-11 |  |  |  |
|  | 195 | **Level 3 Residential Units** |  |  | 2027-05-07 | 2027-09-30 |  |  |  |
| A35888 |  | 200BL3: Insulation | resource dependent | 3d | 2027-05-07 | 2027-05-11 | A35078 | 20d | 0d |
| A35898 |  | 200BL3: Insulation Inspection | resource dependent | 1d | 2027-05-12 | 2027-05-12 | A35888 | 20d | 0d |
| A35908 |  | 200BL3: Install Resilient Channel | resource dependent | 2d | 2027-05-12 | 2027-05-13 | A35898 FS-1d | 20d | 0d |
| A35918 |  | 200BL3: Pre-Hang QC Inspections | resource dependent | 5d | 2027-05-14 | 2027-05-20 | A35908 | 20d | 0d |
| A35928 |  | 200BL3: Stock Drywall | resource dependent | 2d | 2027-05-21 | 2027-05-24 | A35918 | 20d | 0d |
| A35938 |  | 200BL3: Hang Drywall | resource dependent | 4d | 2027-05-25 | 2027-05-28 | A35558, A35928 | 20d | 0d |
| A35948 |  | 200BL3: Post Hang QC Inspecitons | resource dependent | 5d | 2027-06-01 | 2027-06-07 | A35938 | 20d | 17d |
| A35958 |  | 200BL3: Finish Drywall | resource dependent | 7d | 2027-07-02 | 2027-07-13 | A35578, A35948 | 3d | 0d |
| A35968 |  | 200BL3: Prime Paint | resource dependent | 3d | 2027-07-14 | 2027-07-16 | A35958, A35588 | 10d | 0d |
| A35978 |  | 200BL3: Gypcrete Prep | resource dependent | 2d | 2027-07-19 | 2027-07-20 | A35968 | 10d | 0d |
| A35988 |  | 200BL3: Install Gypcrete | resource dependent | 2d | 2027-07-21 | 2027-07-22 | A35978 | 10d | 0d |
| A35998 |  | 200BL3: Install AHU/WH | resource dependent | 2d | 2027-07-23 | 2027-07-26 | A35988, A35618 | 43d | 5d |
| A36008 |  | 200BL3: Shower Surrounds | resource dependent | 3d | 2027-07-23 | 2027-07-27 | A35988, A35628 | 27d | 0d |
| A36018 |  | 200BL3: Vanities and Kitchen Casework | resource dependent | 6d | 2027-07-29 | 2027-08-05 | A35638, A35988 FS+4d | 10d | 0d |
| A36028 |  | 200BL3: Install Countertops | resource dependent | 4d | 2027-08-06 | 2027-08-11 | A35648, A36018 | 26d | 0d |
| A36058 |  | 200BL3: Install Shower Doors | resource dependent | 5d | 2027-08-11 | 2027-08-17 | A36008 FS+10d, A35678 | 27d | 1d |
| A36038 |  | 200BL3: Kitchen Backsplash | resource dependent | 3d | 2027-08-12 | 2027-08-16 | A36028 | 28d | 2d |
| A36048 |  | 200BL3: Install Interior Doors & Trim | resource dependent | 5d | 2027-08-12 | 2027-08-18 | A35668, A36028 | 26d | 0d |
| A36068 |  | 200BL3: Drywall Touch-Up | resource dependent | 3d | 2027-08-19 | 2027-08-23 | A35998, A36038, A36048, A36058 | 26d | 0d |
| A36078 |  | 200BL3: First Finish Paint (Ceilings, Trim, Doors & Walls) | resource dependent | 5d | 2027-08-24 | 2027-08-30 | A35698, A36068 | 26d | 0d |
| A36088 |  | 200BL3: MEPS Ceiling Trim Out | resource dependent | 3d | 2027-08-31 | 2027-09-02 | A36078, A35708 | 26d | 0d |
| A36098 |  | 200BL3: Install Flooring | resource dependent | 5d | 2027-09-03 | 2027-09-10 | A35718, A36088 | 26d | 0d |
| A36108 |  | 200BL3: Minor Appliance Delivery | resource dependent | 2d | 2027-09-13 | 2027-09-14 | A36098 | 40d | 0d |
| A36118 |  | 200BL3: MEP Trim-Out DW, Disposal & Sink Install | resource dependent | 3d | 2027-09-15 | 2027-09-17 | A36108 | 40d | 0d |
| A36128 |  | 200BL3: Install Door Hardware | resource dependent | 3d | 2027-09-20 | 2027-09-22 | A36118 | 40d | 0d |
| A36138 |  | 200BL3: Unit Accessories | resource dependent | 2d | 2027-09-23 | 2027-09-24 | A36128, A35758 | 40d | 0d |
| A36148 |  | 200BL3: Major Appliance Delivery - Install Refrigerator, Microwave, W/D | resource dependent | 2d | 2027-09-23 | 2027-09-24 | A35768, A36128 | 40d | 0d |
| A36158 |  | 200BL3: Rough Clean | resource dependent | 4d | 2027-09-27 | 2027-09-30 | A36138, A36148, A35778 | 40d | 0d |

| ID | WBS | Activity | Type | Duration | Start | Finish | Predecessors | Total float | Free float |
| --- | --- | --- | --- | --- | --- | --- | --- | --- | --- |
|  | 196 | **Level 3 Common Areas** |  |  | 2027-05-25 | 2027-10-11 |  |  |  |
| A36168 |  | 200BL3: Stock Drywall | resource dependent | 1d | 2027-05-25 | 2027-05-25 | A35928 | 212d | 3d |
| A36178 |  | 200BL3: Hang/Finish Drywall | resource dependent | 4d | 2027-06-01 | 2027-06-04 | A35938, A36168 | 209d | 28d |
| A36188 |  | 200BL3: Prime Paint | resource dependent | 1d | 2027-07-19 | 2027-07-19 | A35968, A36178 | 181d | 22d |
| A36198 |  | 200BL3: Install Wood Base | resource dependent | 1d | 2027-08-19 | 2027-08-19 | A36048, A36188 | 159d | 7d |
| A36208 |  | 200BL3: First Finish Paint | resource dependent | 2d | 2027-08-31 | 2027-09-01 | A36078, A36198 | 152d | 1d |
| A36218 |  | 200BL3: MEP Device Trim-Out | resource dependent | 1d | 2027-09-03 | 2027-09-03 | A36088, A36208 | 151d | 4d |
| A36228 |  | 200BL3: Install Flooring | resource dependent | 1d | 2027-09-13 | 2027-09-13 | A36098, A36218 | 147d | 13d |
| A36238 |  | 200BL3: Rough Clean | resource dependent | 1d | 2027-10-01 | 2027-10-01 | A36158, A36228 | 134d | 0d |
| A36248 |  | 200BL3: JCC Punchlist | resource dependent | 5d | 2027-10-04 | 2027-10-08 | A36238 | 134d | 0d |
| A36258 |  | 200BL3: Final Clean | resource dependent | 1d | 2027-10-11 | 2027-10-11 | A36248 | 134d |  |
|  | 197 | **Level 2** |  |  | 2027-05-14 | 2027-10-20 |  |  |  |
|  | 198 | **Level 2 Residential Units** |  |  | 2027-05-14 | 2027-10-11 |  |  |  |
| A36268 |  | 200BL2: Insulation | resource dependent | 3d | 2027-05-14 | 2027-05-18 | A35098 | 19d | 0d |
| A36278 |  | 200BL2: Insulation Inspection | resource dependent | 1d | 2027-05-19 | 2027-05-19 | A36268 | 19d | 0d |
| A36288 |  | 200BL2: Install Resilient Channel | resource dependent | 2d | 2027-05-19 | 2027-05-20 | A36278 FS-1d | 19d | 0d |
| A36298 |  | 200BL2: Pre-Hang QC Inspections | resource dependent | 5d | 2027-05-21 | 2027-05-27 | A36288 | 19d | 0d |
| A36308 |  | 200BL2: Stock Drywall | resource dependent | 2d | 2027-05-28 | 2027-06-01 | A36298 | 19d | 0d |
| A36318 |  | 200BL2: Hang Drywall | resource dependent | 4d | 2027-06-02 | 2027-06-07 | A35938, A36308 | 19d | 0d |
| A36328 |  | 200BL2: Post Hang QC Inspecitons | resource dependent | 5d | 2027-06-08 | 2027-06-14 | A36318 | 22d | 19d |
| A36338 |  | 200BL2: Finish Drywall | resource dependent | 7d | 2027-07-14 | 2027-07-22 | A35958, A36328 | 3d | 0d |
| A36348 |  | 200BL2: Prime Paint | resource dependent | 3d | 2027-07-23 | 2027-07-27 | A36338, A35968 | 9d | 0d |
| A36358 |  | 200BL2: Gypcrete Prep | resource dependent | 2d | 2027-07-28 | 2027-07-29 | A36348 | 9d | 0d |
| A36368 |  | 200BL2: Install Gypcrete | resource dependent | 2d | 2027-07-30 | 2027-08-02 | A36358 | 9d | 0d |
| A36378 |  | 200BL2: Install AHU/WH | resource dependent | 2d | 2027-08-03 | 2027-08-04 | A36368, A35998 | 39d | 1d |
| A36388 |  | 200BL2: Shower Surrounds | resource dependent | 3d | 2027-08-03 | 2027-08-05 | A36368, A36008 | 25d | 0d |
| A36398 |  | 200BL2: Vanities and Kitchen Casework | resource dependent | 6d | 2027-08-09 | 2027-08-16 | A36018, A36368 FS+4d | 9d | 0d |
| A36408 |  | 200BL2: Install Countertops | resource dependent | 4d | 2027-08-17 | 2027-08-20 | A36028, A36398 | 24d | 0d |
| A36438 |  | 200BL2: Install Shower Doors | resource dependent | 5d | 2027-08-20 | 2027-08-26 | A36388 FS+10d, A36058 | 25d | 0d |
| A36418 |  | 200BL2: Kitchen Backsplash | resource dependent | 3d | 2027-08-23 | 2027-08-25 | A36408 | 26d | 2d |
| A36428 |  | 200BL2: Install Interior Doors & Trim | resource dependent | 5d | 2027-08-23 | 2027-08-27 | A36048, A36408 | 24d | 0d |
| A36448 |  | 200BL2: Drywall Touch-Up | resource dependent | 3d | 2027-08-30 | 2027-09-01 | A36378, A36418, A36428, A36438 | 24d | 0d |
| A36458 |  | 200BL2: First Finish Paint (Ceilings, Trim, Doors & Walls) | resource dependent | 5d | 2027-09-02 | 2027-09-09 | A36078, A36448 | 24d | 0d |
| A36468 |  | 200BL2: MEPS Ceiling Trim Out | resource dependent | 3d | 2027-09-10 | 2027-09-14 | A36458, A36088 | 24d | 0d |
| A36478 |  | 200BL2: Install Flooring | resource dependent | 5d | 2027-09-15 | 2027-09-21 | A36098, A36468 | 24d | 0d |
| A36488 |  | 200BL2: Minor Appliance Delivery | resource dependent | 2d | 2027-09-22 | 2027-09-23 | A36478 | 38d | 0d |
| A36498 |  | 200BL2: MEP Trim-Out DW, Disposal & Sink Install | resource dependent | 3d | 2027-09-24 | 2027-09-28 | A36488 | 38d | 0d |
| A36508 |  | 200BL2: Install Door Hardware | resource dependent | 3d | 2027-09-29 | 2027-10-01 | A36498 | 38d | 0d |
| A36518 |  | 200BL2: Unit Accessories | resource dependent | 2d | 2027-10-04 | 2027-10-05 | A36508, A36138 | 38d | 0d |
| A36528 |  | 200BL2: Major Appliance Delivery - Install Refrigerator, Microwave, W/D | resource dependent | 2d | 2027-10-04 | 2027-10-05 | A36148, A36508 | 38d | 0d |
| A36538 |  | 200BL2: Rough Clean | resource dependent | 4d | 2027-10-06 | 2027-10-11 | A36518, A36528, A36158 | 38d | 0d |

| ID | WBS | Activity | Type | Duration | Start | Finish | Predecessors | Total float | Free float |
| --- | --- | --- | --- | --- | --- | --- | --- | --- | --- |
|  | 199 | **Level 2 Common Areas** |  |  | 2027-06-02 | 2027-10-20 |  |  |  |
| A36548 |  | 200BL2: Stock Drywall | resource dependent | 1d | 2027-06-02 | 2027-06-02 | A36308 | 207d | 3d |
| A36558 |  | 200BL2: Hang/Finish Drywall | resource dependent | 4d | 2027-06-08 | 2027-06-11 | A36318, A36548 | 204d | 30d |
| A36568 |  | 200BL2: Prime Paint | resource dependent | 1d | 2027-07-28 | 2027-07-28 | A36348, A36558 | 174d | 22d |
| A36578 |  | 200BL2: Install Wood Base | resource dependent | 1d | 2027-08-30 | 2027-08-30 | A36428, A36568 | 152d | 7d |
| A36588 |  | 200BL2: First Finish Paint | resource dependent | 2d | 2027-09-10 | 2027-09-13 | A36458, A36578 | 145d | 1d |
| A36598 |  | 200BL2: MEP Device Trim-Out | resource dependent | 1d | 2027-09-15 | 2027-09-15 | A36468, A36588 | 144d | 4d |
| A36608 |  | 200BL2: Install Flooring | resource dependent | 1d | 2027-09-22 | 2027-09-22 | A36478, A36598 | 140d | 13d |
| A36618 |  | 200BL2: Rough Clean | resource dependent | 1d | 2027-10-12 | 2027-10-12 | A36538, A36608 | 127d | 0d |
| A36628 |  | 200BL2: JCC Punchlist | resource dependent | 5d | 2027-10-13 | 2027-10-19 | A36618 | 127d | 0d |
| A36638 |  | 200BL2: Final Clean | resource dependent | 1d | 2027-10-20 | 2027-10-20 | A36628 | 127d |  |
|  | 200 | **Level 1** |  |  | 2027-05-21 | 2027-10-28 |  |  |  |
|  | 201 | **Level 1 Residential Units** |  |  | 2027-05-21 | 2027-10-19 |  |  |  |
| A36648 |  | 200BL1: Insulation | resource dependent | 3d | 2027-05-21 | 2027-05-25 | A35118 | 18d | 0d |
| A36658 |  | 200BL1: Insulation Inspection | resource dependent | 1d | 2027-05-26 | 2027-05-26 | A36648 | 18d | 0d |
| A36668 |  | 200BL1: Install Resilient Channel | resource dependent | 2d | 2027-05-26 | 2027-05-27 | A36658 FS-1d | 18d | 0d |
| A36678 |  | 200BL1: Pre-Hang QC Inspections | resource dependent | 5d | 2027-05-28 | 2027-06-04 | A36668 | 18d | 0d |
| A36688 |  | 200BL1: Stock Drywall | resource dependent | 2d | 2027-06-07 | 2027-06-08 | A36678 | 18d | 0d |
| A36698 |  | 200BL1: Hang Drywall | resource dependent | 4d | 2027-06-09 | 2027-06-14 | A36318, A36688 | 18d | 0d |
| A36708 |  | 200BL1: Post Hang QC Inspecitons | resource dependent | 5d | 2027-06-15 | 2027-06-22 | A36698 | 24d | 21d |
| A36718 |  | 200BL1: Finish Drywall | resource dependent | 7d | 2027-07-23 | 2027-08-02 | A36338, A36708 | 3d | 0d |
| A36728 |  | 200BL1: Prime Paint | resource dependent | 3d | 2027-08-03 | 2027-08-05 | A36718, A36348 | 11d | 0d |
| A36738 |  | 200BL1: Install AHU/WH | resource dependent | 2d | 2027-08-06 | 2027-08-09 | A36728, A36378 | 38d | 9d |
| A36748 |  | 200BL1: Shower Surrounds | resource dependent | 3d | 2027-08-06 | 2027-08-10 | A36728, A36388 | 27d | 2d |
| A36758 |  | 200BL1: Vanities and Kitchen Casework | resource dependent | 6d | 2027-08-17 | 2027-08-24 | A36398 | 9d | 0d |
| A36768 |  | 200BL1: Install Countertops | resource dependent | 4d | 2027-08-25 | 2027-08-30 | A36408, A36758 | 23d | 0d |
| A36798 |  | 200BL1: Install Shower Doors | resource dependent | 5d | 2027-08-27 | 2027-09-02 | A36748 FS+10d, A36438 | 25d | 2d |
| A36778 |  | 200BL1: Kitchen Backsplash | resource dependent | 3d | 2027-08-31 | 2027-09-02 | A36768 | 25d | 2d |
| A36788 |  | 200BL1: Install Interior Doors & Trim | resource dependent | 5d | 2027-08-31 | 2027-09-07 | A36428, A36768 | 23d | 0d |
| A36808 |  | 200BL1: Drywall Touch-Up | resource dependent | 3d | 2027-09-08 | 2027-09-10 | A36738, A36778, A36788, A36798 | 23d | 0d |
| A36818 |  | 200BL1: First Finish Paint (Ceilings, Trim, Doors & Walls) | resource dependent | 5d | 2027-09-13 | 2027-09-17 | A36458, A36808 | 23d | 0d |
| A36828 |  | 200BL1: MEPS Ceiling Trim Out | resource dependent | 3d | 2027-09-20 | 2027-09-22 | A36818, A36468 | 23d | 0d |
| A36838 |  | 200BL1: Install Flooring | resource dependent | 5d | 2027-09-23 | 2027-09-29 | A36478, A36828 | 23d | 0d |
| A36848 |  | 200BL1: Minor Appliance Delivery | resource dependent | 2d | 2027-09-30 | 2027-10-01 | A36838 | 36d | 0d |
| A36858 |  | 200BL1: MEP Trim-Out DW, Disposal & Sink Install | resource dependent | 3d | 2027-10-04 | 2027-10-06 | A36848 | 36d | 0d |
| A36868 |  | 200BL1: Install Door Hardware | resource dependent | 3d | 2027-10-07 | 2027-10-11 | A36858 | 36d | 0d |
| A36878 |  | 200BL1: Unit Accessories | resource dependent | 2d | 2027-10-12 | 2027-10-13 | A36868, A36518 | 36d | 0d |
| A36888 |  | 200BL1: Major Appliance Delivery - Install Refrigerator, Microwave, W/D | resource dependent | 2d | 2027-10-12 | 2027-10-13 | A36528, A36868 | 36d | 0d |
| A36898 |  | 200BL1: Rough Clean | resource dependent | 4d | 2027-10-14 | 2027-10-19 | A36878, A36888, A36538 | 36d | 0d |

| ID | WBS | Activity | Type | Duration | Start | Finish | Predecessors | Total float | Free float |
| --- | --- | --- | --- | --- | --- | --- | --- | --- | --- |
|  | 202 | **Level 1 Common Areas** |  |  | 2027-06-09 | 2027-10-28 |  |  |  |
| A36908 |  | 200BL1: Stock Drywall | resource dependent | 1d | 2027-06-09 | 2027-06-09 | A36688 | 202d | 3d |
| A36918 |  | 200BL1: Hang/Finish Drywall | resource dependent | 4d | 2027-06-15 | 2027-06-21 | A36698, A36908 | 199d | 32d |
| A36928 |  | 200BL1: Prime Paint | resource dependent | 1d | 2027-08-06 | 2027-08-06 | A36728, A36918 | 167d | 21d |
| A36938 |  | 200BL1: Install Wood Base | resource dependent | 1d | 2027-09-08 | 2027-09-08 | A36788, A36928 | 146d | 7d |
| A36948 |  | 200BL1: First Finish Paint | resource dependent | 2d | 2027-09-20 | 2027-09-21 | A36818, A36938 | 139d | 1d |
| A36958 |  | 200BL1: MEP Device Trim-Out | resource dependent | 1d | 2027-09-23 | 2027-09-23 | A36828, A36948 | 138d | 4d |
| A36968 |  | 200BL1: Install Flooring | resource dependent | 1d | 2027-09-30 | 2027-09-30 | A36838, A36958 | 134d | 13d |
| A36978 |  | 200BL1: Rough Clean | resource dependent | 1d | 2027-10-20 | 2027-10-20 | A36898, A36968 | 121d | 0d |
| A36988 |  | 200BL1: JCC Punchlist | resource dependent | 5d | 2027-10-21 | 2027-10-27 | A36978 | 121d | 0d |
| A36998 |  | 200BL1: Final Clean | resource dependent | 1d | 2027-10-28 | 2027-10-28 | A36988 | 121d |  |
|  | 203 | **Final Inspections** |  |  | 2027-09-07 | 2027-10-18 |  |  |  |
| A37008 |  | 200BL5: Final Inspections | resource dependent | 3d | 2027-09-07 | 2027-09-09 | A35438 | 120d |  |
| A37018 |  | 200BL4: Final Inspections | resource dependent | 3d | 2027-09-16 | 2027-09-20 | A35768 | 113d |  |
| A37028 |  | 200BL3: Final Inspections | resource dependent | 3d | 2027-09-27 | 2027-09-29 | A36148 | 106d |  |
| A37038 |  | 200BL2: Final Inspections | resource dependent | 3d | 2027-10-06 | 2027-10-08 | A36528 | 99d |  |
| A37048 |  | 200BL1: Final Inspections | resource dependent | 3d | 2027-10-14 | 2027-10-18 | A36888 | 93d |  |
|  | 204 | **JCC/Owner Punch** |  |  | 2027-09-13 | 2027-11-16 |  |  |  |
|  | 205 | **JCC Punch** |  |  | 2027-09-13 | 2027-11-02 |  |  |  |
| A37058 |  | Level 5 JCC Punch | resource dependent | 10d | 2027-09-13 | 2027-09-24 | A35498, A48018 FS-9d | 42d | 0d |
| A37068 |  | Level 4 JCC Punch | resource dependent | 10d | 2027-09-22 | 2027-10-05 | A35778, A37058 FS-4d | 41d | 0d |
| A37078 |  | Level 3 JCC Punch | resource dependent | 10d | 2027-10-01 | 2027-10-14 | A36158, A37068 FS-4d | 40d | 0d |
| A37088 |  | Level 2 JCC Punch | resource dependent | 10d | 2027-10-12 | 2027-10-25 | A36538, A37078 FS-4d | 39d | 0d |
| A37098 |  | Level 1 JCC Punch | resource dependent | 10d | 2027-10-20 | 2027-11-02 | A36898, A37088 FS-4d | 39d | 0d |

| ID | WBS | Activity | Type | Duration | Start | Finish | Predecessors | Total float | Free float |
| --- | --- | --- | --- | --- | --- | --- | --- | --- | --- |
|  | 206 | **Owner Punch** |  |  | 2027-09-27 | 2027-11-16 |  |  |  |
| A37108 |  | Level 5 Owner Punch | resource dependent | 10d | 2027-09-27 | 2027-10-08 | A37058 | 135d |  |
| A37118 |  | Level 4 Owner Punch | resource dependent | 10d | 2027-10-06 | 2027-10-19 | A37068 | 128d |  |
| A37128 |  | Level 3 Owner Punch | resource dependent | 10d | 2027-10-15 | 2027-10-28 | A37078 | 121d |  |
| A37138 |  | Level 2 Owner Punch | resource dependent | 10d | 2027-10-26 | 2027-11-08 | A37088 | 114d |  |
| A37148 |  | Level 1 Owner Punch | resource dependent | 10d | 2027-11-03 | 2027-11-16 | A37098 | 108d |  |
|  | 285 | **Building 200 A** |  |  | 2026-05-08 | 2028-01-11 |  |  |  |
|  | 130 | **Structure** |  |  | 2026-05-08 | 2027-04-30 |  |  |  |
|  | 131 | **Concrete** |  |  | 2026-05-08 | 2026-06-26 |  |  |  |
|  | WBS191 | **SOG 3** |  |  | 2026-05-08 | 2026-06-26 |  |  |  |
| A68168 |  | SOG 3: Edge Forms | resource dependent | 6d | 2026-05-08 | 2026-05-15 | A68248 | 1d |  |
| A68178 |  | SOG 3: Underground MEPs | resource dependent | 8d | 2026-05-18 | 2026-05-28 | A68258, A68168 FS-1d | 0d |  |
| A68188 |  | SOG 3: Excavate Thickened Slabs |  | 5d | 2026-05-29 | 2026-06-04 | A68178, A68268 | 0d |  |
| A68198 |  | SOG 3: Backfill Stone Subgrade | resource dependent | 3d | 2026-06-05 | 2026-06-09 | A68188, A68278 | 0d |  |
| A68208 |  | SOG 3: Install Vapor Barrier |  | 3d | 2026-06-10 | 2026-06-12 | A68198, A68288 | 25d | 0d |
| A68218 |  | SOG 3: Rebar / Inspect | resource dependent | 3d | 2026-06-15 | 2026-06-17 | A68208, A68298 | 25d | 0d |
| A68228 |  | SOG 3: Pour SOG | resource dependent | 1d | 2026-06-18 | 2026-06-18 | A68218 | 25d | 0d |
| A68238 |  | SOG 3: Strip forms | resource dependent | 5d | 2026-06-22 | 2026-06-26 | A68228 | 459d |  |
|  | 134 | **CMU Shafts** |  |  | 2026-06-30 | 2026-07-21 |  |  |  |
| A37428 |  | 200A: Stair C | resource dependent | 15d | 2026-06-30 | 2026-07-21 | A68228, A33788 | 19d | 0d |
|  | WBS231 | **Structural Steel** |  |  | 2026-07-22 | 2026-12-29 |  |  |  |
| A68648 |  | Stair Pans & Risers |  | 8d | 2026-07-22 | 2026-07-31 | A37428 | 435d |  |
|  | WBS241 | **Bridge 200A to Railroad Ave.** |  |  | 2026-12-15 | 2026-12-29 |  |  |  |
| A68658 |  | Bridge HSS Column_L1-L2 |  | 1d | 2026-12-15 | 2026-12-15 | A68628 | 333d | 0d |
| A68668 |  | Bridge Structure |  | 5d | 2026-12-16 | 2026-12-22 | A68658 | 333d | 0d |
| A68678 |  | Bridge Structural Inspections |  | 3d | 2026-12-23 | 2026-12-29 | A68668 | 333d |  |

| ID | WBS | Activity | Type | Duration | Start | Finish | Predecessors | Total float | Free float | Constraint |
| --- | --- | --- | --- | --- | --- | --- | --- | --- | --- | --- |
|  | 135 | **Wood Framing** |  |  | 2027-02-10 | 2027-04-06 |  |  |  |  |
|  | 136 | **Level 1 (12,000 SF)** |  |  | 2027-02-10 | 2027-02-17 |  |  |  |  |
| A37448 |  | 200AL1: Layout | resource dependent | 2d | 2027-02-10 | 2027-02-11 | A37428 | 0d |  | as late as possible |
| A37458 |  | 200AL1: Wall Framing | resource dependent | 3d | 2027-02-11 | 2027-02-15 | A37448 FS-1d, A33988, A69548 | 0d |  |  |
| A37468 |  | 200AL1: Floor Trusses | resource dependent | 2d | 2027-02-15 | 2027-02-16 | A37458 FS-1d | 0d |  |  |
| A37478 |  | 200AL1: Decking | resource dependent | 2d | 2027-02-16 | 2027-02-17 | A37468 FS-1d | 0d |  |  |
|  | 137 | **Level 2 (12,000 SF)** |  |  | 2027-02-18 | 2027-02-25 |  |  |  |  |
| A37488 |  | 200AL2: Layout | resource dependent | 1d | 2027-02-18 | 2027-02-18 | A37478 | 0d |  |  |
| A37498 |  | 200AL2: Wall Framing | resource dependent | 3d | 2027-02-19 | 2027-02-23 | A37488 | 0d |  |  |
| A37508 |  | 200AL2: Floor Trusses | resource dependent | 2d | 2027-02-23 | 2027-02-24 | A37498 FS-1d | 0d |  |  |
| A37518 |  | 200AL2: Decking | resource dependent | 2d | 2027-02-24 | 2027-02-25 | A37508 FS-1d | 0d |  |  |
|  | 138 | **Level 3 (12,000 SF)** |  |  | 2027-02-26 | 2027-03-05 |  |  |  |  |
| A37528 |  | 200AL3: Layout | resource dependent | 1d | 2027-02-26 | 2027-02-26 | A37518 | 0d |  |  |
| A37538 |  | 200AL3: Wall Framing | resource dependent | 3d | 2027-03-01 | 2027-03-03 | A37528 | 0d |  |  |
| A37548 |  | 200AL3: Floor Trusses | resource dependent | 2d | 2027-03-03 | 2027-03-04 | A37538 FS-1d | 0d |  |  |
| A37558 |  | 200AL3: Decking | resource dependent | 2d | 2027-03-04 | 2027-03-05 | A37548 FS-1d | 0d |  |  |
|  | 139 | **Level 4 (12,000 SF)** |  |  | 2027-03-08 | 2027-03-15 |  |  |  |  |
| A37568 |  | 200AL4: Layout | resource dependent | 1d | 2027-03-08 | 2027-03-08 | A37558 | 0d |  |  |
| A37578 |  | 200AL4: Wall Framing | resource dependent | 3d | 2027-03-09 | 2027-03-11 | A37568 | 0d |  |  |
| A37588 |  | 200AL4: Floor Trusses | resource dependent | 2d | 2027-03-11 | 2027-03-12 | A37578 FS-1d | 0d |  |  |
| A37598 |  | 200AL4: Decking | resource dependent | 2d | 2027-03-12 | 2027-03-15 | A37588 FS-1d | 0d |  |  |
|  | 140 | **Level 5 (12,000 SF)** |  |  | 2027-03-16 | 2027-04-06 |  |  |  |  |
| A37608 |  | 200AL5: Layout | resource dependent | 1d | 2027-03-16 | 2027-03-16 | A37598 | 0d |  |  |
| A37618 |  | 200AL5: Wall Framing | resource dependent | 3d | 2027-03-17 | 2027-03-19 | A37608 | 0d |  |  |
| A37628 |  | 200AL5: Roof Trusses | resource dependent | 4d | 2027-03-19 | 2027-03-24 | A37618 FS-1d | 0d |  |  |
| A37638 |  | 200AL5: Roof Decking | resource dependent | 3d | 2027-03-23 | 2027-03-25 | A37628 FS-2d | 6d | 0d |  |
| A37648 |  | 200AL5: Build Out Parapets | resource dependent | 3d | 2027-03-25 | 2027-03-29 | A37638 FS-1d | 6d | 0d |  |
| A37668 |  | 200AL5: MEP Roof Penetrations/Davits | resource dependent | 2d | 2027-03-26 | 2027-03-29 | A37638 | 270d |  |  |
| A41048 |  | 200AL5: Roof Deck QC Inspection |  | 5d | 2027-03-30 | 2027-04-05 | A37648 | 6d | 0d |  |
| A37658 |  | 200AL5: Roof Decking City Inspection | resource dependent | 1d | 2027-04-06 | 2027-04-06 | A37648, A41048 | 6d | 0d |  |

| ID | WBS | Activity | Type | Duration | Start | Finish | Predecessors | Total float | Free float |
| --- | --- | --- | --- | --- | --- | --- | --- | --- | --- |
|  | 141 | **Exterior Sheathing** |  |  | 2027-03-04 | 2027-04-05 |  |  |  |
| A37678 |  | 200AL1: Sheathing | resource dependent | 3d | 2027-03-04 | 2027-03-08 | A37538 | 275d | 0d |
| A37688 |  | 200AL1: Sheathing Inspection | resource dependent | 2d | 2027-03-09 | 2027-03-10 | A37678 | 275d | 0d |
| A37698 |  | 200AL2: Sheathing | resource dependent | 3d | 2027-03-12 | 2027-03-16 | A37578 | 269d | 0d |
| A37708 |  | 200AL2: Sheathing Inspection | resource dependent | 2d | 2027-03-17 | 2027-03-18 | A37698 | 269d | 0d |
| A37718 |  | 200AL3: Sheathing | resource dependent | 3d | 2027-03-22 | 2027-03-24 | A37618 | 167d | 0d |
| A37728 |  | 200AL3: Sheathing Inspection | resource dependent | 2d | 2027-03-25 | 2027-03-26 | A37718 | 263d | 0d |
| A37738 |  | 200AL4: Sheathing | resource dependent | 3d | 2027-03-25 | 2027-03-29 | A37718 | 167d | 0d |
| A37748 |  | 200AL4: Sheathing Inspection | resource dependent | 2d | 2027-03-30 | 2027-03-31 | A37738 | 260d | 0d |
| A37758 |  | 200AL5: Sheathing | resource dependent | 3d | 2027-03-30 | 2027-04-01 | A37738 | 167d | 0d |
| A37768 |  | 200AL5: Sheathing Inspection | resource dependent | 2d | 2027-04-02 | 2027-04-05 | A37758 | 167d | 0d |
|  | 142 | **Bracing Removal** |  |  | 2027-03-11 | 2027-04-06 |  |  |  |
| A37778 |  | 200AL1: Remove Bracing | resource dependent | 1d | 2027-03-11 | 2027-03-11 | A37688 | 275d | 0d |
| A37788 |  | 200AL2: Remove Bracing | resource dependent | 1d | 2027-03-19 | 2027-03-19 | A37708 | 269d | 0d |
| A37798 |  | 200AL3: Remove Bracing | resource dependent | 1d | 2027-03-29 | 2027-03-29 | A37728 | 263d | 0d |
| A37808 |  | 200AL4: Remove Bracing | resource dependent | 1d | 2027-04-01 | 2027-04-01 | A37748 | 260d | 0d |
| A37818 |  | 200AL5: Remove Bracing | resource dependent | 1d | 2027-04-06 | 2027-04-06 | A37768 | 246d | 0d |
|  | 143 | **Framing Trade Partner QC** |  |  | 2027-03-12 | 2027-04-09 |  |  |  |
| A37828 |  | 200AL1: Framing QC | resource dependent | 3d | 2027-03-12 | 2027-03-16 | A37778 | 275d | 0d |
| A37838 |  | 200AL2: Framing QC | resource dependent | 3d | 2027-03-22 | 2027-03-24 | A37788 | 269d | 0d |
| A37848 |  | 200AL3: Framing QC | resource dependent | 3d | 2027-03-30 | 2027-04-01 | A37798 | 263d | 0d |
| A37858 |  | 200AL4: Framing QC | resource dependent | 3d | 2027-04-02 | 2027-04-06 | A37808 | 260d | 0d |
| A37868 |  | 200AL5: Framing QC | resource dependent | 3d | 2027-04-07 | 2027-04-09 | A37818 | 246d | 0d |
|  | 144 | **Framing JCC Structural Punch** |  |  | 2027-03-17 | 2027-04-15 |  |  |  |
| A37878 |  | 200AL1: JCC Structural Punch | resource dependent | 4d | 2027-03-17 | 2027-03-22 | A37828 | 275d |  |
| A37888 |  | 200AL2: JCC Structural Punch | resource dependent | 4d | 2027-03-25 | 2027-03-30 | A37838 | 269d |  |
| A37898 |  | 200AL3: JCC Structural Punch | resource dependent | 4d | 2027-04-02 | 2027-04-07 | A37848 | 263d |  |
| A37908 |  | 200AL4: JCC Structural Punch | resource dependent | 4d | 2027-04-07 | 2027-04-12 | A37858 | 260d |  |
| A37918 |  | 200AL5: JCC Structural Punch | resource dependent | 4d | 2027-04-12 | 2027-04-15 | A37868 | 246d | 0d |

| ID | WBS | Activity | Type | Duration | Start | Finish | Predecessors | Total float | Free float |
| --- | --- | --- | --- | --- | --- | --- | --- | --- | --- |
|  | 145 | **Structural Engineer Punch** |  |  | 2027-04-16 | 2027-04-30 |  |  |  |
| A37928 |  | 200A: EOR Create/Issue Structural Punch | resource dependent | 5d | 2027-04-16 | 2027-04-22 | A37918 | 246d | 0d |
| A37938 |  | 200A: Trade Partner Complete Punch | resource dependent | 5d | 2027-04-23 | 2027-04-29 | A37928 | 246d | 0d |
| A37948 |  | 200A: EOR Accept Punch | resource dependent | 1d | 2027-04-30 | 2027-04-30 | A37938 | 246d |  |
|  | 146 | **Building Dry-In** |  |  | 2027-04-06 | 2027-08-24 |  |  |  |
|  | 147 | **Roofing (12,000 SF)** |  |  | 2027-04-07 | 2027-04-28 |  |  |  |
| A37438 |  | 200A: Roof Dry-In | resource dependent | 9d | 2027-04-07 | 2027-04-19 | A37658 | 6d | 0d |
| A38028 |  | 200A: Roof Detail Work | resource dependent | 5d | 2027-04-20 | 2027-04-26 | A37438 | 6d | 0d |
| A41058 |  | 200A: TPO Roof QC Inspection |  | 3d | 2027-04-26 | 2027-04-28 | A38028 FS-1d | 6d | 0d |
|  | 148 | **Exterior Skin** |  |  | 2027-04-06 | 2027-08-24 |  |  |  |
|  | 149 | **Tyvek & Windows** |  |  | 2027-04-06 | 2027-05-13 |  |  |  |
|  | 150 | **Tyvek** |  |  | 2027-04-06 | 2027-04-28 |  |  |  |
| A40798 |  | TVK: Elevation C (12,800 SF) | resource dependent | 10d | 2027-04-06 | 2027-04-19 | A37768 | 167d | 0d |
| A40808 |  | TVK: Elevation D (3,900 SF) | resource dependent | 2d | 2027-04-20 | 2027-04-21 | A40798 | 167d | 0d |
| A40818 |  | TVK: Elevation E (4,900 SF) | resource dependent | 3d | 2027-04-22 | 2027-04-26 | A40808 | 246d | 0d |
| A40828 |  | TVK: Elevation F (2,800 SF) | resource dependent | 2d | 2027-04-27 | 2027-04-28 | A40818 | 246d | 9d |
|  | 151 | **Windows/Doors** |  |  | 2027-04-22 | 2027-05-13 |  |  |  |
| A40838 |  | WN/DR: Elevation C (139) | resource dependent | 9d | 2027-04-22 | 2027-05-04 | A40798, A40808 | 167d | 0d |
| A40848 |  | WN/DR: Elevation D (6) | resource dependent | 1d | 2027-05-05 | 2027-05-05 | A40838 | 200d | 0d |
| A40858 |  | WN/DR: Elevation E (55) | resource dependent | 4d | 2027-05-06 | 2027-05-11 | A40848 | 237d | 0d |
| A68508 |  | WN/DR: Elevation F (35) |  | 2d | 2027-05-12 | 2027-05-13 | A40858, A40828 | 237d |  |
|  | 152 | **Skin** |  |  | 2027-05-05 | 2027-08-24 |  |  |  |
|  | 153 | **Elevation C** |  |  | 2027-05-05 | 2027-07-28 |  |  |  |
| A40868 |  | ELC: Brick (750 SF) | resource dependent | 5d | 2027-05-05 | 2027-05-11 | A40838 | 167d | 0d |
| A40878 |  | ELC: Siding (12,000 SF) | resource dependent | 38d | 2027-05-12 | 2027-07-07 | A40868 | 167d | 0d |
| A40888 |  | ELC: Paint | resource dependent | 15d | 2027-07-08 | 2027-07-28 | A40878 | 167d | 0d |

| ID | WBS | Activity | Type | Duration | Start | Finish | Predecessors | Total float | Free float |
| --- | --- | --- | --- | --- | --- | --- | --- | --- | --- |
|  | 154 | **Elevation D** |  |  | 2027-05-12 | 2027-08-04 |  |  |  |
| A40898 |  | ELD: Brick (2,200 SF) | resource dependent | 9d | 2027-05-12 | 2027-05-24 | A40848, A40868 | 196d | 0d |
| A40908 |  | ELD: Siding (1,700 SF) | resource dependent | 6d | 2027-07-08 | 2027-07-15 | A40878, A40898 | 167d | 0d |
| A40918 |  | ELD: Paint | resource dependent | 5d | 2027-07-29 | 2027-08-04 | A40888, A40908 | 167d | 0d |
|  | 155 | **Elevation E** |  |  | 2027-05-25 | 2027-08-13 |  |  |  |
| A40928 |  | ELE: Brick (1,200 SF) | resource dependent | 6d | 2027-05-25 | 2027-06-02 | A40898 | 196d | 29d |
| A40938 |  | ELE: Siding (3,700 SF) | resource dependent | 12d | 2027-07-16 | 2027-08-02 | A40908, A40928 | 167d | 0d |
| A40948 |  | ELE: Paint | resource dependent | 7d | 2027-08-05 | 2027-08-13 | A40918, A40938 | 167d | 0d |
|  | 156 | **Elevation F** |  |  | 2027-08-03 | 2027-08-24 |  |  |  |
| A40968 |  | ELF: Siding (2,800 SF) | resource dependent | 9d | 2027-08-03 | 2027-08-13 | A40938 | 167d | 0d |
| A40978 |  | ELF: Paint | resource dependent | 7d | 2027-08-16 | 2027-08-24 | A40948, A40968 | 167d |  |
|  | 157 | **Building Interiors** |  |  | 2027-02-26 | 2028-01-11 |  |  |  |
|  | 158 | **MEPF Non-Weather Sensitive Rough-In** |  |  | 2027-02-26 | 2027-04-15 |  |  |  |
|  | 159 | **Level 1 MEPF NWSR** |  |  | 2027-02-26 | 2027-03-15 |  |  |  |
| A38038 |  | 200AL1NWSR: Plastic Rough & Valves | resource dependent | 3d | 2027-02-26 | 2027-03-02 | A37518, A34558 | 253d | 0d |
| A38048 |  | 200AL1NWSR: Electrical Conduit, Boxes & Unit Feeders | resource dependent | 3d | 2027-03-03 | 2027-03-05 | A38038, A34568 | 253d | 0d |
| A38058 |  | 200AL1NWSR: Sprinkler Mains | resource dependent | 3d | 2027-03-08 | 2027-03-10 | A38048, A34578 | 253d | 0d |
| A38068 |  | 200AL1NWSR: Mechanical Hard Pipe & Boots | resource dependent | 3d | 2027-03-11 | 2027-03-15 | A38058, A34588 | 253d | 3d |
|  | 160 | **Level 2 MEPF NWSR** |  |  | 2027-03-08 | 2027-03-23 |  |  |  |
| A38078 |  | 200AL1NWSR: Plastic Rough & Valves | resource dependent | 3d | 2027-03-08 | 2027-03-10 | A37558, A38038 | 250d | 0d |
| A38088 |  | 200AL1NWSR: Electrical Conduit, Boxes & Unit Feeders | resource dependent | 3d | 2027-03-11 | 2027-03-15 | A38048, A38078 | 250d | 0d |
| A38098 |  | 200AL1NWSR: Sprinkler Mains | resource dependent | 3d | 2027-03-16 | 2027-03-18 | A38058, A38088 | 250d | 0d |
| A38108 |  | 200AL1NWSR: Mechanical Hard Pipe & Boots | resource dependent | 3d | 2027-03-19 | 2027-03-23 | A38068, A38098 | 250d | 3d |
|  | 161 | **Level 3 MEPF NWSR** |  |  | 2027-03-16 | 2027-03-31 |  |  |  |
| A38118 |  | 200AL1NWSR: Plastic Rough & Valves | resource dependent | 3d | 2027-03-16 | 2027-03-18 | A37598, A38078 | 247d | 0d |
| A38128 |  | 200AL1NWSR: Electrical Conduit, Boxes & Unit Feeders | resource dependent | 3d | 2027-03-19 | 2027-03-23 | A38088, A38118 | 247d | 0d |
| A38138 |  | 200AL1NWSR: Sprinkler Mains | resource dependent | 3d | 2027-03-24 | 2027-03-26 | A38098, A38128 | 247d | 0d |
| A38148 |  | 200AL1NWSR: Mechanical Hard Pipe & Boots | resource dependent | 3d | 2027-03-29 | 2027-03-31 | A38108, A38138 | 247d | 5d |

| ID | WBS | Activity | Type | Duration | Start | Finish | Predecessors | Total float | Free float |
| --- | --- | --- | --- | --- | --- | --- | --- | --- | --- |
|  | 162 | **Level 4 MEPF NWSR** |  |  | 2027-03-26 | 2027-04-12 |  |  |  |
| A38158 |  | 200AL1NWSR: Plastic Rough & Valves | resource dependent | 3d | 2027-03-26 | 2027-03-30 | A37638, A38118 | 242d | 0d |
| A38168 |  | 200AL1NWSR: Electrical Conduit, Boxes & Unit Feeders | resource dependent | 3d | 2027-03-31 | 2027-04-02 | A38128, A38158 | 242d | 0d |
| A38178 |  | 200AL1NWSR: Sprinkler Mains | resource dependent | 3d | 2027-04-05 | 2027-04-07 | A38138, A38168 | 242d | 0d |
| A38188 |  | 200AL1NWSR: Mechanical Hard Pipe & Boots | resource dependent | 3d | 2027-04-08 | 2027-04-12 | A38148, A38178 | 242d | 0d |
|  | 163 | **Level 5 MEPF NWSR** |  |  | 2027-03-31 | 2027-04-15 |  |  |  |
| A38198 |  | 200AL1NWSR: Plastic Rough & Valves | resource dependent | 3d | 2027-03-31 | 2027-04-02 | A38158 | 242d | 0d |
| A38208 |  | 200AL1NWSR: Electrical Conduit, Boxes & Unit Feeders | resource dependent | 3d | 2027-04-05 | 2027-04-07 | A38168, A38198 | 242d | 0d |
| A38218 |  | 200AL1NWSR: Sprinkler Mains | resource dependent | 3d | 2027-04-08 | 2027-04-12 | A38178, A38208 | 242d | 0d |
| A38228 |  | 200AL1NWSR: Mechanical Hard Pipe & Boots | resource dependent | 3d | 2027-04-13 | 2027-04-15 | A38188, A38218 | 242d | 4d |
|  | 164 | **Weather Sensitive Rough-In (Top Down)** |  |  | 2027-04-29 | 2027-06-30 |  |  |  |
| A38238 |  | 200A: Install Insulation For Pre-Rock | resource dependent | 2d | 2027-04-29 | 2027-04-30 | A37438, A41058 | 6d | 0d |
| A38248 |  | 200A: Prehang Shafts, Tubs and Mechanical Rooms | resource dependent | 3d | 2027-05-03 | 2027-05-05 | A38238 | 6d | 0d |
| A38258 |  | 200A: Pre-Pour Gypcrete | resource dependent | 2d | 2027-05-06 | 2027-05-07 | A38248 | 6d | 0d |
|  | 165 | **Install Tubs/Shower Pans** |  |  | 2027-05-10 | 2027-05-14 |  |  |  |
| A38268 |  | 200AL1: Tubs/Shower Pans | resource dependent | 1d | 2027-05-10 | 2027-05-10 | A38258 | 6d | 0d |
| A38278 |  | 200AL2: Tubs/Shower Pans | resource dependent | 1d | 2027-05-11 | 2027-05-11 | A38268 | 236d | 0d |
| A38288 |  | 200AL3: Tubs/Shower Pans | resource dependent | 1d | 2027-05-12 | 2027-05-12 | A38278 | 236d | 0d |
| A38298 |  | 200AL4: Tubs/Shower Pans | resource dependent | 1d | 2027-05-13 | 2027-05-13 | A38288 | 236d | 0d |
| A38308 |  | 200AL5: Tubs/Shower Pans | resource dependent | 1d | 2027-05-14 | 2027-05-14 | A38298 | 236d |  |
|  | 166 | **Level 5 (11 Units)** |  |  | 2027-05-11 | 2027-05-24 |  |  |  |
|  | 167 | **L5 MEP WSR Units** |  |  | 2027-05-11 | 2027-05-18 |  |  |  |
| A38318 |  | 200AL5WSR: Mechanical Duct & Damper Install | resource dependent | 3d | 2027-05-11 | 2027-05-13 | A38268, A34918 | 6d | 0d |
| A38328 |  | 200AL5WSR: Pull Branch Circuits/Fire Caulk | resource dependent | 3d | 2027-05-14 | 2027-05-18 | A38318, A34928 | 6d | 0d |

| ID | WBS | Activity | Type | Duration | Start | Finish | Predecessors | Total float | Free float |
| --- | --- | --- | --- | --- | --- | --- | --- | --- | --- |
|  | 168 | **L5 MEP WSR Corridor** |  |  | 2027-05-14 | 2027-05-24 |  |  |  |
| A38338 |  | 200AL5WSR: Corridor Mechanical Duct | resource dependent | 3d | 2027-05-14 | 2027-05-18 | A38318 | 6d | 0d |
| A38348 |  | 200AL5WSR: Corridor Circuitry | resource dependent | 2d | 2027-05-19 | 2027-05-20 | A38328, A38338 | 6d | 0d |
| A38358 |  | 200AL5WSR: Corridor LV/ERRC/FA | resource dependent | 2d | 2027-05-19 | 2027-05-20 | A38328, A38348 FS-2d | 6d | 0d |
| A38368 |  | 200AL5WSR: Service Provider Rough | resource dependent | 2d | 2027-05-21 | 2027-05-24 | A38358 | 6d | 0d |
|  | 169 | **Level 4 (11 Units)** |  |  | 2027-05-14 | 2027-05-27 |  |  |  |
|  | 170 | **L4 MEP WSR Units** |  |  | 2027-05-14 | 2027-05-21 |  |  |  |
| A38378 |  | 200AL4WSR: Mechanical Duct & Damper Install | resource dependent | 3d | 2027-05-14 | 2027-05-18 | A38318 | 8d | 0d |
| A38388 |  | 200AL4WSR: Pull Branch Circuits/Fire Caulk | resource dependent | 3d | 2027-05-19 | 2027-05-21 | A38378, A38328 | 8d | 0d |
|  | 171 | **L4 MEP WSR Corridor** |  |  | 2027-05-19 | 2027-05-27 |  |  |  |
| A38398 |  | 200AL4WSR: Corridor Mechanical Duct | resource dependent | 3d | 2027-05-19 | 2027-05-21 | A38378 | 8d | 0d |
| A38408 |  | 200AL4WSR: Corridor Circuitry | resource dependent | 2d | 2027-05-24 | 2027-05-25 | A38388, A38398 | 8d | 0d |
| A38418 |  | 200AL4WSR: Corridor LV/ERRC/FA | resource dependent | 2d | 2027-05-24 | 2027-05-25 | A38388, A38408 FS-2d | 8d | 0d |
| A38428 |  | 200AL4WSR: Service Provider Rough | resource dependent | 2d | 2027-05-26 | 2027-05-27 | A38418 | 8d | 2d |
|  | 172 | **Level 3 (11 Units)** |  |  | 2027-05-19 | 2027-06-02 |  |  |  |
|  | 173 | **L3 MEP WSR Units** |  |  | 2027-05-19 | 2027-05-26 |  |  |  |
| A38438 |  | 200AL3WSR: Mechanical Duct & Damper Install | resource dependent | 3d | 2027-05-19 | 2027-05-21 | A38378 | 10d | 0d |
| A38448 |  | 200AL3WSR: Pull Branch Circuits/Fire Caulk | resource dependent | 3d | 2027-05-24 | 2027-05-26 | A38388, A38438 | 10d | 0d |
|  | 174 | **L3 MEP WSR Corridor** |  |  | 2027-05-24 | 2027-06-02 |  |  |  |
| A38458 |  | 200AL3WSR: Corridor Mechanical Duct | resource dependent | 3d | 2027-05-24 | 2027-05-26 | A38438 | 10d | 0d |
| A38468 |  | 200AL3WSR: Corridor Circuitry | resource dependent | 2d | 2027-05-27 | 2027-05-28 | A38448, A38458 | 10d | 0d |
| A38478 |  | 200AL3WSR: Corridor LV/ERRC/FA | resource dependent | 2d | 2027-05-27 | 2027-05-28 | A38448, A38468 FS-2d | 10d | 0d |
| A38488 |  | 200AL3WSR: Service Provider Rough | resource dependent | 2d | 2027-06-01 | 2027-06-02 | A38478 | 10d | 4d |
|  | 175 | **Level 2 (11 Units)** |  |  | 2027-05-24 | 2027-06-07 |  |  |  |
|  | 176 | **L2 MEP WSR Units** |  |  | 2027-05-24 | 2027-06-01 |  |  |  |
| A38498 |  | 200AL2WSR: Mechanical Duct & Damper Install | resource dependent | 3d | 2027-05-24 | 2027-05-26 | A38438 | 12d | 0d |
| A38508 |  | 200AL2WSR: Pull Branch Circuits/Fire Caulk | resource dependent | 3d | 2027-05-27 | 2027-06-01 | A38448, A38498 | 12d | 0d |

| ID | WBS | Activity | Type | Duration | Start | Finish | Predecessors | Total float | Free float |
| --- | --- | --- | --- | --- | --- | --- | --- | --- | --- |
|  | 177 | **L2 MEP WSR Corridor** |  |  | 2027-05-27 | 2027-06-07 |  |  |  |
| A38518 |  | 200AL2WSR: Corridor Mechanical Duct | resource dependent | 3d | 2027-05-27 | 2027-06-01 | A38498 | 12d | 0d |
| A38528 |  | 200AL2WSR: Corridor Circuitry | resource dependent | 2d | 2027-06-02 | 2027-06-03 | A38508, A38518 | 12d | 0d |
| A38538 |  | 200AL2WSR: Corridor LV/ERRC/FA | resource dependent | 2d | 2027-06-02 | 2027-06-03 | A38508, A38528 FS-2d | 12d | 0d |
| A38548 |  | 200AL2WSR: Service Provider Rough | resource dependent | 2d | 2027-06-04 | 2027-06-07 | A38538 | 12d | 6d |
|  | 178 | **Level 1 (11 Units)** |  |  | 2027-05-27 | 2027-06-10 |  |  |  |
|  | 179 | **L1 MEP WSR Units** |  |  | 2027-05-27 | 2027-06-04 |  |  |  |
| A38558 |  | 200AL1WSR: Mechanical Duct & Damper Install | resource dependent | 3d | 2027-05-27 | 2027-06-01 | A38498 | 14d | 0d |
| A38568 |  | 200AL1WSR: Pull Branch Circuits/Fire Caulk | resource dependent | 3d | 2027-06-02 | 2027-06-04 | A38508, A38558 | 14d | 0d |
|  | 180 | **L1 MEP WSR Corridor** |  |  | 2027-06-02 | 2027-06-10 |  |  |  |
| A38578 |  | 200AL1WSR: Corridor Mechanical Duct | resource dependent | 3d | 2027-06-02 | 2027-06-04 | A38558 | 14d | 0d |
| A38588 |  | 200AL1WSR: Corridor Circuitry | resource dependent | 2d | 2027-06-07 | 2027-06-08 | A38568, A38578 | 14d | 0d |
| A38598 |  | 200AL1WSR: Corridor LV/ERRC/FA | resource dependent | 2d | 2027-06-07 | 2027-06-08 | A38568, A38588 FS-2d | 14d | 0d |
| A38608 |  | 200AL1WSR: Service Provider Rough | resource dependent | 2d | 2027-06-09 | 2027-06-10 | A38598 | 14d | 8d |
|  | WBS131 | **MEPF WSR Quality Control** |  |  | 2027-05-25 | 2027-06-30 |  |  |  |
| A40998 |  | MEPF WSR QC Level 5 |  | 5d | 2027-05-25 | 2027-06-01 | A38368 | 6d | 0d |
| A41008 |  | MEPF WSR QC Level 4 |  | 5d | 2027-06-02 | 2027-06-08 | A38428, A40998 | 6d | 0d |
| A41018 |  | MEPF WSR QC Level 3 |  | 5d | 2027-06-09 | 2027-06-15 | A38488, A41008 | 6d | 0d |
| A41028 |  | MEPF WSR QC Level 2 |  | 5d | 2027-06-16 | 2027-06-23 | A38548, A41018 | 6d | 0d |
| A41038 |  | MEPF WSR QC Level 1 |  | 5d | 2027-06-24 | 2027-06-30 | A38608, A41028 | 6d | 0d |
|  | 181 | **Cover-up Inspections** |  |  | 2027-06-02 | 2027-07-08 |  |  |  |
|  | 182 | **Level 5** |  |  | 2027-06-02 | 2027-06-08 |  |  |  |
| A38658 |  | 200AL5: MEPF Trade Inspection | resource dependent | 2d | 2027-06-02 | 2027-06-03 | A38368, A40998 | 10d | 0d |
| A38668 |  | 200AL5: Fire Marshal Inspection | resource dependent | 2d | 2027-06-04 | 2027-06-07 | A38658 | 10d | 0d |
| A38678 |  | 200AL5: Structural Inspection | resource dependent | 1d | 2027-06-08 | 2027-06-08 | A38668 | 10d | 0d |

| ID | WBS | Activity | Type | Duration | Start | Finish | Predecessors | Total float | Free float |
| --- | --- | --- | --- | --- | --- | --- | --- | --- | --- |
|  | 183 | **Level 4** |  |  | 2027-06-09 | 2027-06-15 |  |  |  |
| A38648 |  | 200AL4: MEPF Trade Inspection | resource dependent | 2d | 2027-06-09 | 2027-06-10 | A38428, A41008 | 9d | 0d |
| A38688 |  | 200AL4: Fire Marshal Inspection | resource dependent | 2d | 2027-06-11 | 2027-06-14 | A38648 | 9d | 0d |
| A38698 |  | 200AL4: Structural Inspection | resource dependent | 1d | 2027-06-15 | 2027-06-15 | A38688 | 9d | 0d |
|  | 184 | **Level 3** |  |  | 2027-06-16 | 2027-06-23 |  |  |  |
| A38638 |  | 200AL3: MEPF Trade Inspection | resource dependent | 2d | 2027-06-16 | 2027-06-17 | A38488, A41018 | 8d | 0d |
| A38708 |  | 200AL3: Fire Marshal Inspection | resource dependent | 2d | 2027-06-21 | 2027-06-22 | A38638 | 8d | 0d |
| A38718 |  | 200AL3: Structural Inspection | resource dependent | 1d | 2027-06-23 | 2027-06-23 | A38708 | 8d | 0d |
|  | 185 | **Level 2** |  |  | 2027-06-24 | 2027-06-30 |  |  |  |
| A38628 |  | 200AL2: MEPF Trade Inspection | resource dependent | 2d | 2027-06-24 | 2027-06-25 | A38548, A41028 | 7d | 0d |
| A38728 |  | 200AL2: Fire Marshal Inspection | resource dependent | 2d | 2027-06-28 | 2027-06-29 | A38628 | 7d | 0d |
| A38738 |  | 200AL2: Structural Inspection | resource dependent | 1d | 2027-06-30 | 2027-06-30 | A38728 | 7d | 0d |
|  | 186 | **Level 1** |  |  | 2027-07-01 | 2027-07-08 |  |  |  |
| A38618 |  | 200AL1: MEPF Trade Inspection | resource dependent | 2d | 2027-07-01 | 2027-07-02 | A38608, A41038 | 6d | 0d |
| A38748 |  | 200AL1: Fire Marshal Inspection | resource dependent | 2d | 2027-07-06 | 2027-07-07 | A38618 | 6d | 0d |
| A38758 |  | 200AL1: Structural Inspection | resource dependent | 1d | 2027-07-08 | 2027-07-08 | A38748 | 6d | 0d |
|  | 187 | **Interior Finishes** |  |  | 2027-06-09 | 2027-12-20 |  |  |  |
|  | 188 | **Level 5** |  |  | 2027-06-09 | 2027-11-09 |  |  |  |
|  | 189 | **Level 5 Residential Units** |  |  | 2027-06-09 | 2027-10-29 |  |  |  |
| A38768 |  | 200AL5: Insulation | resource dependent | 3d | 2027-06-09 | 2027-06-11 | A38678 | 10d | 0d |
| A38778 |  | 200AL5: Insulation Inspection | resource dependent | 1d | 2027-06-14 | 2027-06-14 | A38768 | 10d | 0d |
| A38788 |  | 200AL5: Install Resilient Channel | resource dependent | 2d | 2027-06-14 | 2027-06-15 | A38778 FS-1d | 10d | 0d |
| A38798 |  | 200AL5: Pre-Hang QC Inspections | resource dependent | 5d | 2027-06-16 | 2027-06-23 | A38788 | 10d | 0d |
| A38808 |  | 200AL5: Stock Drywall | resource dependent | 2d | 2027-06-24 | 2027-06-25 | A38798 | 10d | 0d |
| A38828 |  | 200AL5: Hang Drywall | resource dependent | 4d | 2027-06-28 | 2027-07-01 | A38808, A36698 | 10d | 0d |
| A38818 |  | 200AL5: Post Hang QC Inspecitons | resource dependent | 5d | 2027-07-02 | 2027-07-09 | A38828 | 19d | 16d |
| A38838 |  | 200AL5: Finish Drywall | resource dependent | 7d | 2027-08-03 | 2027-08-11 | A38818, A36718 | 3d | 0d |
| A38848 |  | 200AL5: Prime Paint | resource dependent | 3d | 2027-08-12 | 2027-08-16 | A38838, A36728 | 7d | 0d |
| A38858 |  | 200AL5: Gypcrete Prep | resource dependent | 2d | 2027-08-17 | 2027-08-18 | A38848 | 7d | 0d |
| A38868 |  | 200AL5: Install Gypcrete | resource dependent | 2d | 2027-08-19 | 2027-08-20 | A38858 | 7d | 0d |
| A38878 |  | 200AL5: Install AHU/WH | resource dependent | 2d | 2027-08-23 | 2027-08-24 | A38868, A36738 | 29d | 5d |
| A38888 |  | 200AL5: Shower Surrounds | resource dependent | 3d | 2027-08-23 | 2027-08-25 | A38868, A36748 | 21d | 0d |
| A38898 |  | 200AL5: Vanities and Kitchen Casework | resource dependent | 6d | 2027-08-27 | 2027-09-03 | A38868 FS+4d, A36758 | 7d | 0d |
| A38908 |  | 200AL5: Install Countertops | resource dependent | 4d | 2027-09-07 | 2027-09-10 | A38898, A36768 | 20d | 0d |
| A38938 |  | 100AL5: Install Shower Doors | resource dependent | 5d | 2027-09-10 | 2027-09-16 | A38888 FS+10d, A36798 | 21d | 1d |
| A38918 |  | 200AL5: Install Interior Doors & Trim | resource dependent | 5d | 2027-09-13 | 2027-09-17 | A38908, A36788 | 20d | 0d |
| A38928 |  | 200AL5: Kitchen Backsplash | resource dependent | 3d | 2027-09-13 | 2027-09-15 | A38908 | 22d | 2d |
| A38948 |  | 200AL5: Drywall Touch-Up | resource dependent | 3d | 2027-09-20 | 2027-09-22 | A38878, A38918, A38928, A38938 | 20d | 0d |
| A39008 |  | 200AL5: First Finish Paint (Ceilings, Trim, Doors & Walls) | resource dependent | 5d | 2027-09-23 | 2027-09-29 | A38948, A36818 | 20d | 0d |
| A39018 |  | 200AL5: MEPS Ceiling Trim Out | resource dependent | 3d | 2027-09-30 | 2027-10-04 | A39008, A36828 | 20d | 0d |
| A39028 |  | 200AL5: Install Flooring | resource dependent | 5d | 2027-10-05 | 2027-10-11 | A39018, A36838 | 20d | 0d |
| A39038 |  | 200AL5: Minor Appliance Delivery | resource dependent | 2d | 2027-10-12 | 2027-10-13 | A39028 | 32d | 0d |
| A39048 |  | 200AL5: MEP Trim-Out DW, Disposal & Sink Install | resource dependent | 3d | 2027-10-14 | 2027-10-18 | A39038 | 32d | 0d |
| A39058 |  | 200AL5: Install Door Hardware | resource dependent | 3d | 2027-10-19 | 2027-10-21 | A39048 | 32d | 0d |
| A39068 |  | 200AL5: Unit Accessories | resource dependent | 2d | 2027-10-22 | 2027-10-25 | A39058, A36878 | 32d | 0d |
| A39078 |  | 200AL5: Major Appliance Delivery - Install Refrigerator, Microwave, W/D | resource dependent | 2d | 2027-10-22 | 2027-10-25 | A39058 | 32d | 0d |
| A39138 |  | 200AL5: Rough Clean | resource dependent | 4d | 2027-10-26 | 2027-10-29 | A39068, A39078, A36898 | 32d | 0d |

| ID | WBS | Activity | Type | Duration | Start | Finish | Predecessors | Total float | Free float |
| --- | --- | --- | --- | --- | --- | --- | --- | --- | --- |
|  | 190 | **Level 5 Common Areas** |  |  | 2027-06-28 | 2027-11-09 |  |  |  |
| A38958 |  | 200AL5: Stock Drywall | resource dependent | 1d | 2027-06-28 | 2027-06-28 | A38808 | 190d | 3d |
| A38968 |  | 200AL5: Hang/Finish Drywall | resource dependent | 4d | 2027-07-02 | 2027-07-08 | A38828, A38958 | 187d | 27d |
| A38978 |  | 200AL5: Prime Paint | resource dependent | 1d | 2027-08-17 | 2027-08-17 | A38848, A38968 | 160d | 22d |
| A38988 |  | 200AL5: Install Wood Base | resource dependent | 1d | 2027-09-20 | 2027-09-20 | A38918, A38978 | 138d | 7d |
| A38998 |  | 200AL5: First Finish Paint | resource dependent | 2d | 2027-09-30 | 2027-10-01 | A38988, A39008 | 131d | 1d |
| A39088 |  | 200AL5: MEP Device Trim-Out | resource dependent | 1d | 2027-10-05 | 2027-10-05 | A38998, A39018 | 130d | 4d |
| A39098 |  | 200AL5: Install Flooring | resource dependent | 1d | 2027-10-12 | 2027-10-12 | A39028, A39088 | 126d | 13d |
| A39108 |  | 200AL5: Rough Clean | resource dependent | 1d | 2027-11-01 | 2027-11-01 | A39098, A39138 | 113d | 0d |
| A39118 |  | 200AL5: JCC Punchlist | resource dependent | 5d | 2027-11-02 | 2027-11-08 | A39108 | 113d | 0d |
| A39128 |  | 200AL5: Final Clean | resource dependent | 1d | 2027-11-09 | 2027-11-09 | A39118 | 113d |  |
|  | 191 | **Level 4** |  |  | 2027-06-16 | 2027-11-18 |  |  |  |
|  | 192 | **Level 4 Residential Units** |  |  | 2027-06-16 | 2027-11-09 |  |  |  |
| A39148 |  | 200AL4: Insulation | resource dependent | 3d | 2027-06-16 | 2027-06-21 | A38698 | 9d | 0d |
| A39158 |  | 200AL4: Insulation Inspection | resource dependent | 1d | 2027-06-22 | 2027-06-22 | A39148 | 9d | 0d |
| A39168 |  | 200AL4: Install Resilient Channel | resource dependent | 2d | 2027-06-22 | 2027-06-23 | A39158 FS-1d | 9d | 0d |
| A39178 |  | 200AL4: Pre-Hang QC Inspections | resource dependent | 5d | 2027-06-24 | 2027-06-30 | A39168 | 9d | 0d |
| A39188 |  | 200AL4: Stock Drywall | resource dependent | 2d | 2027-07-01 | 2027-07-02 | A39178 | 9d | 0d |
| A39198 |  | 200AL4: Hang Drywall | resource dependent | 4d | 2027-07-06 | 2027-07-09 | A38828, A39188 | 9d | 0d |
| A39208 |  | 200AL4: Post Hang QC Inspecitons | resource dependent | 5d | 2027-07-12 | 2027-07-16 | A39198 | 21d | 18d |
| A39218 |  | 200AL4: Finish Drywall | resource dependent | 7d | 2027-08-12 | 2027-08-20 | A38838, A39208 | 3d | 0d |
| A39228 |  | 200AL4: Prime Paint | resource dependent | 3d | 2027-08-23 | 2027-08-25 | A39218, A38848 | 6d | 0d |
| A39238 |  | 200AL4: Gypcrete Prep | resource dependent | 2d | 2027-08-26 | 2027-08-27 | A39228 | 6d | 0d |
| A39248 |  | 200AL4: Install Gypcrete | resource dependent | 2d | 2027-08-30 | 2027-08-31 | A39238 | 6d | 0d |
| A39258 |  | 200AL4: Install AHU/WH | resource dependent | 2d | 2027-09-01 | 2027-09-02 | A39248, A38878 | 24d | 5d |
| A39268 |  | 200AL4: Shower Surrounds | resource dependent | 3d | 2027-09-01 | 2027-09-03 | A39248, A38888 | 19d | 0d |
| A39278 |  | 200AL4: Vanities and Kitchen Casework | resource dependent | 6d | 2027-09-08 | 2027-09-15 | A38898, A39248 FS+4d | 6d | 0d |
| A39288 |  | 200AL4: Install Countertops | resource dependent | 4d | 2027-09-16 | 2027-09-21 | A38908, A39278 | 18d | 0d |
| A39318 |  | 200AL4: Install Shower Doors | resource dependent | 5d | 2027-09-21 | 2027-09-27 | A39268 FS+10d, A38938 | 19d | 1d |
| A39298 |  | 200AL4: Kitchen Backsplash | resource dependent | 3d | 2027-09-22 | 2027-09-24 | A39288 | 20d | 2d |
| A39308 |  | 200AL4: Install Interior Doors & Trim | resource dependent | 5d | 2027-09-22 | 2027-09-28 | A38918, A39288 | 18d | 0d |
| A39328 |  | 200AL4: Drywall Touch-Up | resource dependent | 3d | 2027-09-29 | 2027-10-01 | A39258, A39298, A39308, A39318 | 18d | 0d |
| A39338 |  | 200AL4: First Finish Paint (Ceilings, Trim, Doors & Walls) | resource dependent | 5d | 2027-10-04 | 2027-10-08 | A39008, A39328 | 18d | 0d |
| A39348 |  | 200AL4: MEPS Ceiling Trim Out | resource dependent | 3d | 2027-10-11 | 2027-10-13 | A39338, A39018 | 18d | 0d |
| A39358 |  | 200AL4: Install Flooring | resource dependent | 5d | 2027-10-14 | 2027-10-20 | A39028, A39348 | 18d | 0d |
| A39368 |  | 200AL4: Minor Appliance Delivery | resource dependent | 2d | 2027-10-21 | 2027-10-22 | A39358 | 31d | 0d |
| A39378 |  | 200AL4: MEP Trim-Out DW, Disposal & Sink Install | resource dependent | 3d | 2027-10-25 | 2027-10-27 | A39368 | 31d | 0d |
| A39388 |  | 200AL4: Install Door Hardware | resource dependent | 3d | 2027-10-28 | 2027-11-01 | A39378 | 31d | 0d |
| A39398 |  | 200AL4: Unit Accessories | resource dependent | 2d | 2027-11-02 | 2027-11-03 | A39388, A39068 | 31d | 0d |
| A39408 |  | 200AL4: Major Appliance Delivery - Install Refrigerator, Microwave, W/D | resource dependent | 2d | 2027-11-02 | 2027-11-03 | A39078, A39388 | 31d | 0d |
| A39418 |  | 200AL4: Rough Clean | resource dependent | 4d | 2027-11-04 | 2027-11-09 | A39398, A39408, A39138 | 31d | 0d |

| ID | WBS | Activity | Type | Duration | Start | Finish | Predecessors | Total float | Free float |
| --- | --- | --- | --- | --- | --- | --- | --- | --- | --- |
|  | 193 | **Level 4 Common Areas** |  |  | 2027-07-06 | 2027-11-18 |  |  |  |
| A39428 |  | 200AL4: Stock Drywall | resource dependent | 1d | 2027-07-06 | 2027-07-06 | A39188 | 185d | 3d |
| A39438 |  | 200AL4: Hang/Finish Drywall | resource dependent | 4d | 2027-07-12 | 2027-07-15 | A39198, A39428 | 182d | 29d |
| A39448 |  | 200AL4: Prime Paint | resource dependent | 1d | 2027-08-26 | 2027-08-26 | A39228, A39438 | 153d | 22d |
| A39458 |  | 200AL4: Install Wood Base | resource dependent | 1d | 2027-09-29 | 2027-09-29 | A39308, A39448 | 131d | 7d |
| A39468 |  | 200AL4: First Finish Paint | resource dependent | 2d | 2027-10-11 | 2027-10-12 | A39338, A39458 | 124d | 1d |
| A39478 |  | 200AL4: MEP Device Trim-Out | resource dependent | 1d | 2027-10-14 | 2027-10-14 | A39348, A39468 | 123d | 4d |
| A39488 |  | 200AL4: Install Flooring | resource dependent | 1d | 2027-10-21 | 2027-10-21 | A39358, A39478 | 119d | 13d |
| A39498 |  | 200AL4: Rough Clean | resource dependent | 1d | 2027-11-10 | 2027-11-10 | A39418, A39488 | 106d | 0d |
| A39508 |  | 200AL4: JCC Punchlist | resource dependent | 5d | 2027-11-11 | 2027-11-17 | A39498 | 106d | 0d |
| A39518 |  | 200AL4: Final Clean | resource dependent | 1d | 2027-11-18 | 2027-11-18 | A39508 | 106d |  |
|  | 194 | **Level 3** |  |  | 2027-06-24 | 2027-12-01 |  |  |  |
|  | 195 | **Level 3 Residential Units** |  |  | 2027-06-24 | 2027-11-18 |  |  |  |
| A39528 |  | 200AL3: Insulation | resource dependent | 3d | 2027-06-24 | 2027-06-28 | A38718 | 8d | 0d |
| A39538 |  | 200AL3: Insulation Inspection | resource dependent | 1d | 2027-06-29 | 2027-06-29 | A39528 | 8d | 0d |
| A39548 |  | 200AL3: Install Resilient Channel | resource dependent | 2d | 2027-06-29 | 2027-06-30 | A39538 FS-1d | 8d | 0d |
| A39558 |  | 200AL3: Pre-Hang QC Inspections | resource dependent | 5d | 2027-07-01 | 2027-07-08 | A39548 | 8d | 0d |
| A39568 |  | 200AL3: Stock Drywall | resource dependent | 2d | 2027-07-09 | 2027-07-12 | A39558 | 8d | 0d |
| A39578 |  | 200AL3: Hang Drywall | resource dependent | 4d | 2027-07-13 | 2027-07-16 | A39198, A39568 | 8d | 0d |
| A39588 |  | 200AL3: Post Hang QC Inspecitons | resource dependent | 5d | 2027-07-19 | 2027-07-23 | A39578 | 23d | 20d |
| A39598 |  | 200AL3: Finish Drywall | resource dependent | 7d | 2027-08-23 | 2027-08-31 | A39218, A39588 | 3d | 0d |
| A39608 |  | 200AL3: Prime Paint | resource dependent | 3d | 2027-09-01 | 2027-09-03 | A39598, A39228 | 5d | 0d |
| A39618 |  | 200AL3: Gypcrete Prep | resource dependent | 2d | 2027-09-07 | 2027-09-08 | A39608 | 5d | 0d |
| A39628 |  | 200AL3: Install Gypcrete | resource dependent | 2d | 2027-09-09 | 2027-09-10 | A39618 | 5d | 0d |
| A39638 |  | 200AL3: Install AHU/WH | resource dependent | 2d | 2027-09-13 | 2027-09-14 | A39628, A39258 | 19d | 5d |
| A39648 |  | 200AL3: Shower Surrounds | resource dependent | 3d | 2027-09-13 | 2027-09-15 | A39628, A39268 | 17d | 0d |
| A39658 |  | 200AL3: Vanities and Kitchen Casework | resource dependent | 6d | 2027-09-17 | 2027-09-24 | A39278, A39628 FS+4d | 5d | 0d |
| A39668 |  | 200AL3: Install Countertops | resource dependent | 4d | 2027-09-27 | 2027-09-30 | A39288, A39658 | 16d | 0d |
| A39698 |  | 200AL3: Install Shower Doors | resource dependent | 5d | 2027-09-30 | 2027-10-06 | A39648 FS+10d, A39318 | 17d | 1d |
| A39678 |  | 200AL3: Kitchen Backsplash | resource dependent | 3d | 2027-10-01 | 2027-10-05 | A39668 | 18d | 2d |
| A39688 |  | 200AL3: Install Interior Doors & Trim | resource dependent | 5d | 2027-10-01 | 2027-10-07 | A39308, A39668 | 16d | 0d |
| A39708 |  | 200AL3: Drywall Touch-Up | resource dependent | 3d | 2027-10-08 | 2027-10-12 | A39638, A39678, A39688, A39698 | 16d | 0d |
| A39718 |  | 200AL3: First Finish Paint (Ceilings, Trim, Doors & Walls) | resource dependent | 5d | 2027-10-13 | 2027-10-19 | A39338, A39708 | 16d | 0d |
| A39728 |  | 200AL3: MEPS Ceiling Trim Out | resource dependent | 3d | 2027-10-20 | 2027-10-22 | A39718, A39348 | 16d | 0d |
| A39738 |  | 200AL3: Install Flooring | resource dependent | 5d | 2027-10-25 | 2027-10-29 | A39358, A39728 | 16d | 0d |
| A39748 |  | 200AL3: Minor Appliance Delivery | resource dependent | 2d | 2027-11-01 | 2027-11-02 | A39738 | 30d | 0d |
| A39758 |  | 200AL3: MEP Trim-Out DW, Disposal & Sink Install | resource dependent | 3d | 2027-11-03 | 2027-11-05 | A39748 | 30d | 0d |
| A39768 |  | 200AL3: Install Door Hardware | resource dependent | 3d | 2027-11-08 | 2027-11-10 | A39758 | 30d | 0d |
| A39778 |  | 200AL3: Unit Accessories | resource dependent | 2d | 2027-11-11 | 2027-11-12 | A39768, A39398 | 30d | 0d |
| A39788 |  | 200AL3: Major Appliance Delivery - Install Refrigerator, Microwave, W/D | resource dependent | 2d | 2027-11-11 | 2027-11-12 | A39408, A39768 | 30d | 0d |
| A39798 |  | 200AL3: Rough Clean | resource dependent | 4d | 2027-11-15 | 2027-11-18 | A39778, A39788, A39418 | 30d | 0d |

| ID | WBS | Activity | Type | Duration | Start | Finish | Predecessors | Total float | Free float |
| --- | --- | --- | --- | --- | --- | --- | --- | --- | --- |
|  | 196 | **Level 3 Common Areas** |  |  | 2027-07-13 | 2027-12-01 |  |  |  |
| A39808 |  | 200AL3: Stock Drywall | resource dependent | 1d | 2027-07-13 | 2027-07-13 | A39568 | 180d | 3d |
| A39818 |  | 200AL3: Hang/Finish Drywall | resource dependent | 4d | 2027-07-19 | 2027-07-22 | A39578, A39808 | 177d | 31d |
| A39828 |  | 200AL3: Prime Paint | resource dependent | 1d | 2027-09-07 | 2027-09-07 | A39608, A39818 | 146d | 22d |
| A39838 |  | 200AL3: Install Wood Base | resource dependent | 1d | 2027-10-08 | 2027-10-08 | A39688, A39828 | 124d | 7d |
| A39848 |  | 200AL3: First Finish Paint | resource dependent | 2d | 2027-10-20 | 2027-10-21 | A39718, A39838 | 117d | 1d |
| A39858 |  | 200AL3: MEP Device Trim-Out | resource dependent | 1d | 2027-10-25 | 2027-10-25 | A39728, A39848 | 116d | 4d |
| A39868 |  | 200AL3: Install Flooring | resource dependent | 1d | 2027-11-01 | 2027-11-01 | A39738, A39858 | 112d | 13d |
| A39878 |  | 200AL3: Rough Clean | resource dependent | 1d | 2027-11-19 | 2027-11-19 | A39798, A39868 | 99d | 0d |
| A39888 |  | 200AL3: JCC Punchlist | resource dependent | 5d | 2027-11-22 | 2027-11-30 | A39878 | 99d | 0d |
| A39898 |  | 200AL3: Final Clean | resource dependent | 1d | 2027-12-01 | 2027-12-01 | A39888 | 99d |  |
|  | 197 | **Level 2** |  |  | 2027-07-01 | 2027-12-10 |  |  |  |
|  | 198 | **Level 2 Residential Units** |  |  | 2027-07-01 | 2027-12-01 |  |  |  |
| A39908 |  | 200AL2: Insulation | resource dependent | 3d | 2027-07-01 | 2027-07-06 | A38738 | 7d | 0d |
| A39918 |  | 200AL2: Insulation Inspection | resource dependent | 1d | 2027-07-07 | 2027-07-07 | A39908 | 7d | 0d |
| A39928 |  | 200AL2: Install Resilient Channel | resource dependent | 2d | 2027-07-07 | 2027-07-08 | A39918 FS-1d | 7d | 0d |
| A39938 |  | 200AL2: Pre-Hang QC Inspections | resource dependent | 5d | 2027-07-09 | 2027-07-15 | A39928 | 7d | 0d |
| A39948 |  | 200AL2: Stock Drywall | resource dependent | 2d | 2027-07-16 | 2027-07-19 | A39938 | 7d | 0d |
| A39958 |  | 200AL2: Hang Drywall | resource dependent | 4d | 2027-07-20 | 2027-07-23 | A39578, A39948 | 7d | 0d |
| A39968 |  | 200AL2: Post Hang QC Inspecitons | resource dependent | 5d | 2027-07-26 | 2027-07-30 | A39958 | 25d | 22d |
| A39978 |  | 200AL2: Finish Drywall | resource dependent | 7d | 2027-09-01 | 2027-09-10 | A39598, A39968 | 3d | 0d |
| A39988 |  | 200AL2: Prime Paint | resource dependent | 3d | 2027-09-13 | 2027-09-15 | A39978, A39608 | 4d | 0d |
| A39998 |  | 200AL2: Gypcrete Prep | resource dependent | 2d | 2027-09-16 | 2027-09-17 | A39988 | 4d | 0d |
| A40008 |  | 200AL2: Install Gypcrete | resource dependent | 2d | 2027-09-20 | 2027-09-21 | A39998 | 4d | 0d |
| A40018 |  | 200AL2: Install AHU/WH | resource dependent | 2d | 2027-09-22 | 2027-09-23 | A40008, A39638 | 14d | 1d |
| A40028 |  | 200AL2: Shower Surrounds | resource dependent | 3d | 2027-09-22 | 2027-09-24 | A40008, A39648 | 15d | 0d |
| A40038 |  | 200AL2: Vanities and Kitchen Casework | resource dependent | 6d | 2027-09-28 | 2027-10-05 | A39658, A40008 FS+4d | 4d | 0d |
| A40048 |  | 200AL2: Install Countertops | resource dependent | 4d | 2027-10-06 | 2027-10-11 | A39668, A40038 | 14d | 0d |
| A40078 |  | 200AL2: Install Shower Doors | resource dependent | 5d | 2027-10-11 | 2027-10-15 | A40028 FS+10d, A39698 | 15d | 0d |
| A40058 |  | 200AL2: Kitchen Backsplash | resource dependent | 3d | 2027-10-12 | 2027-10-14 | A40048 | 16d | 2d |
| A40068 |  | 200AL2: Install Interior Doors & Trim | resource dependent | 5d | 2027-10-12 | 2027-10-18 | A39688, A40048 | 14d | 0d |
| A40088 |  | 200AL2: Drywall Touch-Up | resource dependent | 3d | 2027-10-19 | 2027-10-21 | A40018, A40058, A40068, A40078 | 14d | 0d |
| A40098 |  | 200AL2: First Finish Paint (Ceilings, Trim, Doors & Walls) | resource dependent | 5d | 2027-10-22 | 2027-10-28 | A39718, A40088 | 14d | 0d |
| A40108 |  | 200AL2: MEPS Ceiling Trim Out | resource dependent | 3d | 2027-10-29 | 2027-11-02 | A40098, A39728 | 14d | 0d |
| A40118 |  | 200AL2: Install Flooring | resource dependent | 5d | 2027-11-03 | 2027-11-09 | A39738, A40108 | 14d | 0d |
| A40128 |  | 200AL2: Minor Appliance Delivery | resource dependent | 2d | 2027-11-10 | 2027-11-11 | A40118 | 28d | 0d |
| A40138 |  | 200AL2: MEP Trim-Out DW, Disposal & Sink Install | resource dependent | 3d | 2027-11-12 | 2027-11-16 | A40128 | 28d | 0d |
| A40148 |  | 200AL2: Install Door Hardware | resource dependent | 3d | 2027-11-17 | 2027-11-19 | A40138 | 28d | 0d |
| A40158 |  | 200AL2: Unit Accessories | resource dependent | 2d | 2027-11-22 | 2027-11-23 | A40148, A39778 | 28d | 0d |
| A40168 |  | 200AL2: Major Appliance Delivery - Install Refrigerator, Microwave, W/D | resource dependent | 2d | 2027-11-22 | 2027-11-23 | A39788, A40148 | 28d | 0d |
| A40178 |  | 200AL2: Rough Clean | resource dependent | 4d | 2027-11-24 | 2027-12-01 | A40158, A40168, A39798 | 28d | 0d |

| ID | WBS | Activity | Type | Duration | Start | Finish | Predecessors | Total float | Free float |
| --- | --- | --- | --- | --- | --- | --- | --- | --- | --- |
|  | 199 | **Level 2 Common Areas** |  |  | 2027-07-20 | 2027-12-10 |  |  |  |
| A40188 |  | 200AL2: Stock Drywall | resource dependent | 1d | 2027-07-20 | 2027-07-20 | A39948 | 175d | 3d |
| A40198 |  | 200AL2: Hang/Finish Drywall | resource dependent | 4d | 2027-07-26 | 2027-07-29 | A39958, A40188 | 172d | 33d |
| A40208 |  | 200AL2: Prime Paint | resource dependent | 1d | 2027-09-16 | 2027-09-16 | A39988, A40198 | 139d | 22d |
| A40218 |  | 200AL2: Install Wood Base | resource dependent | 1d | 2027-10-19 | 2027-10-19 | A40068, A40208 | 117d | 7d |
| A40228 |  | 200AL2: First Finish Paint | resource dependent | 2d | 2027-10-29 | 2027-11-01 | A40098, A40218 | 110d | 1d |
| A40238 |  | 200AL2: MEP Device Trim-Out | resource dependent | 1d | 2027-11-03 | 2027-11-03 | A40108, A40228 | 109d | 4d |
| A40248 |  | 200AL2: Install Flooring | resource dependent | 1d | 2027-11-10 | 2027-11-10 | A40118, A40238 | 105d | 13d |
| A40258 |  | 200AL2: Rough Clean | resource dependent | 1d | 2027-12-02 | 2027-12-02 | A40178, A40248 | 92d | 0d |
| A40268 |  | 200AL2: JCC Punchlist | resource dependent | 5d | 2027-12-03 | 2027-12-09 | A40258 | 92d | 0d |
| A40278 |  | 200AL2: Final Clean | resource dependent | 1d | 2027-12-10 | 2027-12-10 | A40268 | 92d |  |
|  | 200 | **Level 1** |  |  | 2027-07-09 | 2027-12-20 |  |  |  |
|  | 201 | **Level 1 Residential Units** |  |  | 2027-07-09 | 2027-12-09 |  |  |  |
| A40288 |  | 200AL1: Insulation | resource dependent | 3d | 2027-07-09 | 2027-07-13 | A38758 | 6d | 0d |
| A40298 |  | 200AL1: Insulation Inspection | resource dependent | 1d | 2027-07-14 | 2027-07-14 | A40288 | 6d | 0d |
| A40308 |  | 200AL1: Install Resilient Channel | resource dependent | 2d | 2027-07-14 | 2027-07-15 | A40298 FS-1d | 6d | 0d |
| A40318 |  | 200AL1: Pre-Hang QC Inspections | resource dependent | 5d | 2027-07-16 | 2027-07-22 | A40308 | 6d | 0d |
| A40328 |  | 200AL1: Stock Drywall | resource dependent | 2d | 2027-07-23 | 2027-07-26 | A40318 | 6d | 0d |
| A40338 |  | 200AL1: Hang Drywall | resource dependent | 4d | 2027-07-27 | 2027-07-30 | A39958, A40328 | 6d | 0d |
| A40348 |  | 200AL1: Post Hang QC Inspecitons | resource dependent | 5d | 2027-08-02 | 2027-08-06 | A40338 | 27d | 24d |
| A40358 |  | 200AL1: Finish Drywall | resource dependent | 7d | 2027-09-13 | 2027-09-21 | A39978, A40348 | 3d | 0d |
| A40368 |  | 200AL1: Prime Paint | resource dependent | 3d | 2027-09-22 | 2027-09-24 | A40358, A39988 | 3d | 0d |
| A40378 |  | 200AL1: Install AHU/WH | resource dependent | 2d | 2027-09-27 | 2027-09-28 | A40368, A40018 | 13d | 5d |
| A40388 |  | 200AL1: Shower Surrounds | resource dependent | 3d | 2027-09-27 | 2027-09-29 | A40368, A40028 | 17d | 2d |
| A40398 |  | 200AL1: Vanities and Kitchen Casework | resource dependent | 6d | 2027-10-06 | 2027-10-13 | A40038 | 4d | 0d |
| A40408 |  | 200AL1: Install Countertops | resource dependent | 4d | 2027-10-14 | 2027-10-19 | A40048, A40398 | 13d | 0d |
| A40438 |  | 200AL1: Install Shower Doors | resource dependent | 5d | 2027-10-18 | 2027-10-22 | A40388 FS+10d, A40078 | 15d | 0d |
| A40418 |  | 200AL1: Kitchen Backsplash | resource dependent | 3d | 2027-10-20 | 2027-10-22 | A40408 | 15d | 2d |
| A40428 |  | 200AL1: Install Interior Doors & Trim | resource dependent | 5d | 2027-10-20 | 2027-10-26 | A40068, A40408 | 13d | 0d |
| A40448 |  | 200AL1: Drywall Touch-Up | resource dependent | 3d | 2027-10-27 | 2027-10-29 | A40378, A40418, A40428, A40438 | 13d | 0d |
| A40458 |  | 200AL1: First Finish Paint (Ceilings, Trim, Doors & Walls) | resource dependent | 5d | 2027-11-01 | 2027-11-05 | A40098, A40448 | 13d | 0d |
| A40468 |  | 200AL1: MEPS Ceiling Trim Out | resource dependent | 3d | 2027-11-08 | 2027-11-10 | A40458, A40108 | 13d | 0d |
| A40478 |  | 200AL1: Install Flooring | resource dependent | 5d | 2027-11-11 | 2027-11-17 | A40118, A40468 | 13d | 0d |
| A40488 |  | 200AL1: Minor Appliance Delivery | resource dependent | 2d | 2027-11-18 | 2027-11-19 | A40478 | 26d | 0d |
| A40498 |  | 200AL1: MEP Trim-Out DW, Disposal & Sink Install | resource dependent | 3d | 2027-11-22 | 2027-11-24 | A40488 | 26d | 0d |
| A40508 |  | 200AL1: Install Door Hardware | resource dependent | 3d | 2027-11-29 | 2027-12-01 | A40498 | 26d | 0d |
| A40518 |  | 200AL1: Unit Accessories | resource dependent | 2d | 2027-12-02 | 2027-12-03 | A40508, A40158 | 26d | 0d |
| A40528 |  | 200AL1: Major Appliance Delivery - Install Refrigerator, Microwave, W/D | resource dependent | 2d | 2027-12-02 | 2027-12-03 | A40168, A40508 | 26d | 0d |
| A40538 |  | 200AL1: Rough Clean | resource dependent | 4d | 2027-12-06 | 2027-12-09 | A40518, A40528, A40178 | 26d | 0d |

| ID | WBS | Activity | Type | Duration | Start | Finish | Predecessors | Total float | Free float |
| --- | --- | --- | --- | --- | --- | --- | --- | --- | --- |
|  | 202 | **Level 1 Common Areas** |  |  | 2027-07-27 | 2027-12-20 |  |  |  |
| A40548 |  | 200AL1: Stock Drywall | resource dependent | 1d | 2027-07-27 | 2027-07-27 | A40328 | 170d | 3d |
| A40558 |  | 200AL1: Hang/Finish Drywall | resource dependent | 4d | 2027-08-02 | 2027-08-05 | A40338, A40548 | 167d | 35d |
| A40568 |  | 200AL1: Prime Paint | resource dependent | 1d | 2027-09-27 | 2027-09-27 | A40368, A40558 | 132d | 21d |
| A40578 |  | 200AL1: Install Wood Base | resource dependent | 1d | 2027-10-27 | 2027-10-27 | A40428, A40568 | 111d | 7d |
| A40588 |  | 200AL1: First Finish Paint | resource dependent | 2d | 2027-11-08 | 2027-11-09 | A40458, A40578 | 104d | 1d |
| A40598 |  | 200AL1: MEP Device Trim-Out | resource dependent | 1d | 2027-11-11 | 2027-11-11 | A40468, A40588 | 103d | 4d |
| A40608 |  | 200AL1: Install Flooring | resource dependent | 1d | 2027-11-18 | 2027-11-18 | A40478, A40598 | 99d | 13d |
| A40618 |  | 200AL1: Rough Clean | resource dependent | 1d | 2027-12-10 | 2027-12-10 | A40538, A40608 | 86d | 0d |
| A40628 |  | 200AL1: JCC Punchlist | resource dependent | 5d | 2027-12-13 | 2027-12-17 | A40618 | 86d | 0d |
| A40638 |  | 200AL1: Final Clean | resource dependent | 1d | 2027-12-20 | 2027-12-20 | A40628 | 86d |  |
|  | 203 | **Final Inspections** |  |  | 2027-10-26 | 2027-12-08 |  |  |  |
| A40648 |  | 200AL5: Final Inspections | resource dependent | 3d | 2027-10-26 | 2027-10-28 | A39078 | 85d |  |
| A40658 |  | 200AL4: Final Inspections | resource dependent | 3d | 2027-11-04 | 2027-11-08 | A39408 | 78d |  |
| A40668 |  | 200AL3: Final Inspections | resource dependent | 3d | 2027-11-15 | 2027-11-17 | A39788 | 71d |  |
| A40678 |  | 200AL2: Final Inspections | resource dependent | 3d | 2027-11-24 | 2027-11-30 | A40168 | 64d |  |
| A40688 |  | 200AL1: Final Inspections | resource dependent | 3d | 2027-12-06 | 2027-12-08 | A40528 | 58d |  |
|  | 204 | **JCC/Owner Punch** |  |  | 2027-11-01 | 2028-01-11 |  |  |  |
|  | 205 | **JCC Punch** |  |  | 2027-11-01 | 2027-12-23 |  |  |  |
| A40698 |  | Level 5 JCC Punch | resource dependent | 10d | 2027-11-01 | 2027-11-12 | A39138, A37098 FS-9d | 32d | 0d |
| A40708 |  | Level 4 JCC Punch | resource dependent | 10d | 2027-11-10 | 2027-11-23 | A39418, A40698 FS-4d | 31d | 0d |
| A40718 |  | Level 3 JCC Punch | resource dependent | 10d | 2027-11-19 | 2027-12-06 | A39798, A40708 FS-4d | 30d | 0d |
| A40728 |  | Level 2 JCC Punch | resource dependent | 10d | 2027-12-02 | 2027-12-15 | A40178, A40718 FS-4d | 29d | 0d |
| A40738 |  | Level 1 JCC Punch | resource dependent | 10d | 2027-12-10 | 2027-12-23 | A40538, A40728 FS-4d | 29d | 0d |

| ID | WBS | Activity | Type | Duration | Start | Finish | Predecessors | Total float | Free float |
| --- | --- | --- | --- | --- | --- | --- | --- | --- | --- |
|  | 206 | **Owner Punch** |  |  | 2027-11-15 | 2028-01-11 |  |  |  |
| A40748 |  | Level 5 Owner Punch | resource dependent | 10d | 2027-11-15 | 2027-11-30 | A40698 | 100d |  |
| A40758 |  | Level 4 Owner Punch | resource dependent | 10d | 2027-11-24 | 2027-12-09 | A40708 | 93d |  |
| A40768 |  | Level 3 Owner Punch | resource dependent | 10d | 2027-12-07 | 2027-12-20 | A40718 | 86d |  |
| A40778 |  | Level 2 Owner Punch | resource dependent | 10d | 2027-12-16 | 2028-01-03 | A40728 | 79d |  |
| A40788 |  | Level 1 Owner Punch | resource dependent | 10d | 2027-12-28 | 2028-01-11 | A40738 | 73d |  |
|  | 356 | **Building 200** |  |  | 2026-10-15 | 2028-02-22 |  |  |  |
|  | 130 | **Structure** |  |  | 2026-10-15 | 2027-06-14 |  |  |  |
|  | 131 | **Concrete** |  |  | 2026-10-15 | 2026-11-20 |  |  |  |
|  | WBS221 | **SOG 6** |  |  | 2026-10-15 | 2026-11-20 |  |  |  |
| A68468 |  | SOG6: Spread Footing |  | 8d | 2026-10-15 | 2026-10-26 | A21978 SS, A19309, A68768 | 22d | 0d |
| A68428 |  | SOG6: Edge Forms | resource dependent | 5d | 2026-10-20 | 2026-10-26 | A68468 FS-5d | 22d | 0d |
| A68408 |  | SOG6: Underground MEPs | resource dependent | 10d | 2026-10-23 | 2026-11-05 | A68428 FS-2d | 22d | 0d |
| A68478 |  | SOG6: Excavate Thickened Slabs |  | 1d | 2026-11-06 | 2026-11-06 | A68408 | 22d | 0d |
| A68418 |  | SOG6: Backfill Stone Subgrade | resource dependent | 3d | 2026-11-09 | 2026-11-11 | A68478 | 22d | 0d |
| A68488 |  | SOG6: Install Vapor Barrier |  | 1d | 2026-11-12 | 2026-11-12 | A68418 | 22d | 0d |
| A68438 |  | SOG6: Rebar / Inspect | resource dependent | 2d | 2026-11-13 | 2026-11-16 | A68488 | 22d | 0d |
| A68448 |  | SOG6: Pour SOG | resource dependent | 1d | 2026-11-17 | 2026-11-17 | A68438 | 22d | 0d |
| A68458 |  | SOG6: Strip forms | resource dependent | 3d | 2026-11-18 | 2026-11-20 | A68448 | 356d |  |
|  | 361 | **Structural Steel** |  |  | 2027-01-18 | 2027-05-03 |  |  |  |
| A68498 |  | 200: Amenity/Leasing Structural Steel | resource dependent | 25d | 2027-01-18 | 2027-02-19 | A68448 FS+38d | 22d | 0d |
|  | WBS241 | **Bridge 200 to 300** |  |  | 2027-04-01 | 2027-05-03 |  |  |  |
| A68698 |  | Bridge HSS Column_L2-L3 |  | 1d | 2027-04-01 | 2027-04-01 | A41128 SS | 265d | 11d |
| A68708 |  | Bridge HSS Column_L4-L5 |  | 1d | 2027-04-19 | 2027-04-19 | A68698, A41208 SS | 254d | 9d |
| A68718 |  | Bridge HSS Column_Roof |  | 1d | 2027-05-03 | 2027-05-03 | A68708, A41258 | 245d |  |

| ID | WBS | Activity | Type | Duration | Start | Finish | Predecessors | Total float | Constraint |
| --- | --- | --- | --- | --- | --- | --- | --- | --- | --- |
|  | 135 | **Wood Framing** |  |  | 2027-03-24 | 2027-05-18 |  |  |  |
|  | 136 | **Level 1 (12,000 SF)** |  |  | 2027-03-24 | 2027-03-31 |  |  |  |
| A41088 |  | 200L1: Layout | resource dependent | 2d | 2027-03-24 | 2027-03-25 | A68498 | 0d | as late as possible |
| A41098 |  | 200L1: Wall Framing | resource dependent | 3d | 2027-03-25 | 2027-03-29 | A41088 FS-1d, A37628 | 0d |  |
| A41108 |  | 200L1: Floor Trusses | resource dependent | 2d | 2027-03-29 | 2027-03-30 | A41098 FS-1d | 0d |  |
| A41118 |  | 200L1: Decking | resource dependent | 2d | 2027-03-30 | 2027-03-31 | A41108 FS-1d | 0d |  |
|  | 137 | **Level 2 (12,000 SF)** |  |  | 2027-04-01 | 2027-04-08 |  |  |  |
| A41128 |  | 200L2: Layout | resource dependent | 1d | 2027-04-01 | 2027-04-01 | A41118 | 0d |  |
| A41138 |  | 200L2: Wall Framing | resource dependent | 3d | 2027-04-02 | 2027-04-06 | A41128 | 0d |  |
| A41148 |  | 200L2: Floor Trusses | resource dependent | 2d | 2027-04-06 | 2027-04-07 | A41138 FS-1d | 0d |  |
| A41158 |  | 200L2: Decking | resource dependent | 2d | 2027-04-07 | 2027-04-08 | A41148 FS-1d | 0d |  |
|  | 138 | **Level 3 (12,000 SF)** |  |  | 2027-04-09 | 2027-04-16 |  |  |  |
| A41168 |  | 200L3: Layout | resource dependent | 1d | 2027-04-09 | 2027-04-09 | A41158 | 0d |  |
| A41178 |  | 200L3: Wall Framing | resource dependent | 3d | 2027-04-12 | 2027-04-14 | A41168 | 0d |  |
| A41188 |  | 200L3: Floor Trusses | resource dependent | 2d | 2027-04-14 | 2027-04-15 | A41178 FS-1d | 0d |  |
| A41198 |  | 200L3: Decking | resource dependent | 2d | 2027-04-15 | 2027-04-16 | A41188 FS-1d | 0d |  |
|  | 139 | **Level 4 (12,000 SF)** |  |  | 2027-04-19 | 2027-04-26 |  |  |  |
| A41208 |  | 200L4: Layout | resource dependent | 1d | 2027-04-19 | 2027-04-19 | A41198 | 0d |  |
| A41218 |  | 200L4: Wall Framing | resource dependent | 3d | 2027-04-20 | 2027-04-22 | A41208 | 0d |  |
| A41228 |  | 200L4: Floor Trusses | resource dependent | 2d | 2027-04-22 | 2027-04-23 | A41218 FS-1d | 0d |  |
| A41238 |  | 200L4: Decking | resource dependent | 2d | 2027-04-23 | 2027-04-26 | A41228 FS-1d | 0d |  |
|  | 140 | **Level 5 (12,000 SF)** |  |  | 2027-04-27 | 2027-05-18 |  |  |  |
| A41248 |  | 200L5: Layout | resource dependent | 1d | 2027-04-27 | 2027-04-27 | A41238 | 0d |  |
| A41258 |  | 200L5: Wall Framing | resource dependent | 3d | 2027-04-28 | 2027-04-30 | A41248 | 0d |  |
| A41268 |  | 200L5: Roof Trusses | resource dependent | 4d | 2027-04-30 | 2027-05-05 | A41258 FS-1d | 0d |  |
| A41278 |  | 200L5: Roof Decking | resource dependent | 3d | 2027-05-04 | 2027-05-06 | A41268 FS-2d | 0d |  |
| A41288 |  | 200L5: Build Out Parapets | resource dependent | 3d | 2027-05-06 | 2027-05-10 | A41278 FS-1d | 0d |  |
| A41308 |  | 200L5: MEP Roof Penetrations/Davits | resource dependent | 2d | 2027-05-07 | 2027-05-10 | A41278 | 240d |  |
| A44688 |  | 200L5: Roof Deck QC Inspection |  | 5d | 2027-05-11 | 2027-05-17 | A41288 | 0d |  |
| A41298 |  | 200L5: Roof Decking City Inspection | resource dependent | 1d | 2027-05-18 | 2027-05-18 | A41288, A44688 | 0d |  |

| ID | WBS | Activity | Type | Duration | Start | Finish | Predecessors | Total float | Free float |
| --- | --- | --- | --- | --- | --- | --- | --- | --- | --- |
|  | 141 | **Exterior Sheathing** |  |  | 2027-04-15 | 2027-05-17 |  |  |  |
| A41318 |  | 200L1: Sheathing | resource dependent | 3d | 2027-04-15 | 2027-04-19 | A41178 | 245d | 0d |
| A41328 |  | 200L1: Sheathing Inspection | resource dependent | 2d | 2027-04-20 | 2027-04-21 | A41318 | 245d | 0d |
| A41338 |  | 200L2: Sheathing | resource dependent | 3d | 2027-04-23 | 2027-04-27 | A41218 | 239d | 0d |
| A41348 |  | 200L2: Sheathing Inspection | resource dependent | 2d | 2027-04-28 | 2027-04-29 | A41338 | 239d | 0d |
| A41358 |  | 200L3: Sheathing | resource dependent | 3d | 2027-05-03 | 2027-05-05 | A41258 | 175d | 0d |
| A41368 |  | 200L3: Sheathing Inspection | resource dependent | 2d | 2027-05-06 | 2027-05-07 | A41358 | 233d | 0d |
| A41378 |  | 200L4: Sheathing | resource dependent | 3d | 2027-05-06 | 2027-05-10 | A41358 | 175d | 0d |
| A41388 |  | 200L4: Sheathing Inspection | resource dependent | 2d | 2027-05-11 | 2027-05-12 | A41378 | 230d | 0d |
| A41398 |  | 200L5: Sheathing | resource dependent | 3d | 2027-05-11 | 2027-05-13 | A41378 | 175d | 0d |
| A41408 |  | 200L5: Sheathing Inspection | resource dependent | 2d | 2027-05-14 | 2027-05-17 | A41398 | 175d | 0d |
|  | 142 | **Bracing Removal** |  |  | 2027-04-22 | 2027-05-18 |  |  |  |
| A41418 |  | 200L1: Remove Bracing | resource dependent | 1d | 2027-04-22 | 2027-04-22 | A41328 | 245d | 0d |
| A41428 |  | 200L2: Remove Bracing | resource dependent | 1d | 2027-04-30 | 2027-04-30 | A41348 | 239d | 0d |
| A41438 |  | 200L3: Remove Bracing | resource dependent | 1d | 2027-05-10 | 2027-05-10 | A41368 | 233d | 0d |
| A41448 |  | 200L4: Remove Bracing | resource dependent | 1d | 2027-05-13 | 2027-05-13 | A41388 | 230d | 0d |
| A41458 |  | 200L5: Remove Bracing | resource dependent | 1d | 2027-05-18 | 2027-05-18 | A41408 | 216d | 0d |
|  | 143 | **Framing Trade Partner QC** |  |  | 2027-04-23 | 2027-05-21 |  |  |  |
| A41468 |  | 200L1: Framing QC | resource dependent | 3d | 2027-04-23 | 2027-04-27 | A41418 | 245d | 0d |
| A41478 |  | 200L2: Framing QC | resource dependent | 3d | 2027-05-03 | 2027-05-05 | A41428 | 239d | 0d |
| A41488 |  | 100AL3: Framing QC | resource dependent | 3d | 2027-05-11 | 2027-05-13 | A41438 | 233d | 0d |
| A41498 |  | 200L4: Framing QC | resource dependent | 3d | 2027-05-14 | 2027-05-18 | A41448 | 230d | 0d |
| A41508 |  | 200L5: Framing QC | resource dependent | 3d | 2027-05-19 | 2027-05-21 | A41458 | 216d | 0d |
|  | 144 | **Framing JCC Structural Punch** |  |  | 2027-04-28 | 2027-05-27 |  |  |  |
| A41518 |  | 200L1: JCC Structural Punch | resource dependent | 4d | 2027-04-28 | 2027-05-03 | A41468 | 245d |  |
| A41528 |  | 200L2: JCC Structural Punch | resource dependent | 4d | 2027-05-06 | 2027-05-11 | A41478 | 239d |  |
| A41538 |  | 200L3: JCC Structural Punch | resource dependent | 4d | 2027-05-14 | 2027-05-19 | A41488 | 233d |  |
| A41548 |  | 200L4: JCC Structural Punch | resource dependent | 4d | 2027-05-19 | 2027-05-24 | A41498 | 230d |  |
| A41558 |  | 200L5: JCC Structural Punch | resource dependent | 4d | 2027-05-24 | 2027-05-27 | A41508 | 216d | 0d |

| ID | WBS | Activity | Type | Duration | Start | Finish | Predecessors | Total float | Free float |
| --- | --- | --- | --- | --- | --- | --- | --- | --- | --- |
|  | 145 | **Structural Engineer Punch** |  |  | 2027-05-28 | 2027-06-14 |  |  |  |
| A41568 |  | 200: EOR Create/Issue Structural Punch | resource dependent | 5d | 2027-05-28 | 2027-06-04 | A41558 | 216d | 0d |
| A41578 |  | 200: Trade Partner Complete Punch | resource dependent | 5d | 2027-06-07 | 2027-06-11 | A41568 | 216d | 0d |
| A41588 |  | 200: EOR Accept Punch | resource dependent | 1d | 2027-06-14 | 2027-06-14 | A41578 | 216d |  |
|  | WBS231 | **Structural Steel-1** |  |  |  |  |  |  |  |
|  | 146 | **Building Dry-In** |  |  | 2027-05-18 | 2027-08-12 |  |  |  |
|  | 147 | **Roofing (12,000 SF)** |  |  | 2027-05-19 | 2027-06-10 |  |  |  |
| A41078 |  | 200: Roof Dry-In | resource dependent | 9d | 2027-05-19 | 2027-06-01 | A41298 | 0d |  |
| A41668 |  | 200: Roof Detail Work | resource dependent | 5d | 2027-06-02 | 2027-06-08 | A41078 | 0d |  |
| A44698 |  | 200: TPO Roof QC Inspection |  | 3d | 2027-06-08 | 2027-06-10 | A41668 FS-1d | 0d |  |
|  | 148 | **Exterior Skin** |  |  | 2027-05-18 | 2027-08-12 |  |  |  |
|  | 149 | **Tyvek & Windows** |  |  | 2027-05-18 | 2027-06-17 |  |  |  |
|  | 150 | **Tyvek** |  |  | 2027-05-18 | 2027-06-10 |  |  |  |
| A44438 |  | TVK: Elevation A (1,900 SF) | resource dependent | 2d | 2027-05-18 | 2027-05-19 | A41408 | 175d | 0d |
| A44448 |  | TVK: Elevation B (11,200 SF) | resource dependent | 7d | 2027-05-20 | 2027-05-28 | A44438 | 175d | 0d |
| A44458 |  | TVK: Elevation C (TBD) | resource dependent | 4d | 2027-06-01 | 2027-06-04 | A44448 | 180d | 0d |
| A44468 |  | TVK: Elevation D (7,500 SF) | resource dependent | 4d | 2027-06-07 | 2027-06-10 | A44458 | 180d | 0d |
|  | 151 | **Windows/Doors** |  |  | 2027-06-01 | 2027-06-17 |  |  |  |
| A44478 |  | WN/DR: Elevation A (24) | resource dependent | 2d | 2027-06-01 | 2027-06-02 | A44438, A44448 | 175d | 0d |
| A44488 |  | WN/DR: Elevation B (42) | resource dependent | 3d | 2027-06-03 | 2027-06-07 | A44478, A44448 | 176d | 0d |
| A44498 |  | WN/DR: Elevation C (10) | resource dependent | 1d | 2027-06-08 | 2027-06-08 | A44488, A44458 | 180d | 2d |
| A68518 |  | WN/DR: Elevation D (80) |  | 5d | 2027-06-11 | 2027-06-17 | A44498, A44468 | 180d | 3d |
|  | 152 | **Skin** |  |  | 2027-06-03 | 2027-08-12 |  |  |  |
|  | 153 | **Elevation A** |  |  | 2027-06-03 | 2027-06-17 |  |  |  |
| A44508 |  | ELA: Brick (500SF) | resource dependent | 3d | 2027-06-03 | 2027-06-07 | A44478 | 175d | 0d |
| A44518 |  | ELA: Siding (1,400 SF) | resource dependent | 5d | 2027-06-08 | 2027-06-14 | A44508 | 175d | 0d |
| A44528 |  | ELA: Paint | resource dependent | 3d | 2027-06-15 | 2027-06-17 | A44518 | 193d | 7d |

| ID | WBS | Activity | Type | Duration | Start | Finish | Predecessors | Total float | Free float |
| --- | --- | --- | --- | --- | --- | --- | --- | --- | --- |
|  | 154 | **Elevation B** |  |  | 2027-06-08 | 2027-07-12 |  |  |  |
| A44538 |  | ELB: Brick (800SF) | resource dependent | 4d | 2027-06-08 | 2027-06-11 | A44488, A44508 | 176d | 0d |
| A44548 |  | ELB: Siding (3,200 SF) | resource dependent | 10d | 2027-06-15 | 2027-06-29 | A44518, A44538 | 175d | 0d |
| A44558 |  | ELB: Paint | resource dependent | 8d | 2027-06-30 | 2027-07-12 | A44528, A44548 | 186d | 2d |
|  | 155 | **Elevation C** |  |  | 2027-06-14 | 2027-07-21 |  |  |  |
| A44568 |  | ELC: Brick (TBD) | resource dependent | 7d | 2027-06-14 | 2027-06-23 | A44538, A44498 | 177d | 0d |
| A44578 |  | ELC: Siding (TBD) | resource dependent | 10d | 2027-06-30 | 2027-07-14 | A44548, A44568 | 175d | 0d |
| A44588 |  | ELC: Paint | resource dependent | 5d | 2027-07-15 | 2027-07-21 | A44558, A44578 | 184d | 9d |
|  | 156 | **Elevation D** |  |  | 2027-06-24 | 2027-08-12 |  |  |  |
| A44598 |  | ELD: Brick (3,200 SF) | resource dependent | 12d | 2027-06-24 | 2027-07-12 | A44568, A68518 | 177d | 2d |
| A44608 |  | ELD: Siding (4,300 SF) | resource dependent | 14d | 2027-07-15 | 2027-08-03 | A44578, A44598 | 175d | 0d |
| A44618 |  | ELD: Paint | resource dependent | 7d | 2027-08-04 | 2027-08-12 | A44588, A44608 | 175d |  |
|  | 157 | **Building Interiors** |  |  | 2027-04-09 | 2028-02-22 |  |  |  |
|  | 158 | **MEPF Non-Weather Sensitive Rough-In** |  |  | 2027-04-09 | 2027-05-27 |  |  |  |
|  | 159 | **Level 1 MEPF NWSR** |  |  | 2027-04-09 | 2027-04-26 |  |  |  |
| A41678 |  | 200L1NWSR: Plastic Rough & Valves | resource dependent | 3d | 2027-04-09 | 2027-04-13 | A41158, A38198 | 238d | 0d |
| A41688 |  | 200L1NWSR: Electrical Conduit, Boxes & Unit Feeders | resource dependent | 3d | 2027-04-14 | 2027-04-16 | A41678 | 238d | 0d |
| A41698 |  | 200L1NWSR: Sprinkler Mains | resource dependent | 3d | 2027-04-19 | 2027-04-21 | A41688 | 238d | 0d |
| A41708 |  | 200L1NWSR: Mechanical Hard Pipe & Boots | resource dependent | 3d | 2027-04-22 | 2027-04-26 | A41698, A38228 | 238d | 3d |
|  | 160 | **Level 2 MEPF NWSR** |  |  | 2027-04-19 | 2027-05-04 |  |  |  |
| A41718 |  | 200L1NWSR: Plastic Rough & Valves | resource dependent | 3d | 2027-04-19 | 2027-04-21 | A41198, A41678 | 235d | 0d |
| A41728 |  | 200L1NWSR: Electrical Conduit, Boxes & Unit Feeders | resource dependent | 3d | 2027-04-22 | 2027-04-26 | A41688, A41718 | 235d | 0d |
| A41738 |  | 200L1NWSR: Sprinkler Mains | resource dependent | 3d | 2027-04-27 | 2027-04-29 | A41698, A41728 | 235d | 0d |
| A41748 |  | 200L1NWSR: Mechanical Hard Pipe & Boots | resource dependent | 3d | 2027-04-30 | 2027-05-04 | A41708, A41738 | 235d | 3d |

| ID | WBS | Activity | Type | Duration | Start | Finish | Predecessors | Total float | Free float |
| --- | --- | --- | --- | --- | --- | --- | --- | --- | --- |
|  | 161 | **Level 3 MEPF NWSR** |  |  | 2027-04-27 | 2027-05-12 |  |  |  |
| A41758 |  | 200L1NWSR: Plastic Rough & Valves | resource dependent | 3d | 2027-04-27 | 2027-04-29 | A41238, A41718 | 232d | 0d |
| A41768 |  | 200L1NWSR: Electrical Conduit, Boxes & Unit Feeders | resource dependent | 3d | 2027-04-30 | 2027-05-04 | A41728, A41758 | 232d | 0d |
| A41778 |  | 200L1NWSR: Sprinkler Mains | resource dependent | 3d | 2027-05-05 | 2027-05-07 | A41738, A41768 | 232d | 0d |
| A41788 |  | 200L1NWSR: Mechanical Hard Pipe & Boots | resource dependent | 3d | 2027-05-10 | 2027-05-12 | A41748, A41778 | 232d | 5d |
|  | 162 | **Level 4 MEPF NWSR** |  |  | 2027-05-07 | 2027-05-24 |  |  |  |
| A41798 |  | 200L1NWSR: Plastic Rough & Valves | resource dependent | 3d | 2027-05-07 | 2027-05-11 | A41278, A41758 | 227d | 0d |
| A41808 |  | 200L1NWSR: Electrical Conduit, Boxes & Unit Feeders | resource dependent | 3d | 2027-05-12 | 2027-05-14 | A41768, A41798 | 227d | 0d |
| A41818 |  | 200L1NWSR: Sprinkler Mains | resource dependent | 3d | 2027-05-17 | 2027-05-19 | A41778, A41808 | 227d | 0d |
| A41828 |  | 200L1NWSR: Mechanical Hard Pipe & Boots | resource dependent | 3d | 2027-05-20 | 2027-05-24 | A41788, A41818 | 227d | 0d |
|  | 163 | **Level 5 MEPF NWSR** |  |  | 2027-05-12 | 2027-05-27 |  |  |  |
| A41838 |  | 200L1NWSR: Plastic Rough & Valves | resource dependent | 3d | 2027-05-12 | 2027-05-14 | A41798 | 227d | 0d |
| A41848 |  | 200L1NWSR: Electrical Conduit, Boxes & Unit Feeders | resource dependent | 3d | 2027-05-17 | 2027-05-19 | A41808, A41838 | 227d | 0d |
| A41858 |  | 200L1NWSR: Sprinkler Mains | resource dependent | 3d | 2027-05-20 | 2027-05-24 | A41818, A41848 | 227d | 0d |
| A41868 |  | 200L1NWSR: Mechanical Hard Pipe & Boots | resource dependent | 3d | 2027-05-25 | 2027-05-27 | A41828, A41858 | 227d |  |
|  | 164 | **Weather Sensitive Rough-In (Top Down)** |  |  | 2027-06-11 | 2027-08-12 |  |  |  |
| A41878 |  | 200: Install Insulation For Pre-Rock | resource dependent | 2d | 2027-06-11 | 2027-06-14 | A41078, A44698 | 0d |  |
| A41888 |  | 200: Prehang Shafts, Tubs and Mechanical Rooms | resource dependent | 3d | 2027-06-15 | 2027-06-17 | A41878 | 0d |  |
| A41898 |  | 200: Pre-Pour Gypcrete | resource dependent | 2d | 2027-06-21 | 2027-06-22 | A41888 | 0d |  |
|  | 165 | **Install Tubs/Shower Pans** |  |  | 2027-06-23 | 2027-06-29 |  |  |  |
| A41908 |  | 200L1: Tubs/Shower Pans | resource dependent | 1d | 2027-06-23 | 2027-06-23 | A41898 | 0d |  |
| A41918 |  | 200L2: Tubs/Shower Pans | resource dependent | 1d | 2027-06-24 | 2027-06-24 | A41908 | 206d | 0d |
| A41928 |  | 200L3: Tubs/Shower Pans | resource dependent | 1d | 2027-06-25 | 2027-06-25 | A41918 | 206d | 0d |
| A41938 |  | 200L4: Tubs/Shower Pans | resource dependent | 1d | 2027-06-28 | 2027-06-28 | A41928 | 206d | 0d |
| A41948 |  | 200L5: Tubs/Shower Pans | resource dependent | 1d | 2027-06-29 | 2027-06-29 | A41938 | 206d |  |

| ID | WBS | Activity | Type | Duration | Start | Finish | Predecessors | Total float | Free float |
| --- | --- | --- | --- | --- | --- | --- | --- | --- | --- |
|  | 166 | **Level 5 (11 Units)** |  |  | 2027-06-24 | 2027-07-08 |  |  |  |
|  | 167 | **L5 MEP WSR Units** |  |  | 2027-06-24 | 2027-07-01 |  |  |  |
| A41958 |  | 200L5WSR: Mechanical Duct & Damper Install | resource dependent | 3d | 2027-06-24 | 2027-06-28 | A41908, A38558 | 0d |  |
| A41968 |  | 200L5WSR: Pull Branch Circuits/Fire Caulk | resource dependent | 3d | 2027-06-29 | 2027-07-01 | A41958, A38568 | 0d |  |
|  | 168 | **L5 MEP WSR Corridor** |  |  | 2027-06-29 | 2027-07-08 |  |  |  |
| A41978 |  | 200L5WSR: Corridor Mechanical Duct | resource dependent | 3d | 2027-06-29 | 2027-07-01 | A41958 | 0d |  |
| A41988 |  | 200L5WSR: Corridor Circuitry | resource dependent | 2d | 2027-07-02 | 2027-07-06 | A41968, A41978 | 0d |  |
| A41998 |  | 200L5WSR: Corridor LV/ERRC/FA | resource dependent | 2d | 2027-07-02 | 2027-07-06 | A41968, A41988 FS-2d | 0d |  |
| A42008 |  | 200L5WSR: Service Provider Rough | resource dependent | 2d | 2027-07-07 | 2027-07-08 | A41998 | 0d |  |
|  | 169 | **Level 4 (11 Units)** |  |  | 2027-06-29 | 2027-07-13 |  |  |  |
|  | 170 | **L4 MEP WSR Units** |  |  | 2027-06-29 | 2027-07-07 |  |  |  |
| A42018 |  | 200L4WSR: Mechanical Duct & Damper Install | resource dependent | 3d | 2027-06-29 | 2027-07-01 | A41958 | 4d | 0d |
| A42028 |  | 200L4WSR: Pull Branch Circuits/Fire Caulk | resource dependent | 3d | 2027-07-02 | 2027-07-07 | A42018, A41968 | 4d | 0d |
|  | 171 | **L4 MEP WSR Corridor** |  |  | 2027-07-02 | 2027-07-13 |  |  |  |
| A42038 |  | 200L4WSR: Corridor Mechanical Duct | resource dependent | 3d | 2027-07-02 | 2027-07-07 | A42018 | 4d | 0d |
| A42048 |  | 200L4WSR: Corridor Circuitry | resource dependent | 2d | 2027-07-08 | 2027-07-09 | A42028, A42038 | 4d | 0d |
| A42058 |  | 200L4WSR: Corridor LV/ERRC/FA | resource dependent | 2d | 2027-07-08 | 2027-07-09 | A42028, A42048 FS-2d | 4d | 0d |
| A42068 |  | 200L4WSR: Service Provider Rough | resource dependent | 2d | 2027-07-12 | 2027-07-13 | A42058 | 4d | 2d |
|  | 172 | **Level 3 (11 Units)** |  |  | 2027-07-02 | 2027-07-16 |  |  |  |
|  | 173 | **L3 MEP WSR Units** |  |  | 2027-07-02 | 2027-07-12 |  |  |  |
| A42078 |  | 200L3WSR: Mechanical Duct & Damper Install | resource dependent | 3d | 2027-07-02 | 2027-07-07 | A42018 | 8d | 0d |
| A42088 |  | 200L3WSR: Pull Branch Circuits/Fire Caulk | resource dependent | 3d | 2027-07-08 | 2027-07-12 | A42028, A42078 | 8d | 0d |
|  | 174 | **L3 MEP WSR Corridor** |  |  | 2027-07-08 | 2027-07-16 |  |  |  |
| A42098 |  | 200L3WSR: Corridor Mechanical Duct | resource dependent | 3d | 2027-07-08 | 2027-07-12 | A42078 | 8d | 0d |
| A42108 |  | 200L3WSR: Corridor Circuitry | resource dependent | 2d | 2027-07-13 | 2027-07-14 | A42088, A42098 | 8d | 0d |
| A42118 |  | 200L3WSR: Corridor LV/ERRC/FA | resource dependent | 2d | 2027-07-13 | 2027-07-14 | A42088, A42108 FS-2d | 8d | 0d |
| A42128 |  | 200L3WSR: Service Provider Rough | resource dependent | 2d | 2027-07-15 | 2027-07-16 | A42118 | 8d | 4d |

| ID | WBS | Activity | Type | Duration | Start | Finish | Predecessors | Total float | Free float |
| --- | --- | --- | --- | --- | --- | --- | --- | --- | --- |
|  | 175 | **Level 2 (11 Units)** |  |  | 2027-07-08 | 2027-07-21 |  |  |  |
|  | 176 | **L2 MEP WSR Units** |  |  | 2027-07-08 | 2027-07-15 |  |  |  |
| A42138 |  | 200L2WSR: Mechanical Duct & Damper Install | resource dependent | 3d | 2027-07-08 | 2027-07-12 | A42078 | 12d | 0d |
| A42148 |  | 200L2WSR: Pull Branch Circuits/Fire Caulk | resource dependent | 3d | 2027-07-13 | 2027-07-15 | A42088, A42138 | 12d | 0d |
|  | 177 | **L2 MEP WSR Corridor** |  |  | 2027-07-13 | 2027-07-21 |  |  |  |
| A42158 |  | 200L2WSR: Corridor Mechanical Duct | resource dependent | 3d | 2027-07-13 | 2027-07-15 | A42138 | 12d | 0d |
| A42168 |  | 200L2WSR: Corridor Circuitry | resource dependent | 2d | 2027-07-16 | 2027-07-19 | A42148, A42158 | 12d | 0d |
| A42178 |  | 200L2WSR: Corridor LV/ERRC/FA | resource dependent | 2d | 2027-07-16 | 2027-07-19 | A42148, A42168 FS-2d | 12d | 0d |
| A42188 |  | 200L2WSR: Service Provider Rough | resource dependent | 2d | 2027-07-20 | 2027-07-21 | A42178 | 12d | 6d |
|  | 178 | **Level 1 (11 Units)** |  |  | 2027-07-13 | 2027-07-26 |  |  |  |
|  | 179 | **L1 MEP WSR Units** |  |  | 2027-07-13 | 2027-07-20 |  |  |  |
| A42198 |  | 200L1WSR: Mechanical Duct & Damper Install | resource dependent | 3d | 2027-07-13 | 2027-07-15 | A42138 | 16d | 0d |
| A42208 |  | 200L1WSR: Pull Branch Circuits/Fire Caulk | resource dependent | 3d | 2027-07-16 | 2027-07-20 | A42148, A42198 | 16d | 0d |
|  | 180 | **L1 MEP WSR Corridor** |  |  | 2027-07-16 | 2027-07-26 |  |  |  |
| A42218 |  | 200L1WSR: Corridor Mechanical Duct | resource dependent | 3d | 2027-07-16 | 2027-07-20 | A42198 | 16d | 0d |
| A42228 |  | 200L1WSR: Corridor Circuitry | resource dependent | 2d | 2027-07-21 | 2027-07-22 | A42208, A42218 | 16d | 0d |
| A42238 |  | 200L1WSR: Corridor LV/ERRC/FA | resource dependent | 2d | 2027-07-21 | 2027-07-22 | A42208, A42228 FS-2d | 16d | 0d |
| A42248 |  | 200L1WSR: Service Provider Rough | resource dependent | 2d | 2027-07-23 | 2027-07-26 | A42238 | 16d | 8d |
|  | WBS131 | **MEPF WSR Quality Control** |  |  | 2027-07-09 | 2027-08-12 |  |  |  |
| A44638 |  | MEPF WSR QC Level 5 |  | 5d | 2027-07-09 | 2027-07-15 | A42008 | 0d |  |
| A44648 |  | MEPF WSR QC Level 4 |  | 5d | 2027-07-16 | 2027-07-22 | A42068, A44638 | 2d | 0d |
| A44658 |  | MEPF WSR QC Level 3 |  | 5d | 2027-07-23 | 2027-07-29 | A42128, A44648 | 4d | 0d |
| A44668 |  | MEPF WSR QC Level 2 |  | 5d | 2027-07-30 | 2027-08-05 | A42188, A44658 | 6d | 0d |
| A44678 |  | MEPF WSR QC Level 1 |  | 5d | 2027-08-06 | 2027-08-12 | A42248, A44668 | 8d | 0d |

| ID | WBS | Activity | Type | Duration | Start | Finish | Predecessors | Total float | Free float |
| --- | --- | --- | --- | --- | --- | --- | --- | --- | --- |
|  | 181 | **Cover-up Inspections** |  |  | 2027-07-16 | 2027-08-19 |  |  |  |
|  | 182 | **Level 5** |  |  | 2027-07-16 | 2027-07-22 |  |  |  |
| A42298 |  | 200L5: MEPF Trade Inspection | resource dependent | 2d | 2027-07-16 | 2027-07-19 | A42008, A44638 | 0d |  |
| A42308 |  | 200L5: Fire Marshal Inspection | resource dependent | 2d | 2027-07-20 | 2027-07-21 | A42298 | 0d |  |
| A42318 |  | 200L5: Structural Inspection | resource dependent | 1d | 2027-07-22 | 2027-07-22 | A42308 | 0d |  |
|  | 183 | **Level 4** |  |  | 2027-07-23 | 2027-07-29 |  |  |  |
| A42288 |  | 200L4: MEPF Trade Inspection | resource dependent | 2d | 2027-07-23 | 2027-07-26 | A42068, A44648 | 2d | 0d |
| A42328 |  | 200L4: Fire Marshal Inspection | resource dependent | 2d | 2027-07-27 | 2027-07-28 | A42288 | 2d | 0d |
| A42338 |  | 200L4: Structural Inspection | resource dependent | 1d | 2027-07-29 | 2027-07-29 | A42328 | 2d | 0d |
|  | 184 | **Level 3** |  |  | 2027-07-30 | 2027-08-05 |  |  |  |
| A42278 |  | 200L3: MEPF Trade Inspection | resource dependent | 2d | 2027-07-30 | 2027-08-02 | A42128, A44658 | 4d | 0d |
| A42348 |  | 200L3: Fire Marshal Inspection | resource dependent | 2d | 2027-08-03 | 2027-08-04 | A42278 | 4d | 0d |
| A42358 |  | 200L3: Structural Inspection | resource dependent | 1d | 2027-08-05 | 2027-08-05 | A42348 | 4d | 0d |
|  | 185 | **Level 2** |  |  | 2027-08-06 | 2027-08-12 |  |  |  |
| A42268 |  | 200L2: MEPF Trade Inspection | resource dependent | 2d | 2027-08-06 | 2027-08-09 | A42188, A44668 | 6d | 0d |
| A42368 |  | 200L2: Fire Marshal Inspection | resource dependent | 2d | 2027-08-10 | 2027-08-11 | A42268 | 6d | 0d |
| A42378 |  | 200L2: Structural Inspection | resource dependent | 1d | 2027-08-12 | 2027-08-12 | A42368 | 6d | 0d |
|  | 186 | **Level 1** |  |  | 2027-08-13 | 2027-08-19 |  |  |  |
| A42258 |  | 200L1: MEPF Trade Inspection | resource dependent | 2d | 2027-08-13 | 2027-08-16 | A42248, A44678 | 8d | 0d |
| A42388 |  | 200L1: Fire Marshal Inspection | resource dependent | 2d | 2027-08-17 | 2027-08-18 | A42258 | 8d | 0d |
| A42398 |  | 200L1: Structural Inspection | resource dependent | 1d | 2027-08-19 | 2027-08-19 | A42388 | 8d | 0d |
|  | 187 | **Interior Finishes** |  |  | 2027-07-23 | 2028-02-03 |  |  |  |
|  | 188 | **Level 5** |  |  | 2027-07-23 | 2027-12-30 |  |  |  |
|  | 189 | **Level 5 Residential Units** |  |  | 2027-07-23 | 2027-12-17 |  |  |  |
| A42408 |  | 200L5: Insulation | resource dependent | 3d | 2027-07-23 | 2027-07-27 | A42318 | 0d |  |
| A42418 |  | 200L5: Insulation Inspection | resource dependent | 1d | 2027-07-28 | 2027-07-28 | A42408 | 0d |  |
| A42428 |  | 200L5: Install Resilient Channel | resource dependent | 2d | 2027-07-28 | 2027-07-29 | A42418 FS-1d | 0d |  |
| A42438 |  | 200L5: Pre-Hang QC Inspections | resource dependent | 5d | 2027-07-30 | 2027-08-05 | A42428 | 0d |  |
| A42448 |  | 200L5: Stock Drywall | resource dependent | 2d | 2027-08-06 | 2027-08-09 | A42438 | 0d |  |
| A42468 |  | 200L5: Hang Drywall | resource dependent | 4d | 2027-08-10 | 2027-08-13 | A42448, A40338 | 0d |  |
| A42458 |  | 200L5: Post Hang QC Inspecitons | resource dependent | 5d | 2027-08-16 | 2027-08-20 | A42468 | 0d |  |
| A42478 |  | 200L5: Finish Drywall | resource dependent | 7d | 2027-08-23 | 2027-08-31 | A42458 | 0d |  |
| A42488 |  | 200L5: Prime Paint | resource dependent | 3d | 2027-09-27 | 2027-09-29 | A42478, A40368 | 3d | 0d |
| A42498 |  | 200L5: Gypcrete Prep | resource dependent | 2d | 2027-09-30 | 2027-10-01 | A42488 | 6d | 0d |
| A42508 |  | 200L5: Install Gypcrete | resource dependent | 2d | 2027-10-04 | 2027-10-05 | A42498 | 6d | 0d |
| A42518 |  | 200L5: Install AHU/WH | resource dependent | 2d | 2027-10-06 | 2027-10-07 | A42508, A40378 | 8d | 1d |
| A42528 |  | 200L5: Shower Surrounds | resource dependent | 3d | 2027-10-06 | 2027-10-08 | A42508, A40388 | 15d | 0d |
| A42538 |  | 200L5: Vanities and Kitchen Casework | resource dependent | 6d | 2027-10-14 | 2027-10-21 | A42508 FS+4d, A40398 | 4d | 0d |
| A42548 |  | 200L5: Install Countertops | resource dependent | 4d | 2027-10-22 | 2027-10-27 | A42538, A40408 | 12d | 0d |
| A42578 |  | 200L5: Install Shower Doors | resource dependent | 5d | 2027-10-25 | 2027-10-29 | A42528 FS+10d, A40438 | 15d | 0d |
| A42558 |  | 200L5: Install Interior Doors & Trim | resource dependent | 5d | 2027-10-28 | 2027-11-03 | A42548, A40428 | 12d | 0d |
| A42568 |  | 200L5: Kitchen Backsplash | resource dependent | 3d | 2027-10-28 | 2027-11-01 | A42548 | 14d | 2d |
| A42588 |  | 200L5: Drywall Touch-Up | resource dependent | 3d | 2027-11-04 | 2027-11-08 | A42518, A42558, A42568, A42578 | 12d | 0d |
| A42648 |  | 200L5: First Finish Paint (Ceilings, Trim, Doors & Walls) | resource dependent | 5d | 2027-11-09 | 2027-11-15 | A42588, A40458 | 12d | 0d |
| A42658 |  | 200L5: MEPS Ceiling Trim Out | resource dependent | 3d | 2027-11-16 | 2027-11-18 | A42648, A40468 | 12d | 0d |
| A42668 |  | 200L5: Install Flooring | resource dependent | 5d | 2027-11-19 | 2027-11-29 | A42658, A40478 | 12d | 0d |
| A42678 |  | 200L5: Minor Appliance Delivery | resource dependent | 2d | 2027-11-30 | 2027-12-01 | A42668 | 24d | 0d |
| A42688 |  | 200L5: MEP Trim-Out DW, Disposal & Sink Install | resource dependent | 3d | 2027-12-02 | 2027-12-06 | A42678 | 24d | 0d |
| A42698 |  | 200L5: Install Door Hardware | resource dependent | 3d | 2027-12-07 | 2027-12-09 | A42688 | 24d | 0d |
| A42708 |  | 200L5: Unit Accessories | resource dependent | 2d | 2027-12-10 | 2027-12-13 | A42698, A40518 | 24d | 0d |
| A42718 |  | 200L5: Major Appliance Delivery - Install Refrigerator, Microwave, W/D | resource dependent | 2d | 2027-12-10 | 2027-12-13 | A42698 | 24d | 0d |
| A42778 |  | 200L5: Rough Clean | resource dependent | 4d | 2027-12-14 | 2027-12-17 | A42708, A42718, A40538 | 24d | 0d |

| ID | WBS | Activity | Type | Duration | Start | Finish | Predecessors | Total float | Free float |
| --- | --- | --- | --- | --- | --- | --- | --- | --- | --- |
|  | 190 | **Level 5 Common Areas** |  |  | 2027-08-10 | 2027-12-30 |  |  |  |
| A42598 |  | 200L5: Stock Drywall | resource dependent | 1d | 2027-08-10 | 2027-08-10 | A42448 | 144d | 3d |
| A42608 |  | 200L5: Hang/Finish Drywall | resource dependent | 4d | 2027-08-16 | 2027-08-19 | A42468, A42598 | 141d | 0d |
| A42618 |  | 200L5: Prime Paint | resource dependent | 1d | 2027-09-30 | 2027-09-30 | A42488, A42608 | 129d | 24d |
| A42628 |  | 200L5: Install Wood Base | resource dependent | 1d | 2027-11-04 | 2027-11-04 | A42558, A42618 | 105d | 7d |
| A42638 |  | 200L5: First Finish Paint | resource dependent | 2d | 2027-11-16 | 2027-11-17 | A42628, A42648 | 98d | 1d |
| A42728 |  | 200L5: MEP Device Trim-Out | resource dependent | 1d | 2027-11-19 | 2027-11-19 | A42638, A42658 | 97d | 4d |
| A42738 |  | 200L5: Install Flooring | resource dependent | 1d | 2027-11-30 | 2027-11-30 | A42668, A42728 | 93d | 13d |
| A42748 |  | 200L5: Rough Clean | resource dependent | 1d | 2027-12-20 | 2027-12-20 | A42738, A42778 | 80d | 0d |
| A42758 |  | 200L5: JCC Punchlist | resource dependent | 5d | 2027-12-21 | 2027-12-29 | A42748 | 80d | 0d |
| A42768 |  | 200L5: Final Clean | resource dependent | 1d | 2027-12-30 | 2027-12-30 | A42758 | 80d |  |
|  | 191 | **Level 4** |  |  | 2027-07-30 | 2028-01-10 |  |  |  |
|  | 192 | **Level 4 Residential Units** |  |  | 2027-07-30 | 2027-12-29 |  |  |  |
| A42788 |  | 200L4: Insulation | resource dependent | 3d | 2027-07-30 | 2027-08-03 | A42338 | 2d | 0d |
| A42798 |  | 200L4: Insulation Inspection | resource dependent | 1d | 2027-08-04 | 2027-08-04 | A42788 | 2d | 0d |
| A42808 |  | 200L4: Install Resilient Channel | resource dependent | 2d | 2027-08-04 | 2027-08-05 | A42798 FS-1d | 2d | 0d |
| A42818 |  | 200L4: Pre-Hang QC Inspections | resource dependent | 5d | 2027-08-06 | 2027-08-12 | A42808 | 2d | 0d |
| A42828 |  | 200L4: Stock Drywall | resource dependent | 2d | 2027-08-13 | 2027-08-16 | A42818 | 2d | 0d |
| A42838 |  | 200L4: Hang Drywall | resource dependent | 4d | 2027-08-17 | 2027-08-20 | A42468, A42828 | 2d | 0d |
| A42848 |  | 200L4: Post Hang QC Inspecitons | resource dependent | 5d | 2027-08-23 | 2027-08-27 | A42838 | 2d |  |
| A42858 |  | 200L4: Finish Drywall | resource dependent | 7d | 2027-09-01 | 2027-09-10 | A42478, A42848 | 0d |  |
| A42868 |  | 200L4: Prime Paint | resource dependent | 3d | 2027-09-30 | 2027-10-04 | A42858, A42488 | 3d | 0d |
| A42878 |  | 200L4: Gypcrete Prep | resource dependent | 2d | 2027-10-05 | 2027-10-06 | A42868 | 7d | 0d |
| A42888 |  | 200L4: Install Gypcrete | resource dependent | 2d | 2027-10-07 | 2027-10-08 | A42878 | 7d | 0d |
| A42898 |  | 200L4: Install AHU/WH | resource dependent | 2d | 2027-10-11 | 2027-10-12 | A42888, A42518 | 7d | 1d |
| A42908 |  | 200L4: Shower Surrounds | resource dependent | 3d | 2027-10-11 | 2027-10-13 | A42888, A42528 | 17d | 0d |
| A42918 |  | 200L4: Vanities and Kitchen Casework | resource dependent | 6d | 2027-10-22 | 2027-10-29 | A42538, A42888 FS+4d | 4d | 0d |
| A42928 |  | 200L4: Install Countertops | resource dependent | 4d | 2027-11-01 | 2027-11-04 | A42548, A42918 | 11d | 0d |
| A42958 |  | 200L4: Install Shower Doors | resource dependent | 5d | 2027-11-01 | 2027-11-05 | A42908 FS+10d, A42578 | 15d | 0d |
| A42938 |  | 200L4: Kitchen Backsplash | resource dependent | 3d | 2027-11-05 | 2027-11-09 | A42928 | 13d | 2d |
| A42948 |  | 200L4: Install Interior Doors & Trim | resource dependent | 5d | 2027-11-05 | 2027-11-11 | A42558, A42928 | 11d | 0d |
| A42968 |  | 200L4: Drywall Touch-Up | resource dependent | 3d | 2027-11-12 | 2027-11-16 | A42898, A42938, A42948, A42958 | 11d | 0d |
| A42978 |  | 200L4: First Finish Paint (Ceilings, Trim, Doors & Walls) | resource dependent | 5d | 2027-11-17 | 2027-11-23 | A42648, A42968 | 11d | 0d |
| A42988 |  | 200L4: MEPS Ceiling Trim Out | resource dependent | 3d | 2027-11-24 | 2027-11-30 | A42978, A42658 | 11d | 0d |
| A42998 |  | 200L4: Install Flooring | resource dependent | 5d | 2027-12-01 | 2027-12-07 | A42668, A42988 | 11d | 0d |
| A43008 |  | 200L4: Minor Appliance Delivery | resource dependent | 2d | 2027-12-08 | 2027-12-09 | A42998 | 24d | 0d |
| A43018 |  | 200L4: MEP Trim-Out DW, Disposal & Sink Install | resource dependent | 3d | 2027-12-10 | 2027-12-14 | A43008 | 24d | 0d |
| A43028 |  | 200L4: Install Door Hardware | resource dependent | 3d | 2027-12-15 | 2027-12-17 | A43018 | 24d | 0d |
| A43038 |  | 200L4: Unit Accessories | resource dependent | 2d | 2027-12-20 | 2027-12-21 | A43028, A42708 | 24d | 0d |
| A43048 |  | 200L4: Major Appliance Delivery - Install Refrigerator, Microwave, W/D | resource dependent | 2d | 2027-12-20 | 2027-12-21 | A42718, A43028 | 24d | 0d |
| A43058 |  | 200L4: Rough Clean | resource dependent | 4d | 2027-12-22 | 2027-12-29 | A43038, A43048, A42778 | 24d | 0d |

| ID | WBS | Activity | Type | Duration | Start | Finish | Predecessors | Total float | Free float |
| --- | --- | --- | --- | --- | --- | --- | --- | --- | --- |
|  | 193 | **Level 4 Common Areas** |  |  | 2027-08-17 | 2028-01-10 |  |  |  |
| A43068 |  | 200L4: Stock Drywall | resource dependent | 1d | 2027-08-17 | 2027-08-17 | A42828 | 155d | 3d |
| A43078 |  | 200L4: Hang/Finish Drywall | resource dependent | 4d | 2027-08-23 | 2027-08-26 | A42838, A43068 | 152d | 26d |
| A43088 |  | 200L4: Prime Paint | resource dependent | 1d | 2027-10-05 | 2027-10-05 | A42868, A43078 | 126d | 27d |
| A43098 |  | 200L4: Install Wood Base | resource dependent | 1d | 2027-11-12 | 2027-11-12 | A42948, A43088 | 99d | 7d |
| A43108 |  | 200L4: First Finish Paint | resource dependent | 2d | 2027-11-24 | 2027-11-29 | A42978, A43098 | 92d | 1d |
| A43118 |  | 200L4: MEP Device Trim-Out | resource dependent | 1d | 2027-12-01 | 2027-12-01 | A42988, A43108 | 91d | 4d |
| A43128 |  | 200L4: Install Flooring | resource dependent | 1d | 2027-12-08 | 2027-12-08 | A42998, A43118 | 87d | 13d |
| A43138 |  | 200L4: Rough Clean | resource dependent | 1d | 2027-12-30 | 2027-12-30 | A43058, A43128 | 74d | 0d |
| A43148 |  | 200L4: JCC Punchlist | resource dependent | 5d | 2028-01-03 | 2028-01-07 | A43138 | 74d | 0d |
| A43158 |  | 200L4: Final Clean | resource dependent | 1d | 2028-01-10 | 2028-01-10 | A43148 | 74d |  |
|  | 194 | **Level 3** |  |  | 2027-08-06 | 2028-01-18 |  |  |  |
|  | 195 | **Level 3 Residential Units** |  |  | 2027-08-06 | 2028-01-07 |  |  |  |
| A43168 |  | 200L3: Insulation | resource dependent | 3d | 2027-08-06 | 2027-08-10 | A42358 | 4d | 0d |
| A43178 |  | 200L3: Insulation Inspection | resource dependent | 1d | 2027-08-11 | 2027-08-11 | A43168 | 4d | 0d |
| A43188 |  | 200L3: Install Resilient Channel | resource dependent | 2d | 2027-08-11 | 2027-08-12 | A43178 FS-1d | 4d | 0d |
| A43198 |  | 200L3: Pre-Hang QC Inspections | resource dependent | 5d | 2027-08-13 | 2027-08-19 | A43188 | 4d | 0d |
| A43208 |  | 200L3: Stock Drywall | resource dependent | 2d | 2027-08-20 | 2027-08-23 | A43198 | 4d | 0d |
| A43218 |  | 200L3: Hang Drywall | resource dependent | 4d | 2027-08-24 | 2027-08-27 | A42838, A43208 | 4d | 0d |
| A43228 |  | 200L3: Post Hang QC Inspecitons | resource dependent | 5d | 2027-08-30 | 2027-09-03 | A43218 | 4d |  |
| A43238 |  | 200L3: Finish Drywall | resource dependent | 7d | 2027-09-13 | 2027-09-21 | A42858, A43228 | 0d |  |
| A43248 |  | 200L3: Prime Paint | resource dependent | 3d | 2027-10-05 | 2027-10-07 | A43238, A42868 | 3d | 0d |
| A43258 |  | 200L3: Gypcrete Prep | resource dependent | 2d | 2027-10-08 | 2027-10-11 | A43248 | 6d | 0d |
| A43268 |  | 200L3: Install Gypcrete | resource dependent | 2d | 2027-10-12 | 2027-10-13 | A43258 | 6d | 0d |
| A43278 |  | 200L3: Install AHU/WH | resource dependent | 2d | 2027-10-14 | 2027-10-15 | A43268, A42898 | 6d | 1d |
| A43288 |  | 200L3: Shower Surrounds | resource dependent | 3d | 2027-10-14 | 2027-10-18 | A43268, A42908 | 19d | 0d |
| A43298 |  | 200L3: Vanities and Kitchen Casework | resource dependent | 6d | 2027-11-01 | 2027-11-08 | A42918, A43268 FS+4d | 4d | 0d |
| A43338 |  | 200L3: Install Shower Doors | resource dependent | 5d | 2027-11-08 | 2027-11-12 | A43288 FS+10d, A42958 | 15d | 0d |
| A43308 |  | 200L3: Install Countertops | resource dependent | 4d | 2027-11-09 | 2027-11-12 | A42928, A43298 | 10d | 0d |
| A43318 |  | 200L3: Kitchen Backsplash | resource dependent | 3d | 2027-11-15 | 2027-11-17 | A43308 | 12d | 2d |
| A43328 |  | 200L3: Install Interior Doors & Trim | resource dependent | 5d | 2027-11-15 | 2027-11-19 | A42948, A43308 | 10d | 0d |
| A43348 |  | 200L3: Drywall Touch-Up | resource dependent | 3d | 2027-11-22 | 2027-11-24 | A43278, A43318, A43328, A43338 | 10d | 0d |
| A43358 |  | 200L3: First Finish Paint (Ceilings, Trim, Doors & Walls) | resource dependent | 5d | 2027-11-29 | 2027-12-03 | A42978, A43348 | 10d | 0d |
| A43368 |  | 200L3: MEPS Ceiling Trim Out | resource dependent | 3d | 2027-12-06 | 2027-12-08 | A43358, A42988 | 10d | 0d |
| A43378 |  | 200L3: Install Flooring | resource dependent | 5d | 2027-12-09 | 2027-12-15 | A42998, A43368 | 10d | 0d |
| A43388 |  | 200L3: Minor Appliance Delivery | resource dependent | 2d | 2027-12-16 | 2027-12-17 | A43378 | 24d | 0d |
| A43398 |  | 200L3: MEP Trim-Out DW, Disposal & Sink Install | resource dependent | 3d | 2027-12-20 | 2027-12-22 | A43388 | 24d | 0d |
| A43408 |  | 200L3: Install Door Hardware | resource dependent | 3d | 2027-12-23 | 2027-12-29 | A43398 | 24d | 0d |
| A43418 |  | 200L3: Unit Accessories | resource dependent | 2d | 2027-12-30 | 2028-01-03 | A43408, A43038 | 24d | 0d |
| A43428 |  | 200L3: Major Appliance Delivery - Install Refrigerator, Microwave, W/D | resource dependent | 2d | 2027-12-30 | 2028-01-03 | A43048, A43408 | 24d | 0d |
| A43438 |  | 200L3: Rough Clean | resource dependent | 4d | 2028-01-04 | 2028-01-07 | A43418, A43428, A43058 | 24d | 0d |

| ID | WBS | Activity | Type | Duration | Start | Finish | Predecessors | Total float | Free float |
| --- | --- | --- | --- | --- | --- | --- | --- | --- | --- |
|  | 196 | **Level 3 Common Areas** |  |  | 2027-08-24 | 2028-01-18 |  |  |  |
| A43448 |  | 200L3: Stock Drywall | resource dependent | 1d | 2027-08-24 | 2027-08-24 | A43208 | 150d | 3d |
| A43458 |  | 200L3: Hang/Finish Drywall | resource dependent | 4d | 2027-08-30 | 2027-09-02 | A43218, A43448 | 147d | 24d |
| A43468 |  | 200L3: Prime Paint | resource dependent | 1d | 2027-10-08 | 2027-10-08 | A43248, A43458 | 123d | 30d |
| A43478 |  | 200L3: Install Wood Base | resource dependent | 1d | 2027-11-22 | 2027-11-22 | A43328, A43468 | 93d | 7d |
| A43488 |  | 200L3: First Finish Paint | resource dependent | 2d | 2027-12-06 | 2027-12-07 | A43358, A43478 | 86d | 1d |
| A43498 |  | 200L3: MEP Device Trim-Out | resource dependent | 1d | 2027-12-09 | 2027-12-09 | A43368, A43488 | 85d | 4d |
| A43508 |  | 200L3: Install Flooring | resource dependent | 1d | 2027-12-16 | 2027-12-16 | A43378, A43498 | 81d | 13d |
| A43518 |  | 200L3: Rough Clean | resource dependent | 1d | 2028-01-10 | 2028-01-10 | A43438, A43508 | 68d | 0d |
| A43528 |  | 200L3: JCC Punchlist | resource dependent | 5d | 2028-01-11 | 2028-01-17 | A43518 | 68d | 0d |
| A43538 |  | 200L3: Final Clean | resource dependent | 1d | 2028-01-18 | 2028-01-18 | A43528 | 68d |  |
|  | 197 | **Level 2** |  |  | 2027-08-13 | 2028-01-26 |  |  |  |
|  | 198 | **Level 2 Residential Units** |  |  | 2027-08-13 | 2028-01-17 |  |  |  |
| A43548 |  | 200L2: Insulation | resource dependent | 3d | 2027-08-13 | 2027-08-17 | A42378 | 6d | 0d |
| A43558 |  | 200L2: Insulation Inspection | resource dependent | 1d | 2027-08-18 | 2027-08-18 | A43548 | 6d | 0d |
| A43568 |  | 200L2: Install Resilient Channel | resource dependent | 2d | 2027-08-18 | 2027-08-19 | A43558 FS-1d | 6d | 0d |
| A43578 |  | 200L2: Pre-Hang QC Inspections | resource dependent | 5d | 2027-08-20 | 2027-08-26 | A43568 | 6d | 0d |
| A43588 |  | 200L2: Stock Drywall | resource dependent | 2d | 2027-08-27 | 2027-08-30 | A43578 | 6d | 0d |
| A43598 |  | 200L2: Hang Drywall | resource dependent | 4d | 2027-08-31 | 2027-09-03 | A43218, A43588 | 6d | 0d |
| A43608 |  | 200L2: Post Hang QC Inspecitons | resource dependent | 5d | 2027-09-07 | 2027-09-13 | A43598 | 6d |  |
| A43618 |  | 200L2: Finish Drywall | resource dependent | 7d | 2027-09-22 | 2027-09-30 | A43238, A43608 | 0d |  |
| A43628 |  | 200L2: Prime Paint | resource dependent | 3d | 2027-10-08 | 2027-10-12 | A43618, A43248 | 3d | 0d |
| A43638 |  | 200L2: Gypcrete Prep | resource dependent | 2d | 2027-10-13 | 2027-10-14 | A43628 | 5d | 0d |
| A43648 |  | 200L2: Install Gypcrete | resource dependent | 2d | 2027-10-15 | 2027-10-18 | A43638 | 5d | 0d |
| A43658 |  | 200L2: Install AHU/WH | resource dependent | 2d | 2027-10-19 | 2027-10-20 | A43648, A43278 | 5d | 0d |
| A43668 |  | 200L2: Shower Surrounds | resource dependent | 3d | 2027-10-19 | 2027-10-21 | A43648, A43288 | 21d | 0d |
| A43678 |  | 200L2: Vanities and Kitchen Casework | resource dependent | 6d | 2027-11-09 | 2027-11-16 | A43298, A43648 FS+4d | 4d | 0d |
| A43718 |  | 200L2: Install Shower Doors | resource dependent | 5d | 2027-11-15 | 2027-11-19 | A43668 FS+10d, A43338 | 15d | 0d |
| A43688 |  | 200L2: Install Countertops | resource dependent | 4d | 2027-11-17 | 2027-11-22 | A43308, A43678 | 9d | 0d |
| A43698 |  | 200L2: Kitchen Backsplash | resource dependent | 3d | 2027-11-23 | 2027-11-29 | A43688 | 11d | 2d |
| A43708 |  | 200L2: Install Interior Doors & Trim | resource dependent | 5d | 2027-11-23 | 2027-12-01 | A43328, A43688 | 9d | 0d |
| A43728 |  | 200L2: Drywall Touch-Up | resource dependent | 3d | 2027-12-02 | 2027-12-06 | A43658, A43698, A43708, A43718 | 9d | 0d |
| A43738 |  | 200L2: First Finish Paint (Ceilings, Trim, Doors & Walls) | resource dependent | 5d | 2027-12-07 | 2027-12-13 | A43358, A43728 | 9d | 0d |
| A43748 |  | 200L2: MEPS Ceiling Trim Out | resource dependent | 3d | 2027-12-14 | 2027-12-16 | A43738, A43368 | 9d | 0d |
| A43758 |  | 200L2: Install Flooring | resource dependent | 5d | 2027-12-17 | 2027-12-23 | A43378, A43748 | 9d | 0d |
| A43768 |  | 200L2: Minor Appliance Delivery | resource dependent | 2d | 2027-12-28 | 2027-12-29 | A43758 | 23d | 0d |
| A43778 |  | 200L2: MEP Trim-Out DW, Disposal & Sink Install | resource dependent | 3d | 2027-12-30 | 2028-01-04 | A43768 | 23d | 0d |
| A43788 |  | 200L2: Install Door Hardware | resource dependent | 3d | 2028-01-05 | 2028-01-07 | A43778 | 23d | 0d |
| A43798 |  | 200L2: Unit Accessories | resource dependent | 2d | 2028-01-10 | 2028-01-11 | A43788, A43418 | 23d | 0d |
| A43808 |  | 200L2: Major Appliance Delivery - Install Refrigerator, Microwave, W/D | resource dependent | 2d | 2028-01-10 | 2028-01-11 | A43428, A43788 | 23d | 0d |
| A43818 |  | 200L2: Rough Clean | resource dependent | 4d | 2028-01-12 | 2028-01-17 | A43798, A43808, A43438 | 23d | 0d |

| ID | WBS | Activity | Type | Duration | Start | Finish | Predecessors | Total float | Free float |
| --- | --- | --- | --- | --- | --- | --- | --- | --- | --- |
|  | 199 | **Level 2 Common Areas** |  |  | 2027-08-31 | 2028-01-26 |  |  |  |
| A43828 |  | 200L2: Stock Drywall | resource dependent | 1d | 2027-08-31 | 2027-08-31 | A43588 | 145d | 3d |
| A43838 |  | 200L2: Hang/Finish Drywall | resource dependent | 4d | 2027-09-07 | 2027-09-10 | A43598, A43828 | 142d | 22d |
| A43848 |  | 200L2: Prime Paint | resource dependent | 1d | 2027-10-13 | 2027-10-13 | A43628, A43838 | 120d | 33d |
| A43858 |  | 200L2: Install Wood Base | resource dependent | 1d | 2027-12-02 | 2027-12-02 | A43708, A43848 | 87d | 7d |
| A43868 |  | 200L2: First Finish Paint | resource dependent | 2d | 2027-12-14 | 2027-12-15 | A43738, A43858 | 80d | 1d |
| A43878 |  | 200L2: MEP Device Trim-Out | resource dependent | 1d | 2027-12-17 | 2027-12-17 | A43748, A43868 | 79d | 4d |
| A43888 |  | 200L2: Install Flooring | resource dependent | 1d | 2027-12-28 | 2027-12-28 | A43758, A43878 | 75d | 13d |
| A43898 |  | 200L2: Rough Clean | resource dependent | 1d | 2028-01-18 | 2028-01-18 | A43818, A43888 | 62d | 0d |
| A43908 |  | 200L2: JCC Punchlist | resource dependent | 5d | 2028-01-19 | 2028-01-25 | A43898 | 62d | 0d |
| A43918 |  | 200L2: Final Clean | resource dependent | 1d | 2028-01-26 | 2028-01-26 | A43908 | 62d |  |
|  | 200 | **Level 1** |  |  | 2027-08-20 | 2028-02-03 |  |  |  |
|  | 201 | **Level 1 Residential Units** |  |  | 2027-08-20 | 2028-01-25 |  |  |  |
| A43928 |  | 200L1: Insulation | resource dependent | 3d | 2027-08-20 | 2027-08-24 | A42398 | 8d | 0d |
| A43938 |  | 200L1: Insulation Inspection | resource dependent | 1d | 2027-08-25 | 2027-08-25 | A43928 | 8d | 0d |
| A43948 |  | 200L1: Install Resilient Channel | resource dependent | 2d | 2027-08-25 | 2027-08-26 | A43938 FS-1d | 8d | 0d |
| A43958 |  | 200L1: Pre-Hang QC Inspections | resource dependent | 5d | 2027-08-27 | 2027-09-02 | A43948 | 8d | 0d |
| A43968 |  | 200L1: Stock Drywall | resource dependent | 2d | 2027-09-03 | 2027-09-07 | A43958 | 8d | 0d |
| A43978 |  | 200L1: Hang Drywall | resource dependent | 4d | 2027-09-08 | 2027-09-13 | A43598, A43968 | 8d | 0d |
| A43988 |  | 200L1: Post Hang QC Inspecitons | resource dependent | 5d | 2027-09-14 | 2027-09-20 | A43978 | 8d |  |
| A43998 |  | 200L1: Finish Drywall | resource dependent | 7d | 2027-10-01 | 2027-10-11 | A43618, A43988 | 0d |  |
| A44008 |  | 200L1: Prime Paint | resource dependent | 3d | 2027-10-13 | 2027-10-15 | A43998, A43628 | 3d | 0d |
| A44018 |  | 200L1: Install AHU/WH | resource dependent | 2d | 2027-10-21 | 2027-10-22 | A44008, A43658 | 5d |  |
| A44028 |  | 200L1: Shower Surrounds | resource dependent | 3d | 2027-10-22 | 2027-10-26 | A44008, A43668 | 23d | 3d |
| A44038 |  | 200L1: Vanities and Kitchen Casework | resource dependent | 6d | 2027-11-17 | 2027-11-24 | A43678 | 4d | 0d |
| A44078 |  | 200L1: Install Shower Doors | resource dependent | 5d | 2027-11-22 | 2027-11-30 | A44028 FS+10d, A43718 | 15d | 0d |
| A44048 |  | 200L1: Install Countertops | resource dependent | 4d | 2027-11-29 | 2027-12-02 | A43688, A44038 | 8d | 0d |
| A44058 |  | 200L1: Kitchen Backsplash | resource dependent | 3d | 2027-12-03 | 2027-12-07 | A44048 | 10d | 2d |
| A44068 |  | 200L1: Install Interior Doors & Trim | resource dependent | 5d | 2027-12-03 | 2027-12-09 | A43708, A44048 | 8d | 0d |
| A44088 |  | 200L1: Drywall Touch-Up | resource dependent | 3d | 2027-12-10 | 2027-12-14 | A44018, A44058, A44068, A44078 | 8d | 0d |
| A44098 |  | 200L1: First Finish Paint (Ceilings, Trim, Doors & Walls) | resource dependent | 5d | 2027-12-15 | 2027-12-21 | A43738, A44088 | 8d | 0d |
| A44108 |  | 200L1: MEPS Ceiling Trim Out | resource dependent | 3d | 2027-12-22 | 2027-12-28 | A44098, A43748 | 8d | 0d |
| A44118 |  | 200L1: Install Flooring | resource dependent | 5d | 2027-12-29 | 2028-01-05 | A43758, A44108 | 8d | 0d |
| A44128 |  | 200L1: Minor Appliance Delivery | resource dependent | 2d | 2028-01-06 | 2028-01-07 | A44118 | 21d | 0d |
| A44138 |  | 200L1: MEP Trim-Out DW, Disposal & Sink Install | resource dependent | 3d | 2028-01-10 | 2028-01-12 | A44128 | 21d | 0d |
| A44148 |  | 200L1: Install Door Hardware | resource dependent | 3d | 2028-01-13 | 2028-01-17 | A44138 | 21d | 0d |
| A44158 |  | 200L1: Unit Accessories | resource dependent | 2d | 2028-01-18 | 2028-01-19 | A44148, A43798 | 21d | 0d |
| A44168 |  | 200L1: Major Appliance Delivery - Install Refrigerator, Microwave, W/D | resource dependent | 2d | 2028-01-18 | 2028-01-19 | A43808, A44148 | 21d | 0d |
| A44178 |  | 200L1: Rough Clean | resource dependent | 4d | 2028-01-20 | 2028-01-25 | A44158, A44168, A43818 | 21d | 0d |

| ID | WBS | Activity | Type | Duration | Start | Finish | Predecessors | Total float | Free float |
| --- | --- | --- | --- | --- | --- | --- | --- | --- | --- |
|  | 202 | **Level 1 Common Areas** |  |  | 2027-09-08 | 2028-02-03 |  |  |  |
| A44188 |  | 200L1: Stock Drywall | resource dependent | 1d | 2027-09-08 | 2027-09-08 | A43968 | 140d | 3d |
| A44198 |  | 200L1: Hang/Finish Drywall | resource dependent | 4d | 2027-09-14 | 2027-09-17 | A43978, A44188 | 137d | 20d |
| A44208 |  | 200L1: Prime Paint | resource dependent | 1d | 2027-10-18 | 2027-10-18 | A44008, A44198 | 117d | 36d |
| A44218 |  | 200L1: Install Wood Base | resource dependent | 1d | 2027-12-10 | 2027-12-10 | A44068, A44208 | 81d | 7d |
| A44228 |  | 200L1: First Finish Paint | resource dependent | 2d | 2027-12-22 | 2027-12-23 | A44098, A44218 | 74d | 1d |
| A44238 |  | 200L1: MEP Device Trim-Out | resource dependent | 1d | 2027-12-29 | 2027-12-29 | A44108, A44228 | 73d | 4d |
| A44248 |  | 200L1: Install Flooring | resource dependent | 1d | 2028-01-06 | 2028-01-06 | A44118, A44238 | 69d | 13d |
| A44258 |  | 200L1: Rough Clean | resource dependent | 1d | 2028-01-26 | 2028-01-26 | A44178, A44248 | 56d | 0d |
| A44268 |  | 200L1: JCC Punchlist | resource dependent | 5d | 2028-01-27 | 2028-02-02 | A44258 | 56d | 0d |
| A44278 |  | 200L1: Final Clean | resource dependent | 1d | 2028-02-03 | 2028-02-03 | A44268 | 56d |  |
|  | 203 | **Final Inspections** |  |  | 2027-12-14 | 2028-01-24 |  |  |  |
| A44288 |  | 200L5: Final Inspections | resource dependent | 3d | 2027-12-14 | 2027-12-16 | A42718 | 52d |  |
| A44298 |  | 200L4: Final Inspections | resource dependent | 3d | 2027-12-22 | 2027-12-28 | A43048 | 46d |  |
| A44308 |  | 200L3: Final Inspections | resource dependent | 3d | 2028-01-04 | 2028-01-06 | A43428 | 40d |  |
| A44318 |  | 200L2: Final Inspections | resource dependent | 3d | 2028-01-12 | 2028-01-14 | A43808 | 34d |  |
| A44328 |  | 200L1: Final Inspections | resource dependent | 3d | 2028-01-20 | 2028-01-24 | A44168 | 28d |  |
|  | 204 | **JCC/Owner Punch** |  |  | 2027-12-20 | 2028-02-22 |  |  |  |
|  | 205 | **JCC Punch** |  |  | 2027-12-20 | 2028-02-08 |  |  |  |
| A44338 |  | Level 5 JCC Punch | resource dependent | 10d | 2027-12-20 | 2028-01-05 | A42778, A40738 FS-9d | 24d | 0d |
| A44348 |  | Level 4 JCC Punch | resource dependent | 10d | 2027-12-30 | 2028-01-13 | A43058, A44338 FS-4d | 24d | 0d |
| A44358 |  | Level 3 JCC Punch | resource dependent | 10d | 2028-01-10 | 2028-01-21 | A43438, A44348 FS-4d | 24d | 0d |
| A44368 |  | Level 2 JCC Punch | resource dependent | 10d | 2028-01-18 | 2028-01-31 | A43818, A44358 FS-4d | 24d | 0d |
| A44378 |  | Level 1 JCC Punch | resource dependent | 10d | 2028-01-26 | 2028-02-08 | A44178, A44368 FS-4d | 24d | 0d |

| ID | WBS | Activity | Type | Duration | Start | Finish | Predecessors | Total float | Free float |
| --- | --- | --- | --- | --- | --- | --- | --- | --- | --- |
|  | 206 | **Owner Punch** |  |  | 2028-01-06 | 2028-02-22 |  |  |  |
| A44388 |  | Level 5 Owner Punch | resource dependent | 10d | 2028-01-06 | 2028-01-19 | A44338 | 67d |  |
| A44398 |  | Level 4 Owner Punch | resource dependent | 10d | 2028-01-14 | 2028-01-27 | A44348 | 61d |  |
| A44408 |  | Level 3 Owner Punch | resource dependent | 10d | 2028-01-24 | 2028-02-04 | A44358 | 55d |  |
| A44418 |  | Level 2 Owner Punch | resource dependent | 10d | 2028-02-01 | 2028-02-14 | A44368 | 49d |  |
| A44428 |  | Level 1 Owner Punch | resource dependent | 10d | 2028-02-09 | 2028-02-22 | A44378 | 43d |  |
|  | WBS141 | **Building 300** |  |  | 2026-04-27 | 2028-03-27 |  |  |  |
|  | 130 | **Structure** |  |  | 2026-04-27 | 2027-07-20 |  |  |  |
|  | 131 | **Concrete** |  |  | 2026-04-27 | 2026-05-28 |  |  |  |
|  | WBS211 | **SOG 1** |  |  | 2026-04-27 | 2026-05-28 |  |  |  |
| A68328 |  | SOG1: Edge Forms | resource dependent | 4d | 2026-04-27 | 2026-04-30 | A19434 | 0d |  |
| A68338 |  | SOG1: Underground MEPs | resource dependent | 6d | 2026-04-30 | 2026-05-07 | A68328 FS-1d | 0d |  |
| A68348 |  | SOG1: Excavate Thickened Slabs |  | 4d | 2026-05-08 | 2026-05-13 | A68338 | 5d | 0d |
| A68358 |  | SOG1: Backfill Stone Subgrade | resource dependent | 2d | 2026-05-14 | 2026-05-15 | A68348 | 10d | 0d |
| A68368 |  | SOG1: Install Vapor Barrier |  | 2d | 2026-05-18 | 2026-05-19 | A68358 | 19d | 0d |
| A68378 |  | SOG1: Rebar / Inspect | resource dependent | 2d | 2026-05-20 | 2026-05-21 | A68368 | 19d | 0d |
| A68388 |  | SOG1: Pour SOG | resource dependent | 1d | 2026-05-22 | 2026-05-22 | A68378 | 19d | 0d |
| A68398 |  | SOG1: Strip forms | resource dependent | 3d | 2026-05-26 | 2026-05-28 | A68388 | 479d |  |
|  | 134 | **CMU Shafts** |  |  | 2026-05-26 | 2026-06-15 |  |  |  |
| A30148 |  | 300: Stair D | resource dependent | 15d | 2026-05-26 | 2026-06-15 | A68388 | 19d | 0d |
|  | WBS231 | **Structural Steel** |  |  | 2026-06-16 | 2027-05-27 |  |  |  |
| A68728 |  | Stair Pans & Risers |  | 8d | 2026-06-16 | 2026-06-26 | A30148 | 459d |  |
|  | WBS241 | **Bridge 200A to Railroad Ave.** |  |  | 2027-05-05 | 2027-05-27 |  |  |  |
| A68738 |  | Bridge HSS Column_L2-L3 |  | 1d | 2027-05-05 | 2027-05-05 | A30208 SS | 241d | 11d |
| A68748 |  | Bridge HSS Column_L4-L5 |  | 1d | 2027-05-21 | 2027-05-21 | A68738, A30288 SS | 230d | 3d |
| A68758 |  | Bridge HSS Column_Roof |  | 1d | 2027-05-27 | 2027-05-27 | A68748, A30298 | 227d |  |

| ID | WBS | Activity | Type | Duration | Start | Finish | Predecessors | Total float | Free float | Constraint |
| --- | --- | --- | --- | --- | --- | --- | --- | --- | --- | --- |
|  | 135 | **Wood Framing** |  |  | 2027-05-05 | 2027-06-23 |  |  |  |  |
|  | 137 | **Level 2 (8,000 SF)** |  |  | 2027-05-05 | 2027-05-12 |  |  |  |  |
| A30208 |  | 300L2: Layout | resource dependent | 1d | 2027-05-05 | 2027-05-05 | A30148 FS+223d | 19d | 0d | as late as possible |
| A30218 |  | 300L2: Wall Framing | resource dependent | 3d | 2027-05-06 | 2027-05-10 | A30208, A41268, A69548 | 19d | 0d |  |
| A30228 |  | 300L2: Floor Trusses | resource dependent | 2d | 2027-05-10 | 2027-05-11 | A30218 FS-1d | 19d | 0d |  |
| A30238 |  | 300L2: Decking | resource dependent | 2d | 2027-05-11 | 2027-05-12 | A30228 FS-1d | 19d | 0d |  |
|  | 138 | **Level 3 (8,000 SF)** |  |  | 2027-05-13 | 2027-05-20 |  |  |  |  |
| A30248 |  | 300L3: Layout | resource dependent | 1d | 2027-05-13 | 2027-05-13 | A30238 | 19d | 0d |  |
| A30258 |  | 300L3: Wall Framing | resource dependent | 3d | 2027-05-14 | 2027-05-18 | A30248 | 19d | 0d |  |
| A30268 |  | 300L3: Floor Trusses | resource dependent | 2d | 2027-05-18 | 2027-05-19 | A30258 FS-1d | 19d | 0d |  |
| A30278 |  | 300L3: Decking | resource dependent | 2d | 2027-05-19 | 2027-05-20 | A30268 FS-1d | 19d | 0d |  |
|  | 139 | **Level 4 (8,000 SF)** |  |  | 2027-05-21 | 2027-05-28 |  |  |  |  |
| A30288 |  | 300L4: Layout | resource dependent | 1d | 2027-05-21 | 2027-05-21 | A30278 | 19d | 0d |  |
| A30298 |  | 300L4: Wall Framing | resource dependent | 3d | 2027-05-24 | 2027-05-26 | A30288 | 19d | 0d |  |
| A30308 |  | 300L4: Floor Trusses | resource dependent | 2d | 2027-05-26 | 2027-05-27 | A30298 FS-1d | 19d | 0d |  |
| A30318 |  | 300L4: Decking | resource dependent | 2d | 2027-05-27 | 2027-05-28 | A30308 FS-1d | 19d | 0d |  |
|  | 140 | **Level 5 (8,000 SF)** |  |  | 2027-06-01 | 2027-06-23 |  |  |  |  |
| A30328 |  | 300L5: Layout | resource dependent | 1d | 2027-06-01 | 2027-06-01 | A30318 | 19d | 0d |  |
| A30338 |  | 300L5: Wall Framing | resource dependent | 3d | 2027-06-02 | 2027-06-04 | A30328 | 19d | 0d |  |
| A30348 |  | 300L5: Roof Trusses | resource dependent | 4d | 2027-06-04 | 2027-06-09 | A30338 FS-1d | 19d | 0d |  |
| A30358 |  | 300L5: Roof Decking | resource dependent | 3d | 2027-06-08 | 2027-06-10 | A30348 FS-2d | 19d | 0d |  |
| A30368 |  | 300L5: Build Out Parapets | resource dependent | 3d | 2027-06-10 | 2027-06-14 | A30358 FS-1d | 19d | 0d |  |
| A30388 |  | 300L5: MEP Roof Penetrations/Davits | resource dependent | 2d | 2027-06-11 | 2027-06-14 | A30358 | 216d |  |  |
| A33768 |  | 300L5: Roof Deck QC Inspection |  | 5d | 2027-06-15 | 2027-06-22 | A30368 | 19d | 0d |  |
| A30378 |  | 300L5: Roof Decking City Inspection | resource dependent | 1d | 2027-06-23 | 2027-06-23 | A30368, A33768 | 19d | 0d |  |

| ID | WBS | Activity | Type | Duration | Start | Finish | Predecessors | Total float | Free float |
| --- | --- | --- | --- | --- | --- | --- | --- | --- | --- |
|  | 141 | **Exterior Sheathing** |  |  | 2027-05-27 | 2027-06-22 |  |  |  |
| A30418 |  | 300L2: Sheathing | resource dependent | 3d | 2027-05-27 | 2027-06-01 | A30298 | 215d | 0d |
| A30428 |  | 300L2: Sheathing Inspection | resource dependent | 2d | 2027-06-02 | 2027-06-03 | A30418 | 215d | 0d |
| A30438 |  | 300L3: Sheathing | resource dependent | 3d | 2027-06-07 | 2027-06-09 | A30338 | 167d | 0d |
| A30448 |  | 300L3: Sheathing Inspection | resource dependent | 2d | 2027-06-10 | 2027-06-11 | A30438 | 209d | 0d |
| A30458 |  | 300L4: Sheathing | resource dependent | 3d | 2027-06-10 | 2027-06-14 | A30438 | 167d | 0d |
| A30468 |  | 300L4: Sheathing Inspection | resource dependent | 2d | 2027-06-15 | 2027-06-16 | A30458 | 206d | 0d |
| A30478 |  | 300L5: Sheathing | resource dependent | 3d | 2027-06-15 | 2027-06-17 | A30458 | 167d | 0d |
| A30488 |  | 300L5: Sheathing Inspection | resource dependent | 2d | 2027-06-21 | 2027-06-22 | A30478 | 167d | 0d |
|  | 142 | **Bracing Removal** |  |  | 2027-06-04 | 2027-06-23 |  |  |  |
| A30508 |  | 300L2: Remove Bracing | resource dependent | 1d | 2027-06-04 | 2027-06-04 | A30428 | 215d | 0d |
| A30518 |  | 300L3: Remove Bracing | resource dependent | 1d | 2027-06-14 | 2027-06-14 | A30448 | 209d | 0d |
| A30528 |  | 300L4: Remove Bracing | resource dependent | 1d | 2027-06-17 | 2027-06-17 | A30468 | 206d | 0d |
| A30538 |  | 300L5: Remove Bracing | resource dependent | 1d | 2027-06-23 | 2027-06-23 | A30488 | 192d | 0d |
|  | 143 | **Framing Trade Partner QC** |  |  | 2027-06-07 | 2027-06-28 |  |  |  |
| A30558 |  | 300L2: Framing QC | resource dependent | 3d | 2027-06-07 | 2027-06-09 | A30508 | 215d | 0d |
| A30568 |  | 300L3: Framing QC | resource dependent | 3d | 2027-06-15 | 2027-06-17 | A30518 | 209d | 0d |
| A30578 |  | 300L4: Framing QC | resource dependent | 3d | 2027-06-21 | 2027-06-23 | A30528 | 206d | 0d |
| A30588 |  | 300L5: Framing QC | resource dependent | 3d | 2027-06-24 | 2027-06-28 | A30538 | 192d | 0d |
|  | 144 | **Framing JCC Structural Punch** |  |  | 2027-06-10 | 2027-07-02 |  |  |  |
| A30608 |  | 300L2: JCC Structural Punch | resource dependent | 4d | 2027-06-10 | 2027-06-15 | A30558 | 215d |  |
| A30618 |  | 300L3: JCC Structural Punch | resource dependent | 4d | 2027-06-21 | 2027-06-24 | A30568 | 209d |  |
| A30628 |  | 300L4: JCC Structural Punch | resource dependent | 4d | 2027-06-24 | 2027-06-29 | A30578 | 206d |  |
| A30638 |  | 300L5: JCC Structural Punch | resource dependent | 4d | 2027-06-29 | 2027-07-02 | A30588 | 192d | 0d |

| ID | WBS | Activity | Type | Duration | Start | Finish | Predecessors | Total float | Free float |
| --- | --- | --- | --- | --- | --- | --- | --- | --- | --- |
|  | 145 | **Structural Engineer Punch** |  |  | 2027-07-06 | 2027-07-20 |  |  |  |
| A30648 |  | 300: EOR Create/Issue Structural Punch | resource dependent | 5d | 2027-07-06 | 2027-07-12 | A30638 | 192d | 0d |
| A30658 |  | 300: Trade Partner Complete Punch | resource dependent | 5d | 2027-07-13 | 2027-07-19 | A30648 | 192d | 0d |
| A30668 |  | 300: EOR Accept Punch | resource dependent | 1d | 2027-07-20 | 2027-07-20 | A30658 | 192d |  |
|  | 146 | **Building Dry-In** |  |  | 2027-06-23 | 2027-08-24 |  |  |  |
|  | 147 | **Roofing (8,000 SF)** |  |  | 2027-06-24 | 2027-07-07 |  |  |  |
| A30158 |  | 300: Roof Dry-In | resource dependent | 4d | 2027-06-24 | 2027-06-29 | A30378 | 19d | 0d |
| A30748 |  | 300: Roof Detail Work | resource dependent | 3d | 2027-06-30 | 2027-07-02 | A30158 | 19d | 0d |
| A33778 |  | 300: TPO Roof QC Inspection |  | 3d | 2027-07-02 | 2027-07-07 | A30748 FS-1d | 19d | 0d |
|  | 148 | **Exterior Skin** |  |  | 2027-06-23 | 2027-08-24 |  |  |  |
|  | 149 | **Tyvek & Windows** |  |  | 2027-06-23 | 2027-07-13 |  |  |  |
|  | 150 | **Tyvek** |  |  | 2027-06-23 | 2027-07-06 |  |  |  |
| A33518 |  | TVK: Elevation E (9,000 SF) | resource dependent | 7d | 2027-06-23 | 2027-07-01 | A30488 | 167d | 0d |
| A33528 |  | TVK: Elevation F (2,000 SF) | resource dependent | 2d | 2027-07-02 | 2027-07-06 | A33518 | 202d |  |
|  | 151 | **Windows/Doors** |  |  | 2027-07-02 | 2027-07-13 |  |  |  |
| A33558 |  | WN/DR: Elevation E (105) | resource dependent | 7d | 2027-07-02 | 2027-07-13 | A33518 | 167d | 0d |
|  | 152 | **Skin** |  |  | 2027-07-14 | 2027-08-24 |  |  |  |
|  | 153 | **Elevation E** |  |  | 2027-07-14 | 2027-08-24 |  |  |  |
| A33588 |  | ELE: Brick (4,620 SF) | resource dependent | 9d | 2027-07-14 | 2027-07-26 | A33558 | 167d | 0d |
| A33598 |  | ELE: Siding (4,500 SF) | resource dependent | 14d | 2027-07-27 | 2027-08-13 | A33588 | 167d | 0d |
| A33608 |  | ELE: Paint | resource dependent | 7d | 2027-08-16 | 2027-08-24 | A33598 | 167d |  |
|  | 154 | **Elevation F** |  |  | 2027-07-27 | 2027-08-03 |  |  |  |
| A33618 |  | ELF: Brick (2,000SF) | resource dependent | 6d | 2027-07-27 | 2027-08-03 | A33588 | 182d |  |
|  | 157 | **Building Interiors** |  |  | 2027-05-21 | 2028-03-27 |  |  |  |
|  | 158 | **MEPF Non-Weather Sensitive Rough-In** |  |  | 2027-05-21 | 2027-07-02 |  |  |  |
|  | 160 | **Level 2 MEPF NWSR** |  |  | 2027-05-21 | 2027-06-08 |  |  |  |
| A30798 |  | 300L1NWSR: Plastic Rough & Valves | resource dependent | 3d | 2027-05-21 | 2027-05-25 | A30278 | 211d | 0d |
| A30808 |  | 300L1NWSR: Electrical Conduit, Boxes & Unit Feeders | resource dependent | 3d | 2027-05-26 | 2027-05-28 | A30798 | 211d | 0d |
| A30818 |  | 300L1NWSR: Sprinkler Mains | resource dependent | 3d | 2027-06-01 | 2027-06-03 | A30808 | 211d | 0d |
| A30828 |  | 300L1NWSR: Mechanical Hard Pipe & Boots | resource dependent | 3d | 2027-06-04 | 2027-06-08 | A30818 | 211d | 3d |

| ID | WBS | Activity | Type | Duration | Start | Finish | Predecessors | Total float | Free float |
| --- | --- | --- | --- | --- | --- | --- | --- | --- | --- |
|  | 161 | **Level 3 MEPF NWSR** |  |  | 2027-06-01 | 2027-06-16 |  |  |  |
| A30838 |  | 300L1NWSR: Plastic Rough & Valves | resource dependent | 3d | 2027-06-01 | 2027-06-03 | A30318, A30798 | 208d | 0d |
| A30848 |  | 300L1NWSR: Electrical Conduit, Boxes & Unit Feeders | resource dependent | 3d | 2027-06-04 | 2027-06-08 | A30808, A30838 | 208d | 0d |
| A30858 |  | 300L1NWSR: Sprinkler Mains | resource dependent | 3d | 2027-06-09 | 2027-06-11 | A30818, A30848 | 208d | 0d |
| A30868 |  | 300L1NWSR: Mechanical Hard Pipe & Boots | resource dependent | 3d | 2027-06-14 | 2027-06-16 | A30828, A30858 | 208d | 5d |
|  | 162 | **Level 4 MEPF NWSR** |  |  | 2027-06-11 | 2027-06-29 |  |  |  |
| A30878 |  | 300L1NWSR: Plastic Rough & Valves | resource dependent | 3d | 2027-06-11 | 2027-06-15 | A30358, A30838 | 203d | 0d |
| A30888 |  | 300L1NWSR: Electrical Conduit, Boxes & Unit Feeders | resource dependent | 3d | 2027-06-16 | 2027-06-21 | A30848, A30878 | 203d | 0d |
| A30898 |  | 300L1NWSR: Sprinkler Mains | resource dependent | 3d | 2027-06-22 | 2027-06-24 | A30858, A30888 | 203d | 0d |
| A30908 |  | 300L1NWSR: Mechanical Hard Pipe & Boots | resource dependent | 3d | 2027-06-25 | 2027-06-29 | A30868, A30898 | 203d | 0d |
|  | 163 | **Level 5 MEPF NWSR** |  |  | 2027-06-16 | 2027-07-02 |  |  |  |
| A30918 |  | 300L1NWSR: Plastic Rough & Valves | resource dependent | 3d | 2027-06-16 | 2027-06-21 | A30878 | 203d | 0d |
| A30928 |  | 300L1NWSR: Electrical Conduit, Boxes & Unit Feeders | resource dependent | 3d | 2027-06-22 | 2027-06-24 | A30888, A30918 | 203d | 0d |
| A30938 |  | 300L1NWSR: Sprinkler Mains | resource dependent | 3d | 2027-06-25 | 2027-06-29 | A30898, A30928 | 203d | 0d |
| A30948 |  | 300L1NWSR: Mechanical Hard Pipe & Boots | resource dependent | 3d | 2027-06-30 | 2027-07-02 | A30908, A30938 | 203d |  |
|  | 164 | **Weather Sensitive Rough-In (Top Down)** |  |  | 2027-07-08 | 2027-08-27 |  |  |  |
| A30958 |  | 300: Install Insulation For Pre-Rock | resource dependent | 2d | 2027-07-08 | 2027-07-09 | A30158, A33778 | 19d | 0d |
| A30968 |  | 300: Prehang Shafts, Tubs and Mechanical Rooms | resource dependent | 3d | 2027-07-12 | 2027-07-14 | A30958 | 19d | 0d |
| A30978 |  | 300: Pre-Pour Gypcrete | resource dependent | 2d | 2027-07-15 | 2027-07-16 | A30968 | 19d | 0d |
|  | 165 | **Install Tubs/Shower Pans** |  |  | 2027-07-19 | 2027-07-22 |  |  |  |
| A30998 |  | 300L2: Tubs/Shower Pans | resource dependent | 1d | 2027-07-19 | 2027-07-19 | A30978 | 190d | 0d |
| A31008 |  | 300L3: Tubs/Shower Pans | resource dependent | 1d | 2027-07-20 | 2027-07-20 | A30998 | 190d | 0d |
| A31018 |  | 300L4: Tubs/Shower Pans | resource dependent | 1d | 2027-07-21 | 2027-07-21 | A31008 | 190d | 0d |
| A31028 |  | 300L5: Tubs/Shower Pans | resource dependent | 1d | 2027-07-22 | 2027-07-22 | A31018 | 190d |  |

| ID | WBS | Activity | Type | Duration | Start | Finish | Predecessors | Total float | Free float |
| --- | --- | --- | --- | --- | --- | --- | --- | --- | --- |
|  | 166 | **Level 5 (11 Units)** |  |  | 2027-07-19 | 2027-07-30 |  |  |  |
|  | 167 | **L5 MEP WSR Units** |  |  | 2027-07-19 | 2027-07-26 |  |  |  |
| A31038 |  | 300L5WSR: Mechanical Duct & Damper Install | resource dependent | 3d | 2027-07-19 | 2027-07-21 | A42198, A30978 | 19d | 0d |
| A31048 |  | 300L5WSR: Pull Branch Circuits/Fire Caulk | resource dependent | 3d | 2027-07-22 | 2027-07-26 | A31038, A42208 | 19d | 0d |
|  | 168 | **L5 MEP WSR Corridor** |  |  | 2027-07-22 | 2027-07-30 |  |  |  |
| A31058 |  | 300L5WSR: Corridor Mechanical Duct | resource dependent | 3d | 2027-07-22 | 2027-07-26 | A31038 | 19d | 0d |
| A31068 |  | 300L5WSR: Corridor Circuitry | resource dependent | 2d | 2027-07-27 | 2027-07-28 | A31048, A31058 | 19d | 0d |
| A31078 |  | 300L5WSR: Corridor LV/ERRC/FA | resource dependent | 2d | 2027-07-27 | 2027-07-28 | A31048, A31068 FS-2d | 19d | 0d |
| A31088 |  | 300L5WSR: Service Provider Rough | resource dependent | 2d | 2027-07-29 | 2027-07-30 | A31078 | 19d | 0d |
|  | 169 | **Level 4 (11 Units)** |  |  | 2027-07-22 | 2027-08-04 |  |  |  |
|  | 170 | **L4 MEP WSR Units** |  |  | 2027-07-22 | 2027-07-29 |  |  |  |
| A31098 |  | 300L4WSR: Mechanical Duct & Damper Install | resource dependent | 3d | 2027-07-22 | 2027-07-26 | A31038 | 38d | 0d |
| A31108 |  | 300L4WSR: Pull Branch Circuits/Fire Caulk | resource dependent | 3d | 2027-07-27 | 2027-07-29 | A31098, A31048 | 38d | 0d |
|  | 171 | **L4 MEP WSR Corridor** |  |  | 2027-07-27 | 2027-08-04 |  |  |  |
| A31118 |  | 300L4WSR: Corridor Mechanical Duct | resource dependent | 3d | 2027-07-27 | 2027-07-29 | A31098 | 38d | 0d |
| A31128 |  | 300L4WSR: Corridor Circuitry | resource dependent | 2d | 2027-07-30 | 2027-08-02 | A31108, A31118 | 38d | 0d |
| A31138 |  | 300L4WSR: Corridor LV/ERRC/FA | resource dependent | 2d | 2027-07-30 | 2027-08-02 | A31108, A31128 FS-2d | 38d | 0d |
| A31148 |  | 300L4WSR: Service Provider Rough | resource dependent | 2d | 2027-08-03 | 2027-08-04 | A31138 | 38d | 2d |
|  | 172 | **Level 3 (11 Units)** |  |  | 2027-07-27 | 2027-08-09 |  |  |  |
|  | 173 | **L3 MEP WSR Units** |  |  | 2027-07-27 | 2027-08-03 |  |  |  |
| A31158 |  | 300L3WSR: Mechanical Duct & Damper Install | resource dependent | 3d | 2027-07-27 | 2027-07-29 | A31098 | 42d | 0d |
| A31168 |  | 300L3WSR: Pull Branch Circuits/Fire Caulk | resource dependent | 3d | 2027-07-30 | 2027-08-03 | A31108, A31158 | 42d | 0d |
|  | 174 | **L3 MEP WSR Corridor** |  |  | 2027-07-30 | 2027-08-09 |  |  |  |
| A31178 |  | 300L3WSR: Corridor Mechanical Duct | resource dependent | 3d | 2027-07-30 | 2027-08-03 | A31158 | 42d | 0d |
| A31188 |  | 300L3WSR: Corridor Circuitry | resource dependent | 2d | 2027-08-04 | 2027-08-05 | A31168, A31178 | 42d | 0d |
| A31198 |  | 300L3WSR: Corridor LV/ERRC/FA | resource dependent | 2d | 2027-08-04 | 2027-08-05 | A31168, A31188 FS-2d | 42d | 0d |
| A31208 |  | 300L3WSR: Service Provider Rough | resource dependent | 2d | 2027-08-06 | 2027-08-09 | A31198 | 42d | 4d |

| ID | WBS | Activity | Type | Duration | Start | Finish | Predecessors | Total float | Free float |
| --- | --- | --- | --- | --- | --- | --- | --- | --- | --- |
|  | 175 | **Level 2 (11 Units)** |  |  | 2027-07-30 | 2027-08-12 |  |  |  |
|  | 176 | **L2 MEP WSR Units** |  |  | 2027-07-30 | 2027-08-06 |  |  |  |
| A31218 |  | 300L2WSR: Mechanical Duct & Damper Install | resource dependent | 3d | 2027-07-30 | 2027-08-03 | A31158 | 46d | 0d |
| A31228 |  | 300L2WSR: Pull Branch Circuits/Fire Caulk | resource dependent | 3d | 2027-08-04 | 2027-08-06 | A31168, A31218 | 46d | 0d |
|  | 177 | **L2 MEP WSR Corridor** |  |  | 2027-08-04 | 2027-08-12 |  |  |  |
| A31238 |  | 300L2WSR: Corridor Mechanical Duct | resource dependent | 3d | 2027-08-04 | 2027-08-06 | A31218 | 46d | 0d |
| A31248 |  | 300L2WSR: Corridor Circuitry | resource dependent | 2d | 2027-08-09 | 2027-08-10 | A31228, A31238 | 46d | 0d |
| A31258 |  | 300L2WSR: Corridor LV/ERRC/FA | resource dependent | 2d | 2027-08-09 | 2027-08-10 | A31228, A31248 FS-2d | 46d | 0d |
| A31268 |  | 300L2WSR: Service Provider Rough | resource dependent | 2d | 2027-08-11 | 2027-08-12 | A31258 | 46d | 6d |
|  | WBS131 | **MEPF WSR Quality Control** |  |  | 2027-08-02 | 2027-08-27 |  |  |  |
| A33718 |  | MEPF WSR QC Level 5 |  | 5d | 2027-08-02 | 2027-08-06 | A31088 | 19d | 0d |
| A33728 |  | MEPF WSR QC Level 4 |  | 5d | 2027-08-09 | 2027-08-13 | A31148, A33718 | 36d | 0d |
| A33738 |  | MEPF WSR QC Level 3 |  | 5d | 2027-08-16 | 2027-08-20 | A31208, A33728 | 38d | 0d |
| A33748 |  | MEPF WSR QC Level 2 |  | 5d | 2027-08-23 | 2027-08-27 | A31268, A33738 | 40d | 0d |
|  | 181 | **Cover-up Inspections** |  |  | 2027-08-09 | 2027-09-03 |  |  |  |
|  | 182 | **Level 5** |  |  | 2027-08-09 | 2027-08-13 |  |  |  |
| A31378 |  | 300L5: MEPF Trade Inspection | resource dependent | 2d | 2027-08-09 | 2027-08-10 | A31088, A33718 | 19d | 0d |
| A31388 |  | 300L5: Fire Marshal Inspection | resource dependent | 2d | 2027-08-11 | 2027-08-12 | A31378 | 19d | 0d |
| A31398 |  | 300L5: Structural Inspection | resource dependent | 1d | 2027-08-13 | 2027-08-13 | A31388 | 19d | 0d |
|  | 183 | **Level 4** |  |  | 2027-08-16 | 2027-08-20 |  |  |  |
| A31368 |  | 300L4: MEPF Trade Inspection | resource dependent | 2d | 2027-08-16 | 2027-08-17 | A31148, A33728 | 36d | 0d |
| A31408 |  | 300L4: Fire Marshal Inspection | resource dependent | 2d | 2027-08-18 | 2027-08-19 | A31368 | 36d | 0d |
| A31418 |  | 300L4: Structural Inspection | resource dependent | 1d | 2027-08-20 | 2027-08-20 | A31408 | 36d | 0d |
|  | 184 | **Level 3** |  |  | 2027-08-23 | 2027-08-27 |  |  |  |
| A31358 |  | 300L3: MEPF Trade Inspection | resource dependent | 2d | 2027-08-23 | 2027-08-24 | A31208, A33738 | 38d | 0d |
| A31428 |  | 300L3: Fire Marshal Inspection | resource dependent | 2d | 2027-08-25 | 2027-08-26 | A31358 | 38d | 0d |
| A31438 |  | 300L3: Structural Inspection | resource dependent | 1d | 2027-08-27 | 2027-08-27 | A31428 | 38d | 0d |

| ID | WBS | Activity | Type | Duration | Start | Finish | Predecessors | Total float | Free float |
| --- | --- | --- | --- | --- | --- | --- | --- | --- | --- |
|  | 185 | **Level 2** |  |  | 2027-08-30 | 2027-09-03 |  |  |  |
| A31348 |  | 300L2: MEPF Trade Inspection | resource dependent | 2d | 2027-08-30 | 2027-08-31 | A31268, A33748 | 40d | 0d |
| A31448 |  | 300L2: Fire Marshal Inspection | resource dependent | 2d | 2027-09-01 | 2027-09-02 | A31348 | 40d | 0d |
| A31458 |  | 300L2: Structural Inspection | resource dependent | 1d | 2027-09-03 | 2027-09-03 | A31448 | 40d | 0d |
|  | 187 | **Interior Finishes** |  |  | 2027-08-16 | 2028-03-08 |  |  |  |
|  | 188 | **Level 5** |  |  | 2027-08-16 | 2028-02-11 |  |  |  |
|  | 189 | **Level 5 Residential Units** |  |  | 2027-08-16 | 2028-02-02 |  |  |  |
| A31488 |  | 300L5: Insulation | resource dependent | 3d | 2027-08-16 | 2027-08-18 | A31398 | 19d | 0d |
| A31498 |  | 300L5: Insulation Inspection | resource dependent | 1d | 2027-08-19 | 2027-08-19 | A31488 | 19d | 0d |
| A31508 |  | 300L5: Install Resilient Channel | resource dependent | 2d | 2027-08-19 | 2027-08-20 | A31498 FS-1d | 19d | 0d |
| A31518 |  | 300L5: Pre-Hang QC Inspections | resource dependent | 5d | 2027-08-23 | 2027-08-27 | A31508 | 19d | 0d |
| A31528 |  | 300L5: Stock Drywall | resource dependent | 2d | 2027-08-30 | 2027-08-31 | A31518 | 19d | 0d |
| A31548 |  | 300L5: Hang Drywall | resource dependent | 4d | 2027-09-14 | 2027-09-17 | A31528, A43978 | 11d | 0d |
| A31538 |  | 300L5: Post Hang QC Inspecitons | resource dependent | 5d | 2027-09-20 | 2027-09-24 | A31548 | 11d |  |
| A31558 |  | 300L5: Finish Drywall | resource dependent | 7d | 2027-10-12 | 2027-10-20 | A31538, A43998 | 0d |  |
| A31568 |  | 300L5: Prime Paint | resource dependent | 3d | 2027-10-21 | 2027-10-25 | A31558, A44008 | 0d |  |
| A31578 |  | 300L5: Gypcrete Prep | resource dependent | 2d | 2027-10-26 | 2027-10-27 | A31568 | 0d |  |
| A31588 |  | 300L5: Install Gypcrete | resource dependent | 2d | 2027-10-28 | 2027-10-29 | A31578 | 0d |  |
| A31598 |  | 300L5: Install AHU/WH | resource dependent | 2d | 2027-11-01 | 2027-11-02 | A31588, A44018 | 0d |  |
| A31608 |  | 300L5: Shower Surrounds | resource dependent | 3d | 2027-11-01 | 2027-11-03 | A31588, A44028 | 22d | 4d |
| A31618 |  | 300L5: Vanities and Kitchen Casework | resource dependent | 6d | 2027-11-29 | 2027-12-06 | A31588 FS+4d, A44038 | 4d | 0d |
| A31658 |  | 300L5: Install Shower Doors | resource dependent | 5d | 2027-12-01 | 2027-12-07 | A31608 FS+10d, A44078 | 15d | 0d |
| A31628 |  | 300L5: Install Countertops | resource dependent | 4d | 2027-12-07 | 2027-12-10 | A31618, A44048 | 7d | 0d |
| A31638 |  | 300L5: Install Interior Doors & Trim | resource dependent | 5d | 2027-12-13 | 2027-12-17 | A31628, A44068 | 7d | 0d |
| A31648 |  | 300L5: Kitchen Backsplash | resource dependent | 3d | 2027-12-13 | 2027-12-15 | A31628 | 9d | 2d |
| A31668 |  | 300L5: Drywall Touch-Up | resource dependent | 3d | 2027-12-20 | 2027-12-22 | A31598, A31638, A31648, A31658 | 7d | 0d |
| A31728 |  | 300L5: First Finish Paint (Ceilings, Trim, Doors & Walls) | resource dependent | 5d | 2027-12-23 | 2028-01-03 | A31668, A44098 | 7d | 0d |
| A31738 |  | 300L5: MEPS Ceiling Trim Out | resource dependent | 3d | 2028-01-04 | 2028-01-06 | A31728, A44108 | 7d | 0d |
| A31748 |  | 300L5: Install Flooring | resource dependent | 5d | 2028-01-07 | 2028-01-13 | A31738, A44118 | 7d | 0d |
| A31758 |  | 300L5: Minor Appliance Delivery | resource dependent | 2d | 2028-01-14 | 2028-01-17 | A31748 | 16d | 0d |
| A31768 |  | 300L5: MEP Trim-Out DW, Disposal & Sink Install | resource dependent | 3d | 2028-01-18 | 2028-01-20 | A31758 | 16d | 0d |
| A31778 |  | 300L5: Install Door Hardware | resource dependent | 3d | 2028-01-21 | 2028-01-25 | A31768 | 16d | 0d |
| A31788 |  | 300L5: Unit Accessories | resource dependent | 2d | 2028-01-26 | 2028-01-27 | A31778, A44158 | 19d | 0d |
| A31798 |  | 300L5: Major Appliance Delivery - Install Refrigerator, Microwave, W/D | resource dependent | 2d | 2028-01-26 | 2028-01-27 | A31778 | 16d | 0d |
| A31858 |  | 300L5: Rough Clean | resource dependent | 4d | 2028-01-28 | 2028-02-02 | A31788, A31798, A44178 | 19d | 0d |

| ID | WBS | Activity | Type | Duration | Start | Finish | Predecessors | Total float | Free float |
| --- | --- | --- | --- | --- | --- | --- | --- | --- | --- |
|  | 190 | **Level 5 Common Areas** |  |  | 2027-09-01 | 2028-02-11 |  |  |  |
| A31678 |  | 300L5: Stock Drywall | resource dependent | 1d | 2027-09-01 | 2027-09-01 | A31528 | 128d | 11d |
| A31688 |  | 300L5: Hang/Finish Drywall | resource dependent | 4d | 2027-09-20 | 2027-09-23 | A31548, A31678 | 117d | 0d |
| A31698 |  | 300L5: Prime Paint | resource dependent | 1d | 2027-10-26 | 2027-10-26 | A31568, A31688 | 111d | 36d |
| A31708 |  | 300L5: Install Wood Base | resource dependent | 1d | 2027-12-20 | 2027-12-20 | A31638, A31698 | 75d | 7d |
| A31718 |  | 300L5: First Finish Paint | resource dependent | 2d | 2028-01-04 | 2028-01-05 | A31708, A31728 | 68d | 1d |
| A31808 |  | 300L5: MEP Device Trim-Out | resource dependent | 1d | 2028-01-07 | 2028-01-07 | A31718, A31738 | 67d | 4d |
| A31818 |  | 300L5: Install Flooring | resource dependent | 1d | 2028-01-14 | 2028-01-14 | A31748, A31808 | 63d | 13d |
| A31828 |  | 300L5: Rough Clean | resource dependent | 1d | 2028-02-03 | 2028-02-03 | A31818, A31858 | 50d | 0d |
| A31838 |  | 300L5: JCC Punchlist | resource dependent | 5d | 2028-02-04 | 2028-02-10 | A31828 | 50d | 0d |
| A31848 |  | 300L5: Final Clean | resource dependent | 1d | 2028-02-11 | 2028-02-11 | A31838 | 50d |  |
|  | 191 | **Level 4** |  |  | 2027-08-23 | 2028-02-21 |  |  |  |
|  | 192 | **Level 4 Residential Units** |  |  | 2027-08-23 | 2028-02-10 |  |  |  |
| A31868 |  | 300L4: Insulation | resource dependent | 3d | 2027-08-23 | 2027-08-25 | A31418 | 36d | 0d |
| A31878 |  | 300L4: Insulation Inspection | resource dependent | 1d | 2027-08-26 | 2027-08-26 | A31868 | 36d | 0d |
| A31888 |  | 300L4: Install Resilient Channel | resource dependent | 2d | 2027-08-26 | 2027-08-27 | A31878 FS-1d | 36d | 0d |
| A31898 |  | 300L4: Pre-Hang QC Inspections | resource dependent | 5d | 2027-08-30 | 2027-09-03 | A31888 | 36d | 0d |
| A31908 |  | 300L4: Stock Drywall | resource dependent | 2d | 2027-09-07 | 2027-09-08 | A31898 | 36d | 0d |
| A31918 |  | 300L4: Hang Drywall | resource dependent | 4d | 2027-09-20 | 2027-09-23 | A31548, A31908 | 29d | 0d |
| A31928 |  | 300L4: Post Hang QC Inspecitons | resource dependent | 5d | 2027-09-24 | 2027-09-30 | A31918 | 29d | 14d |
| A31938 |  | 300L4: Finish Drywall | resource dependent | 7d | 2027-10-21 | 2027-10-29 | A31558, A31928 | 15d | 0d |
| A31948 |  | 300L4: Prime Paint | resource dependent | 3d | 2027-11-01 | 2027-11-03 | A31938, A31568 | 17d | 0d |
| A31958 |  | 300L4: Gypcrete Prep | resource dependent | 2d | 2027-11-04 | 2027-11-05 | A31948 | 17d | 0d |
| A31968 |  | 300L4: Install Gypcrete | resource dependent | 2d | 2027-11-08 | 2027-11-09 | A31958 | 17d | 0d |
| A31978 |  | 300L4: Install AHU/WH | resource dependent | 2d | 2027-11-10 | 2027-11-11 | A31968, A31598 | 36d | 5d |
| A31988 |  | 300L4: Shower Surrounds | resource dependent | 3d | 2027-11-10 | 2027-11-12 | A31968, A31608 | 20d | 4d |
| A31998 |  | 300L4: Vanities and Kitchen Casework | resource dependent | 6d | 2027-12-07 | 2027-12-14 | A31618, A31968 FS+4d | 4d | 0d |
| A32038 |  | 300L4: Install Shower Doors | resource dependent | 5d | 2027-12-08 | 2027-12-14 | A31988 FS+10d, A31658 | 15d | 0d |
| A32008 |  | 300L4: Install Countertops | resource dependent | 4d | 2027-12-15 | 2027-12-20 | A31628, A31998 | 6d | 0d |
| A32018 |  | 300L4: Kitchen Backsplash | resource dependent | 3d | 2027-12-21 | 2027-12-23 | A32008 | 8d | 2d |
| A32028 |  | 300L4: Install Interior Doors & Trim | resource dependent | 5d | 2027-12-21 | 2027-12-29 | A31638, A32008 | 6d | 0d |
| A32048 |  | 300L4: Drywall Touch-Up | resource dependent | 3d | 2027-12-30 | 2028-01-04 | A31978, A32018, A32028, A32038 | 6d | 0d |
| A32058 |  | 300L4: First Finish Paint (Ceilings, Trim, Doors & Walls) | resource dependent | 5d | 2028-01-05 | 2028-01-11 | A31728, A32048 | 6d | 0d |
| A32068 |  | 300L4: MEPS Ceiling Trim Out | resource dependent | 3d | 2028-01-12 | 2028-01-14 | A32058, A31738 | 6d | 0d |
| A32078 |  | 300L4: Install Flooring | resource dependent | 5d | 2028-01-17 | 2028-01-21 | A31748, A32068 | 6d | 0d |
| A32088 |  | 300L4: Minor Appliance Delivery | resource dependent | 2d | 2028-01-24 | 2028-01-25 | A32078 | 12d | 0d |
| A32098 |  | 300L4: MEP Trim-Out DW, Disposal & Sink Install | resource dependent | 3d | 2028-01-26 | 2028-01-28 | A32088 | 12d | 0d |
| A32108 |  | 300L4: Install Door Hardware | resource dependent | 3d | 2028-01-31 | 2028-02-02 | A32098 | 12d | 0d |
| A32118 |  | 300L4: Unit Accessories | resource dependent | 2d | 2028-02-03 | 2028-02-04 | A32108, A31788 | 19d | 0d |
| A32128 |  | 300L4: Major Appliance Delivery - Install Refrigerator, Microwave, W/D | resource dependent | 2d | 2028-02-03 | 2028-02-04 | A31798, A32108 | 12d | 0d |
| A32138 |  | 300L4: Rough Clean | resource dependent | 4d | 2028-02-07 | 2028-02-10 | A32118, A32128, A31858 | 19d | 0d |

| ID | WBS | Activity | Type | Duration | Start | Finish | Predecessors | Total float | Free float |
| --- | --- | --- | --- | --- | --- | --- | --- | --- | --- |
|  | 193 | **Level 4 Common Areas** |  |  | 2027-09-09 | 2028-02-21 |  |  |  |
| A32148 |  | 300L4: Stock Drywall | resource dependent | 1d | 2027-09-09 | 2027-09-09 | A31908 | 139d | 10d |
| A32158 |  | 300L4: Hang/Finish Drywall | resource dependent | 4d | 2027-09-24 | 2027-09-29 | A31918, A32148 | 129d | 25d |
| A32168 |  | 300L4: Prime Paint | resource dependent | 1d | 2027-11-04 | 2027-11-04 | A31948, A32158 | 104d | 35d |
| A32178 |  | 300L4: Install Wood Base | resource dependent | 1d | 2027-12-30 | 2027-12-30 | A32028, A32168 | 69d | 7d |
| A32188 |  | 300L4: First Finish Paint | resource dependent | 2d | 2028-01-12 | 2028-01-13 | A32058, A32178 | 62d | 1d |
| A32198 |  | 300L4: MEP Device Trim-Out | resource dependent | 1d | 2028-01-17 | 2028-01-17 | A32068, A32188 | 61d | 4d |
| A32208 |  | 300L4: Install Flooring | resource dependent | 1d | 2028-01-24 | 2028-01-24 | A32078, A32198 | 57d | 13d |
| A32218 |  | 300L4: Rough Clean | resource dependent | 1d | 2028-02-11 | 2028-02-11 | A32138, A32208 | 44d | 0d |
| A32228 |  | 300L4: JCC Punchlist | resource dependent | 5d | 2028-02-14 | 2028-02-18 | A32218 | 44d | 0d |
| A32238 |  | 300L4: Final Clean | resource dependent | 1d | 2028-02-21 | 2028-02-21 | A32228 | 44d |  |
|  | 194 | **Level 3** |  |  | 2027-08-30 | 2028-02-29 |  |  |  |
|  | 195 | **Level 3 Residential Units** |  |  | 2027-08-30 | 2028-02-18 |  |  |  |
| A32248 |  | 300L3: Insulation | resource dependent | 3d | 2027-08-30 | 2027-09-01 | A31438 | 38d | 0d |
| A32258 |  | 300L3: Insulation Inspection | resource dependent | 1d | 2027-09-02 | 2027-09-02 | A32248 | 38d | 0d |
| A32268 |  | 300L3: Install Resilient Channel | resource dependent | 2d | 2027-09-02 | 2027-09-03 | A32258 FS-1d | 38d | 0d |
| A32278 |  | 300L3: Pre-Hang QC Inspections | resource dependent | 5d | 2027-09-07 | 2027-09-13 | A32268 | 38d | 0d |
| A32288 |  | 300L3: Stock Drywall | resource dependent | 2d | 2027-09-14 | 2027-09-15 | A32278 | 38d | 0d |
| A32298 |  | 300L3: Hang Drywall | resource dependent | 4d | 2027-09-24 | 2027-09-29 | A31918, A32288 | 32d | 0d |
| A32308 |  | 300L3: Post Hang QC Inspecitons | resource dependent | 5d | 2027-09-30 | 2027-10-06 | A32298 | 32d | 17d |
| A32318 |  | 300L3: Finish Drywall | resource dependent | 7d | 2027-11-01 | 2027-11-09 | A31938, A32308 | 15d | 0d |
| A32328 |  | 300L3: Prime Paint | resource dependent | 3d | 2027-11-10 | 2027-11-12 | A32318, A31948 | 16d | 0d |
| A32338 |  | 300L3: Gypcrete Prep | resource dependent | 2d | 2027-11-15 | 2027-11-16 | A32328 | 16d | 0d |
| A32348 |  | 300L3: Install Gypcrete | resource dependent | 2d | 2027-11-17 | 2027-11-18 | A32338 | 16d | 0d |
| A32358 |  | 300L3: Install AHU/WH | resource dependent | 2d | 2027-11-19 | 2027-11-22 | A32348, A31978 | 34d | 5d |
| A32368 |  | 300L3: Shower Surrounds | resource dependent | 3d | 2027-11-19 | 2027-11-23 | A32348, A31988 | 18d | 3d |
| A32378 |  | 300L3: Vanities and Kitchen Casework | resource dependent | 6d | 2027-12-15 | 2027-12-22 | A31998, A32348 FS+4d | 4d | 0d |
| A32418 |  | 300L3: Install Shower Doors | resource dependent | 5d | 2027-12-15 | 2027-12-21 | A32368 FS+10d, A32038 | 15d | 0d |
| A32388 |  | 300L3: Install Countertops | resource dependent | 4d | 2027-12-23 | 2027-12-30 | A32008, A32378 | 5d | 0d |
| A32398 |  | 300L3: Kitchen Backsplash | resource dependent | 3d | 2028-01-03 | 2028-01-05 | A32388 | 7d | 2d |
| A32408 |  | 300L3: Install Interior Doors & Trim | resource dependent | 5d | 2028-01-03 | 2028-01-07 | A32028, A32388 | 5d | 0d |
| A32428 |  | 300L3: Drywall Touch-Up | resource dependent | 3d | 2028-01-10 | 2028-01-12 | A32358, A32398, A32408, A32418 | 5d | 0d |
| A32438 |  | 300L3: First Finish Paint (Ceilings, Trim, Doors & Walls) | resource dependent | 5d | 2028-01-13 | 2028-01-19 | A32058, A32428 | 5d | 0d |
| A32448 |  | 300L3: MEPS Ceiling Trim Out | resource dependent | 3d | 2028-01-20 | 2028-01-24 | A32438, A32068 | 5d | 0d |
| A32458 |  | 300L3: Install Flooring | resource dependent | 5d | 2028-01-25 | 2028-01-31 | A32078, A32448 | 5d | 0d |
| A32468 |  | 300L3: Minor Appliance Delivery | resource dependent | 2d | 2028-02-01 | 2028-02-02 | A32458 | 8d | 0d |
| A32478 |  | 300L3: MEP Trim-Out DW, Disposal & Sink Install | resource dependent | 3d | 2028-02-03 | 2028-02-07 | A32468 | 8d | 0d |
| A32488 |  | 300L3: Install Door Hardware | resource dependent | 3d | 2028-02-08 | 2028-02-10 | A32478 | 8d | 0d |
| A32498 |  | 300L3: Unit Accessories | resource dependent | 2d | 2028-02-11 | 2028-02-14 | A32488, A32118 | 19d | 0d |
| A32508 |  | 300L3: Major Appliance Delivery - Install Refrigerator, Microwave, W/D | resource dependent | 2d | 2028-02-11 | 2028-02-14 | A32128, A32488 | 8d | 0d |
| A32518 |  | 300L3: Rough Clean | resource dependent | 4d | 2028-02-15 | 2028-02-18 | A32498, A32508, A32138 | 19d | 0d |

| ID | WBS | Activity | Type | Duration | Start | Finish | Predecessors | Total float | Free float |
| --- | --- | --- | --- | --- | --- | --- | --- | --- | --- |
|  | 196 | **Level 3 Common Areas** |  |  | 2027-09-16 | 2028-02-29 |  |  |  |
| A32528 |  | 300L3: Stock Drywall | resource dependent | 1d | 2027-09-16 | 2027-09-16 | A32288 | 134d | 9d |
| A32538 |  | 300L3: Hang/Finish Drywall | resource dependent | 4d | 2027-09-30 | 2027-10-05 | A32298, A32528 | 125d | 28d |
| A32548 |  | 300L3: Prime Paint | resource dependent | 1d | 2027-11-15 | 2027-11-15 | A32328, A32538 | 97d | 34d |
| A32558 |  | 300L3: Install Wood Base | resource dependent | 1d | 2028-01-10 | 2028-01-10 | A32408, A32548 | 63d | 7d |
| A32568 |  | 300L3: First Finish Paint | resource dependent | 2d | 2028-01-20 | 2028-01-21 | A32438, A32558 | 56d | 1d |
| A32578 |  | 300L3: MEP Device Trim-Out | resource dependent | 1d | 2028-01-25 | 2028-01-25 | A32448, A32568 | 55d | 4d |
| A32588 |  | 300L3: Install Flooring | resource dependent | 1d | 2028-02-01 | 2028-02-01 | A32458, A32578 | 51d | 13d |
| A32598 |  | 300L3: Rough Clean | resource dependent | 1d | 2028-02-21 | 2028-02-21 | A32518, A32588 | 38d | 0d |
| A32608 |  | 300L3: JCC Punchlist | resource dependent | 5d | 2028-02-22 | 2028-02-28 | A32598 | 38d | 0d |
| A32618 |  | 300L3: Final Clean | resource dependent | 1d | 2028-02-29 | 2028-02-29 | A32608 | 38d |  |
|  | 197 | **Level 2** |  |  | 2027-09-07 | 2028-03-08 |  |  |  |
|  | 198 | **Level 2 Residential Units** |  |  | 2027-09-07 | 2028-02-28 |  |  |  |
| A32628 |  | 300L2: Insulation | resource dependent | 3d | 2027-09-07 | 2027-09-09 | A31458 | 40d | 0d |
| A32638 |  | 300L2: Insulation Inspection | resource dependent | 1d | 2027-09-10 | 2027-09-10 | A32628 | 40d | 0d |
| A32648 |  | 300L2: Install Resilient Channel | resource dependent | 2d | 2027-09-10 | 2027-09-13 | A32638 FS-1d | 40d | 0d |
| A32658 |  | 300L2: Pre-Hang QC Inspections | resource dependent | 5d | 2027-09-14 | 2027-09-20 | A32648 | 40d | 0d |
| A32668 |  | 300L2: Stock Drywall | resource dependent | 2d | 2027-09-21 | 2027-09-22 | A32658 | 40d | 0d |
| A32678 |  | 300L2: Hang Drywall | resource dependent | 4d | 2027-09-30 | 2027-10-05 | A32298, A32668 | 35d | 0d |
| A32688 |  | 300L2: Post Hang QC Inspecitons | resource dependent | 5d | 2027-10-06 | 2027-10-12 | A32678 | 35d | 20d |
| A32698 |  | 300L2: Finish Drywall | resource dependent | 7d | 2027-11-10 | 2027-11-18 | A32318, A32688 | 15d | 0d |
| A32708 |  | 300L2: Prime Paint | resource dependent | 3d | 2027-11-19 | 2027-11-23 | A32698, A32328 | 15d | 0d |
| A32718 |  | 300L2: Gypcrete Prep | resource dependent | 2d | 2027-11-24 | 2027-11-29 | A32708 | 15d | 0d |
| A32728 |  | 300L2: Install Gypcrete | resource dependent | 2d | 2027-11-30 | 2027-12-01 | A32718 | 15d | 0d |
| A32738 |  | 300L2: Install AHU/WH | resource dependent | 2d | 2027-12-02 | 2027-12-03 | A32728, A32358 | 32d | 28d |
| A32748 |  | 300L2: Shower Surrounds | resource dependent | 3d | 2027-12-02 | 2027-12-06 | A32728, A32368 | 16d | 1d |
| A32798 |  | 300L2: Install Shower Doors | resource dependent | 5d | 2027-12-22 | 2027-12-30 | A32748 FS+10d, A32418 | 15d | 11d |
| A32758 |  | 300L2: Vanities and Kitchen Casework | resource dependent | 6d | 2027-12-23 | 2028-01-04 | A32378, A32728 FS+4d | 4d | 0d |
| A32768 |  | 300L2: Install Countertops | resource dependent | 4d | 2028-01-05 | 2028-01-10 | A32388, A32758 | 4d | 0d |
| A32778 |  | 300L2: Kitchen Backsplash | resource dependent | 3d | 2028-01-11 | 2028-01-13 | A32768 | 6d | 2d |
| A32788 |  | 300L2: Install Interior Doors & Trim | resource dependent | 5d | 2028-01-11 | 2028-01-17 | A32408, A32768 | 4d | 0d |
| A32808 |  | 300L2: Drywall Touch-Up | resource dependent | 3d | 2028-01-18 | 2028-01-20 | A32738, A32778, A32788, A32798 | 4d | 0d |
| A32818 |  | 300L2: First Finish Paint (Ceilings, Trim, Doors & Walls) | resource dependent | 5d | 2028-01-21 | 2028-01-27 | A32438, A32808 | 4d | 0d |
| A32828 |  | 300L2: MEPS Ceiling Trim Out | resource dependent | 3d | 2028-01-28 | 2028-02-01 | A32818, A32448 | 4d | 0d |
| A32838 |  | 300L2: Install Flooring | resource dependent | 5d | 2028-02-02 | 2028-02-08 | A32458, A32828 | 4d | 0d |
| A32848 |  | 300L2: Minor Appliance Delivery | resource dependent | 2d | 2028-02-09 | 2028-02-10 | A32838 | 4d | 0d |
| A32858 |  | 300L2: MEP Trim-Out DW, Disposal & Sink Install | resource dependent | 3d | 2028-02-11 | 2028-02-15 | A32848 | 4d | 0d |
| A32868 |  | 300L2: Install Door Hardware | resource dependent | 3d | 2028-02-16 | 2028-02-18 | A32858 | 4d | 0d |
| A32878 |  | 300L2: Unit Accessories | resource dependent | 2d | 2028-02-21 | 2028-02-22 | A32868, A32498 | 19d | 0d |
| A32888 |  | 300L2: Major Appliance Delivery - Install Refrigerator, Microwave, W/D | resource dependent | 2d | 2028-02-21 | 2028-02-22 | A32508, A32868 | 4d | 0d |
| A32898 |  | 300L2: Rough Clean | resource dependent | 4d | 2028-02-23 | 2028-02-28 | A32878, A32888, A32518 | 19d | 0d |

| ID | WBS | Activity | Type | Duration | Start | Finish | Predecessors | Total float | Free float |
| --- | --- | --- | --- | --- | --- | --- | --- | --- | --- |
|  | 199 | **Level 2 Common Areas** |  |  | 2027-09-23 | 2028-03-08 |  |  |  |
| A32908 |  | 300L2: Stock Drywall | resource dependent | 1d | 2027-09-23 | 2027-09-23 | A32668 | 129d | 8d |
| A32918 |  | 300L2: Hang/Finish Drywall | resource dependent | 4d | 2027-10-06 | 2027-10-11 | A32678, A32908 | 121d | 31d |
| A32928 |  | 300L2: Prime Paint | resource dependent | 1d | 2027-11-24 | 2027-11-24 | A32708, A32918 | 90d | 33d |
| A32938 |  | 300L2: Install Wood Base | resource dependent | 1d | 2028-01-18 | 2028-01-18 | A32788, A32928 | 57d | 7d |
| A32948 |  | 300L2: First Finish Paint | resource dependent | 2d | 2028-01-28 | 2028-01-31 | A32818, A32938 | 50d | 1d |
| A32958 |  | 300L2: MEP Device Trim-Out | resource dependent | 1d | 2028-02-02 | 2028-02-02 | A32828, A32948 | 49d | 4d |
| A32968 |  | 300L2: Install Flooring | resource dependent | 1d | 2028-02-09 | 2028-02-09 | A32838, A32958 | 45d | 13d |
| A32978 |  | 300L2: Rough Clean | resource dependent | 1d | 2028-02-29 | 2028-02-29 | A32898, A32968 | 32d | 0d |
| A32988 |  | 300L2: JCC Punchlist | resource dependent | 5d | 2028-03-01 | 2028-03-07 | A32978 | 32d | 0d |
| A32998 |  | 300L2: Final Clean | resource dependent | 1d | 2028-03-08 | 2028-03-08 | A32988 | 32d |  |
|  | 203 | **Final Inspections** |  |  | 2028-01-28 | 2028-02-25 |  |  |  |
| A33368 |  | 300L5: Final Inspections | resource dependent | 3d | 2028-01-28 | 2028-02-01 | A31798 | 22d |  |
| A33378 |  | 300L4: Final Inspections | resource dependent | 3d | 2028-02-07 | 2028-02-09 | A32128 | 16d |  |
| A33388 |  | 300L3: Final Inspections | resource dependent | 3d | 2028-02-15 | 2028-02-17 | A32508 | 10d |  |
| A33398 |  | 300L2: Final Inspections | resource dependent | 3d | 2028-02-23 | 2028-02-25 | A32888 | 4d |  |
|  | 204 | **JCC/Owner Punch** |  |  | 2028-02-03 | 2028-03-27 |  |  |  |
|  | 205 | **JCC Punch** |  |  | 2028-02-03 | 2028-03-13 |  |  |  |
| A33418 |  | Level 5 JCC Punch | resource dependent | 10d | 2028-02-03 | 2028-02-16 | A31858, A44378 FS-9d | 19d | 0d |
| A33428 |  | Level 4 JCC Punch | resource dependent | 10d | 2028-02-11 | 2028-02-24 | A32138, A33418 FS-4d | 19d | 0d |
| A33438 |  | Level 3 JCC Punch | resource dependent | 10d | 2028-02-21 | 2028-03-03 | A32518, A33428 FS-4d | 19d | 0d |
| A33448 |  | Level 2 JCC Punch | resource dependent | 10d | 2028-02-29 | 2028-03-13 | A32898, A33438 FS-4d | 19d | 0d |
|  | 206 | **Owner Punch** |  |  | 2028-02-17 | 2028-03-27 |  |  |  |
| A33468 |  | Level 5 Owner Punch | resource dependent | 10d | 2028-02-17 | 2028-03-01 | A33418 | 37d |  |
| A33478 |  | Level 4 Owner Punch | resource dependent | 10d | 2028-02-25 | 2028-03-09 | A33428 | 31d |  |
| A33488 |  | Level 3 Owner Punch | resource dependent | 10d | 2028-03-06 | 2028-03-17 | A33438 | 25d |  |
| A33498 |  | Level 2 Owner Punch | resource dependent | 10d | 2028-03-14 | 2028-03-27 | A33448 | 19d |  |

| ID | WBS | Activity | Type | Duration | Start | Finish | Predecessors | Planned start | Total float |
| --- | --- | --- | --- | --- | --- | --- | --- | --- | --- |
|  | WBS1 | **Quality Assurance** |  |  |  |  |  |  |  |
|  | WBS11 | **Framing Quality Control** |  |  |  |  |  |  |  |
|  | WBS41 | **Drywall Cover Up Quality Control** |  |  |  |  |  |  |  |
|  | WBS51 | **Owner Acceptance Quality Control** |  |  |  |  |  |  |  |
|  | 427 | **CLOSEOUT** |  |  | 2027-11-05 | 2028-04-24 |  |  |  |
| A21351 |  | Startup & Commissioning | resource dependent | 80d | 2027-11-05 | 2028-03-02 | A31598 FS+2d |  | 0d |
| A19015 |  | Weather Day Allowance | resource dependent | 10d | 2028-03-03 | 2028-03-16 | A21351, A21309, A21308, A21312, A21311, A21310, A21279, A21280, A21282, A47928, A37008, A40648, A40678, A44308, A44318, A21281, A47968, A37038, A37048, A40658, A40668, A44298, A44328, A33368, A21278, A47938, A47948, A47958, A37018, A37028, A40688, A44288, A33378, A33388, A33398 |  | 0d |
| A19016 |  | Substantial Completion (TCO) | milestone | 0d | 2028-03-17 | 2028-03-17 | A19015 | 2028-03-17 | 0d |
| A19017 |  | Owner FFE | resource dependent | 26d | 2028-03-17 | 2028-04-21 | A19016 |  | 0d |
| A19018 |  | Final Completion (CO) | milestone | 0d | 2028-04-24 | 2028-04-24 | A19017, A19016 FS+20d | 2028-04-24 | 0d |

## Activity codes

| Code | Value | Meaning |
| --- | --- | --- |
| HTP | New Code Value-1 | M&DK |
| HTP | New Code Value-10 | PDI |
